# 20190122- Plan del Proyecto de Implementacion del SIIM Daule

Schedule from MS Project XML, A marks actual dates.
PlanERP

## Calendars

- Standard: Mon-Fri 08:00-12:00, 13:00-17:00; Sat-Sun off.

## Resources

| Resource |
| --- |
| Administrador de Contrato - Cliente |
| Líder Técnico - Cliente |
| Líder Funcional - Usuario Experto - Cliente |
| Funcionarios Técnicos - Cliente |
| Usuarios Finales - Cliente |
| Desarrollador PlanERP |
| Gerente de Proyecto PlanERP |
| Líder del Proyecto/Desarrollo PlanERP |
| Analista Procesos PlanERP |
| Analista de Calidad PlanERP |
| Especialista Base de Datos PlanERP |
| Consultor Especialista en Procesos de GADs PlanERP |

## Schedule

| ID | WBS | Task | Duration | Predecessors | Remaining | Actual start | Actual finish | Resources | Porcentage Avance |
| --- | --- | --- | --- | --- | --- | --- | --- | --- | --- |
| 1 | 1 | Programa de Implementación SIIM | 294.29d |  | 294.29d | 2018-07-16 |  |  |  |
| 2 | 2 | **FASE 1: Implementación de Módulos de Servicio al Cliente (SC) y Atención al Ciudadano (AC)** | 159.57d |  | 159.57d | 2018-07-16 |  |  |  |
| 3 | 2.1 | **ETAPA 1: Preparación del Proyecto e Instalación del SIIM - Módulos SC y AC** | 9d |  | 9d | 2018-07-16 |  |  |  |
| 4 | 2.1.1 | **Actividades de Gestión del Proyecto** | 2.29d |  | 2.29d | 2018-07-16 |  |  |  |
| 5 | 2.1.1.1 | Revisión de Información de Contrato y Anexos | 6h |  |  | 2018-07-16 | 2018-07-16 | Gerente de Proyecto PlanERP; Líder del Proyecto/Desarrollo PlanERP |  |
| 6 | 2.1.1.2 | Definir la Organización del Proyecto | 4h | 5FS+6h |  | 2018-07-16 | 2018-07-17 | Gerente de Proyecto PlanERP; Líder del Proyecto/Desarrollo PlanERP |  |
| 7 | 2.1.1.3 | Kick-off Interno del Proyecto | 6h | 6FS+4h |  | 2018-07-17 | 2018-07-18 | Gerente de Proyecto PlanERP; Líder del Proyecto/Desarrollo PlanERP |  |
| 8 | 2.1.2 | **Preparación del kick-off del Proyecto** | 1.14d |  | 1.14d | 2018-07-18 |  |  |  |
| 9 | 2.1.2.1 | Comunicación con el Cliente | 4h | 7FS+6h |  | 2018-07-18 | 2018-07-18 | Administrador de Contrato - Cliente; Gerente de Proyecto PlanERP |  |
| 10 | 2.1.2.2 | Crear la presentación del kick-off | 4h | 9FS+4h |  | 2018-07-18 | 2018-07-19 | Gerente de Proyecto PlanERP; Líder del Proyecto/Desarrollo PlanERP |  |
| 11 | 2.1.3 | **Reunión de Kick-off** | 0.29d |  | 0.29d | 2018-07-19 |  |  |  |
| 12 | 2.1.3.1 | Realizar la reunión de kick-off | 2h | 10FS+4h |  | 2018-07-19 | 2018-07-19 | Administrador de Contrato - Cliente; Líder Funcional - Usuario Experto - Cliente; Gerente de Proyecto PlanERP; Líder Técnico - Cliente; Líder del Proyecto/Desarrollo PlanERP |  |
| 13 | 2.1.4 | **Entrega e Instalación del Software** | 4.29d |  | 4.29d | 2018-07-19 |  |  |  |
| 14 | 2.1.4.1 | **Instalar SIIM en Servidor** | 4d | 11FS+0.29d | 4d | 2018-07-19 |  | Funcionarios Técnicos - Cliente |  |
| 15 | 2.1.4.1.1 | 1 Dirección de Desarrollo Territorial (No incluye Catastro) | 2h |  |  | 2018-07-19 | 2018-07-19 |  |  |
| 16 | 2.1.4.1.2 | 4 Dirección de Justicia y Vigilancia | 2h | 15FS+2h |  | 2018-07-19 | 2018-07-19 |  |  |
| 17 | 2.1.4.1.3 | 5 Dirección de Desarrollo Humano y Social | 2h | 16FS+2h |  | 2018-07-19 | 2018-07-20 |  |  |
| 18 | 2.1.4.1.4 | 8.3 Rentas | 2h | 17FS+2h |  | 2018-07-20 | 2018-07-20 |  |  |
| 19 | 2.1.4.1.5 | 8.4 Tesorería | 2h | 18FS+2h |  | 2018-07-20 | 2018-07-20 |  |  |
| 20 | 2.1.4.1.6 | 9.1 Mercados | 1h | 19FS+2h |  | 2018-07-20 | 2018-07-20 |  |  |
| 21 | 2.1.4.1.7 | 9.2 Cementerio | 1h | 20FS+1h |  | 2018-07-20 | 2018-07-20 |  |  |
| 22 | 2.1.4.1.8 | 9.3 Camal | 1h | 21FS+1h |  | 2018-07-20 | 2018-07-20 |  |  |
| 23 | 2.1.4.1.9 | 10 Registro de la Propiedad y Mercantil | 2h | 22FS+1h |  | 2018-07-20 | 2018-07-23 |  |  |
| 24 | 2.1.4.1.10 | 11 Administración de bomberos | 1h | 23FS+2h |  | 2018-07-23 | 2018-07-23 |  |  |
| 25 | 2.1.4.1.11 | 12 CRM para ciudadanos. Ventanilla Única | 2h | 24FS+1h |  | 2018-07-23 | 2018-07-23 |  |  |
| 26 | 2.1.4.1.12 | 15.1 BI Desarrollo Territorial | 2h | 25FS+2h |  | 2018-07-23 | 2018-07-23 |  |  |
| 27 | 2.1.4.1.13 | 15.5 BI Obras Públicas Municipales | 2h | 26FS+2h |  | 2018-07-23 | 2018-07-24 |  |  |
| 28 | 2.1.4.1.14 | 15.7 BI Registro de la Propiedad y Mercantil | 2h | 27FS+2h |  | 2018-07-24 | 2018-07-24 |  |  |
| 29 | 2.1.4.1.15 | 16.1 Consultas Portal Web | 2h | 28FS+2h |  | 2018-07-24 | 2018-07-24 |  |  |
| 30 | 2.1.4.1.16 | 16.2 Aplicación para móviles (APP) | 2h | 29FS+2h |  | 2018-07-24 | 2018-07-24 |  |  |
| 31 | 2.1.4.2 | Entrega de Software | 2h | 14FS+4d |  | 2018-07-24 | 2018-07-25 | Gerente de Proyecto PlanERP; Administrador de Contrato - Cliente |  |
| 32 | 2.1.5 | Revisar la ETAPA del Proyecto | 1d | 13FS+4.29d |  | 2018-07-25 | 2018-07-25 | Administrador de Contrato - Cliente; Gerente de Proyecto PlanERP; Analista de Calidad PlanERP |  |
| 33 | 2.1.6 | HITO: FINALIZACION ETAPA 1 | 0d | 32FS+1d |  | 2018-07-25 | 2018-07-25 |  | 5% |

| ID | WBS | Task | Duration | Predecessors | Remaining | Actual start | Actual finish | Resources | Porcentage Avance |
| --- | --- | --- | --- | --- | --- | --- | --- | --- | --- |
| 34 | 2.2 | **ETAPA 2: Levantamiento de Características Institucionales - Módulos SC y AC** | 14.71d | 3FS+9d | 14.71d | 2018-07-25 |  |  |  |
| 35 | 2.2.1 | **Actividades de Gestión del Proyecto** | 1.14d |  | 1.14d | 2018-07-25 |  |  |  |
| 36 | 2.2.1.1 | Revisión del Plan del Proyecto | 4h | 32FS+1d |  | 2018-07-25 | 2018-07-26 | Administrador de Contrato - Cliente; Gerente de Proyecto PlanERP |  |
| 37 | 2.2.1.2 | Programar talleres de requerimientos de Entidad | 4h | 36FS+4h |  | 2018-07-26 | 2018-07-26 | Administrador de Contrato - Cliente; Gerente de Proyecto PlanERP |  |
| 38 | 2.2.2 | **Sesiones de Requerimientos del Entidad** | 12d |  | 12d | 2018-07-26 |  |  |  |
| 39 | 2.2.2.1 | Conducir Sesiones de Requerimientos | 10d | 37FS+4h |  | 2018-07-26 | 2018-08-08 | Funcionarios Técnicos - Cliente; Analista Procesos PlanERP; Consultor Especialista en Procesos de GADs PlanERP |  |
| 40 | 2.2.2.2 | Crear Documento de Características del Entidad | 2d | 39FS+10d |  | 2018-08-08 | 2018-08-10 | Analista Procesos PlanERP; Funcionarios Técnicos - Cliente; Consultor Especialista en Procesos de GADs PlanERP |  |
| 41 | 2.2.3 | **Revisar el Documento de Características del Entidad** | 0.57d |  | 0.57d | 2018-08-10 |  |  |  |
| 42 | 2.2.3.1 | Revisar el Documento de Características del Entidad | 2h | 40FS+2d |  | 2018-08-10 | 2018-08-10 | Administrador de Contrato - Cliente; Gerente de Proyecto PlanERP; Analista de Calidad PlanERP; Consultor Especialista en Procesos de GADs PlanERP; Analista Procesos PlanERP |  |
| 43 | 2.2.3.2 | Revisar el Plan del Proyecto | 2h | 42FS+2h |  | 2018-08-10 | 2018-08-10 | Administrador de Contrato - Cliente; Gerente de Proyecto PlanERP |  |
| 44 | 2.2.4 | Revisar la ETAPA del Proyecto | 1d | 41FS+0.57d |  | 2018-08-10 | 2018-08-13 | Administrador de Contrato - Cliente; Gerente de Proyecto PlanERP; Líder del Proyecto/Desarrollo PlanERP; Analista de Calidad PlanERP |  |
| 45 | 2.2.5 | HITO: FINALIZACION ETAPA 2 | 0d | 44FS+1d |  | 2018-08-13 | 2018-08-13 |  | 10% |
| 46 | 2.3 | **ETAPA 3: Migración de Datos, Configuración y Pruebas de Operación - Módulos SC y AC** | 56.57d | 34FS+14.71d | 56.57d | 2018-08-13 |  |  |  |
| 47 | 2.3.1 | **Gestión General del Proyecto** | 0.57d |  | 0.57d | 2018-08-13 |  |  |  |
| 48 | 2.3.1.1 | Planificar cambio Organizacional | 2h | 44FS+1d |  | 2018-08-13 | 2018-08-14 | Administrador de Contrato - Cliente; Gerente de Proyecto PlanERP; Líder del Proyecto/Desarrollo PlanERP |  |
| 49 | 2.3.1.2 | Planificar Entrenamiento a Usuarios Finales | 2h | 48FS+2h |  | 2018-08-14 | 2018-08-14 | Administrador de Contrato - Cliente; Gerente de Proyecto PlanERP; Líder del Proyecto/Desarrollo PlanERP |  |
| 50 | 2.3.1.3 | Definir y Preparar la Migración de Datos | 2h | 48FS+2h |  | 2018-08-14 | 2018-08-14 | Funcionarios Técnicos - Cliente; Líder del Proyecto/Desarrollo PlanERP; Especialista Base de Datos PlanERP |  |
| 51 | 2.3.2 | **Configuración del Sistema en Producción** | 56d |  | 56d | 2018-08-14 |  |  |  |
| 52 | 2.3.2.1 | Instalar el SIIM en Producción | 1d | 50FS+2h |  | 2018-08-14 | 2018-08-15 | Funcionarios Técnicos - Cliente; Analista Procesos PlanERP; Desarrollador PlanERP; Líder del Proyecto/Desarrollo PlanERP; Especialista Base de Datos PlanERP |  |
| 53 | 2.3.2.2 | Configurar Inicialización del Sistema | 1d | 52FS+1d |  | 2018-08-15 | 2018-08-16 | Funcionarios Técnicos - Cliente; Analista Procesos PlanERP; Desarrollador PlanERP; Líder del Proyecto/Desarrollo PlanERP; Especialista Base de Datos PlanERP |  |
| 54 | 2.3.2.3 | Realizar la Migración de Datos | 54d | 53FS+1d |  | 2018-08-16 | 2018-10-22 | Funcionarios Técnicos - Cliente; Analista Procesos PlanERP; Desarrollador PlanERP; Líder del Proyecto/Desarrollo PlanERP; Especialista Base de Datos PlanERP |  |
| 55 | 2.3.2.4 | Desarrollar Adaptaciones al Software | 10d | 53FS+1d |  | 2018-08-16 | 2018-08-28 | Funcionarios Técnicos - Cliente; Analista Procesos PlanERP; Desarrollador PlanERP; Líder del Proyecto/Desarrollo PlanERP; Especialista Base de Datos PlanERP |  |
| 56 | 2.3.2.5 | Configuración del Sistema en base al Documento de Características del Entidad | 3d | 55FS+10d |  | 2018-08-28 | 2018-08-31 | Funcionarios Técnicos - Cliente; Analista Procesos PlanERP; Desarrollador PlanERP; Líder del Proyecto/Desarrollo PlanERP; Especialista Base de Datos PlanERP |  |
| 57 | 2.3.2.6 | Configurar Interfaces | 1d | 56FS+3d |  | 2018-08-31 | 2018-09-03 | Funcionarios Técnicos - Cliente; Analista Procesos PlanERP; Desarrollador PlanERP; Líder del Proyecto/Desarrollo PlanERP; Especialista Base de Datos PlanERP |  |
| 58 | 2.3.2.7 | Configurar Usuarios y Autorizaciones | 1d | 57FS+1d |  | 2018-09-03 | 2018-09-04 | Funcionarios Técnicos - Cliente; Analista Procesos PlanERP; Desarrollador PlanERP; Líder del Proyecto/Desarrollo PlanERP; Especialista Base de Datos PlanERP |  |

| ID | WBS | Task | Duration | Predecessors | Remaining | Actual start | Actual finish | Resources |
| --- | --- | --- | --- | --- | --- | --- | --- | --- |
| 59 | 2.3.3 | **Gestión del Cambio Organizacional** | 1d |  | 1d | 2018-09-04 |  |  |
| 60 | 2.3.3.1 | Conducir la comunicación de la Gestión de Cambios (si es aplicable) | 1d | 58FS+1d |  | 2018-09-04 | 2018-09-05 | Administrador de Contrato - Cliente; Líder Funcional - Usuario Experto - Cliente; Gerente de Proyecto PlanERP; Consultor Especialista en Procesos de GADs PlanERP |
| 61 | 2.3.4 | **Pruebas de validación/aceptación del Sistema** | 3.43d |  | 3.43d | 2018-09-05 |  |  |
| 62 | 2.3.4.1 | Mantener la Lista Maestra de Procesos de Entidad | 2h | 60FS+1d |  | 2018-09-05 | 2018-09-05 | Líder Funcional - Usuario Experto - Cliente; Gerente de Proyecto PlanERP; Líder del Proyecto/Desarrollo PlanERP; Analista Procesos PlanERP; Consultor Especialista en Procesos de GADs PlanERP |
| 63 | 2.3.4.2 | **Conducir Talleres de Validación** | 3.14d | 62FS+2h | 3.14d | 2018-09-05 |  | Líder Funcional - Usuario Experto - Cliente; Analista Procesos PlanERP; Analista de Calidad PlanERP; Consultor Especialista en Procesos de GADs PlanERP |
| 64 | 2.3.4.2.1 | 1 Dirección de Desarrollo Territorial (No incluye Catastro) | 2h |  |  | 2018-09-05 | 2018-09-05 |  |
| 65 | 2.3.4.2.2 | 4 Dirección de Justicia y Vigilancia | 2h | 64FS+2h |  | 2018-09-05 | 2018-09-05 |  |
| 66 | 2.3.4.2.3 | 5 Dirección de Desarrollo Humano y Social | 1h | 65FS+2h |  | 2018-09-05 | 2018-09-05 |  |
| 67 | 2.3.4.2.4 | 8.3 Rentas | 2h | 66FS+1h |  | 2018-09-05 | 2018-09-06 |  |
| 68 | 2.3.4.2.5 | 8.4 Tesorería | 2h | 67FS+2h |  | 2018-09-06 | 2018-09-06 |  |
| 69 | 2.3.4.2.6 | 9.1 Mercados | 1h | 68FS+2h |  | 2018-09-06 | 2018-09-06 |  |
| 70 | 2.3.4.2.7 | 9.2 Cementerio | 1h | 69FS+1h |  | 2018-09-06 | 2018-09-06 |  |
| 71 | 2.3.4.2.8 | 9.3 Camal | 1h | 70FS+1h |  | 2018-09-06 | 2018-09-06 |  |
| 72 | 2.3.4.2.9 | 10 Registro de la Propiedad y Mercantil | 2h | 71FS+1h |  | 2018-09-06 | 2018-09-07 |  |
| 73 | 2.3.4.2.10 | 11 Administración de bomberos | 1h | 72FS+2h |  | 2018-09-07 | 2018-09-07 |  |
| 74 | 2.3.4.2.11 | 12 CRM para ciudadanos. Ventanilla Única | 2h | 73FS+1h |  | 2018-09-07 | 2018-09-07 |  |
| 75 | 2.3.4.2.12 | 15.1 BI Desarrollo Territorial | 1h | 74FS+2h |  | 2018-09-07 | 2018-09-07 |  |
| 76 | 2.3.4.2.13 | 15.5 BI Obras Públicas Municipales | 1h | 75FS+1h |  | 2018-09-07 | 2018-09-07 |  |
| 77 | 2.3.4.2.14 | 15.7 BI Registro de la Propiedad y Mercantil | 1h | 76FS+1h |  | 2018-09-07 | 2018-09-07 |  |
| 78 | 2.3.4.2.15 | 16.1 Consultas Portal Web | 1h | 77FS+1h |  | 2018-09-07 | 2018-09-07 |  |
| 79 | 2.3.4.2.16 | 16.2 Aplicación para móviles (APP) | 1h | 78FS+1h |  | 2018-09-07 | 2018-09-10 |  |
| 80 | 2.3.5 | **Pruebas de Aceptacion Sistema** | 5.43d |  | 5.43d | 2018-09-10 |  |  |
| 81 | 2.3.5.1 | Definir casos de prueba y alcance | 2h | 79FS+1h, 30FS+2h |  | 2018-09-10 | 2018-09-10 | Líder Funcional - Usuario Experto - Cliente; Líder del Proyecto/Desarrollo PlanERP; Analista de Calidad PlanERP; Funcionarios Técnicos - Cliente |
| 82 | 2.3.5.2 | Preparar ambiente de pruebas | 1d | 81FS+2h |  | 2018-09-10 | 2018-09-11 | Funcionarios Técnicos - Cliente; Líder Funcional - Usuario Experto - Cliente; Líder del Proyecto/Desarrollo PlanERP; Analista de Calidad PlanERP |

| ID | WBS | Task | Duration | Predecessors | Remaining | Actual start | Actual finish | Resources | Porcentage Avance |
| --- | --- | --- | --- | --- | --- | --- | --- | --- | --- |
| 83 | 2.3.5.3 | **Ejecutar el plan de pruebas de Aceptacion del Sistema** | 3.14d | 82FS+1d | 3.14d | 2018-09-11 |  | Líder Funcional - Usuario Experto - Cliente; Líder del Proyecto/Desarrollo PlanERP; Analista de Calidad PlanERP; Funcionarios Técnicos - Cliente; Consultor Especialista en Procesos de GADs PlanERP |  |
| 84 | 2.3.5.3.1 | 1 Dirección de Desarrollo Territorial (No incluye Catastro) | 2h |  |  | 2018-09-11 | 2018-09-11 |  |  |
| 85 | 2.3.5.3.2 | 4 Dirección de Justicia y Vigilancia | 2h | 84FS+2h |  | 2018-09-11 | 2018-09-11 |  |  |
| 86 | 2.3.5.3.3 | 5 Dirección de Desarrollo Humano y Social | 1h | 85FS+2h |  | 2018-09-11 | 2018-09-11 |  |  |
| 87 | 2.3.5.3.4 | 8.3 Rentas | 2h | 86FS+1h |  | 2018-09-11 | 2018-09-12 |  |  |
| 88 | 2.3.5.3.5 | 8.4 Tesorería | 2h | 87FS+2h |  | 2018-09-12 | 2018-09-12 |  |  |
| 89 | 2.3.5.3.6 | 9.1 Mercados | 1h | 88FS+2h |  | 2018-09-12 | 2018-09-12 |  |  |
| 90 | 2.3.5.3.7 | 9.2 Cementerio | 1h | 89FS+1h |  | 2018-09-12 | 2018-09-12 |  |  |
| 91 | 2.3.5.3.8 | 9.3 Camal | 1h | 90FS+1h |  | 2018-09-12 | 2018-09-12 |  |  |
| 92 | 2.3.5.3.9 | 10 Registro de la Propiedad y Mercantil | 2h | 91FS+1h |  | 2018-09-12 | 2018-09-12 |  |  |
| 93 | 2.3.5.3.10 | 11 Administración de bomberos | 1h | 92FS+2h |  | 2018-09-12 | 2018-09-13 |  |  |
| 94 | 2.3.5.3.11 | 12 CRM para ciudadanos. Ventanilla Única | 2h | 93FS+1h |  | 2018-09-13 | 2018-09-13 |  |  |
| 95 | 2.3.5.3.12 | 15.1 BI Desarrollo Territorial | 1h | 94FS+2h |  | 2018-09-13 | 2018-09-13 |  |  |
| 96 | 2.3.5.3.13 | 15.5 BI Obras Públicas Municipales | 1h | 95FS+1h |  | 2018-09-13 | 2018-09-13 |  |  |
| 97 | 2.3.5.3.14 | 15.7 BI Registro de la Propiedad y Mercantil | 1h | 96FS+1h |  | 2018-09-13 | 2018-09-13 |  |  |
| 98 | 2.3.5.3.15 | 16.1 Consultas Portal Web | 1h | 97FS+1h |  | 2018-09-13 | 2018-09-13 |  |  |
| 99 | 2.3.5.3.16 | 16.2 Aplicación para móviles (APP) | 1h | 98FS+1h |  | 2018-09-13 | 2018-09-13 |  |  |
| 100 | 2.3.5.4 | Revisar los resultados de las pruebas y necesidades de cambios | 1d | 99FS+1h, 79FS+1h, 30FS+2h |  | 2018-09-13 | 2018-09-14 | Administrador de Contrato - Cliente; Gerente de Proyecto PlanERP; Analista de Calidad PlanERP; Consultor Especialista en Procesos de GADs PlanERP |  |
| 101 | 2.3.6 | **Planificar Salida a Producción y Soporte** | 0.29d |  | 0.29d | 2018-09-14 |  |  |  |
| 102 | 2.3.6.1 | Definir Plan de Salida a Producción | 2h | 100FS+1d |  | 2018-09-14 | 2018-09-17 | Administrador de Contrato - Cliente; Líder Funcional - Usuario Experto - Cliente; Gerente de Proyecto PlanERP; Líder del Proyecto/Desarrollo PlanERP |  |
| 103 | 2.3.6.2 | Planificar Estrategia de Soporte | 2h | 100FS+1d |  | 2018-09-14 | 2018-09-17 | Administrador de Contrato - Cliente; Líder Funcional - Usuario Experto - Cliente; Gerente de Proyecto PlanERP; Líder del Proyecto/Desarrollo PlanERP |  |
| 104 | 2.3.6.3 | Planificar Administración del Sistema | 2h | 100FS+1d |  | 2018-09-14 | 2018-09-17 | Administrador de Contrato - Cliente; Líder Funcional - Usuario Experto - Cliente; Gerente de Proyecto PlanERP; Líder del Proyecto/Desarrollo PlanERP |  |
| 105 | 2.3.7 | Revisar la ETAPA del Proyecto | 1d | 101FS+0.29d |  | 2018-09-17 | 2018-09-17 | Administrador de Contrato - Cliente; Gerente de Proyecto PlanERP; Líder del Proyecto/Desarrollo PlanERP; Analista de Calidad PlanERP |  |
| 106 | 2.3.8 | HITO: FINALIZACION ETAPA 3 | 0d | 105FS+1d |  | 2018-09-17 | 2018-09-17 |  | 25% |

| ID | WBS | Task | Duration | Predecessors | Remaining | Actual start | Actual finish | Resources |
| --- | --- | --- | --- | --- | --- | --- | --- | --- |
| 107 | 2.4 | **ETAPA 4: Preparación Final previo Despliegue en Producción - Módulos SC y AC** | 19.86d |  | 19.86d | 2018-09-17 |  |  |
| 108 | 2.4.1 | **Gestión General del Proyecto** | 0.57d |  | 0.57d | 2018-09-17 |  |  |
| 109 | 2.4.1.1 | Confirmar el Plan de Entrenamiento | 2h | 105FS+1d |  | 2018-09-17 | 2018-09-18 | Administrador de Contrato - Cliente; Funcionarios Técnicos - Cliente; Gerente de Proyecto PlanERP; Líder del Proyecto/Desarrollo PlanERP |
| 110 | 2.4.1.2 | Finalizar plan de Salida a Producción | 2h | 109FS+2h |  | 2018-09-18 | 2018-09-18 | Administrador de Contrato - Cliente; Funcionarios Técnicos - Cliente; Gerente de Proyecto PlanERP; Líder del Proyecto/Desarrollo PlanERP; Analista de Calidad PlanERP |
| 111 | 2.4.2 | **Entrenamiento en Modulos de Areas Funcionales Fase 1** | 16d | 108FS+0.57d | 16d | 2018-09-18 |  |  |
| 112 | 2.4.2.1 | **Entrenamiento de Usuarios Funcionales y Certificación de Procesos** | 12d | 110FS+2h | 12d | 2018-09-18 |  | Líder Funcional - Usuario Experto - Cliente; Usuarios Finales - Cliente; Funcionarios Técnicos - Cliente; Analista Procesos PlanERP; Desarrollador PlanERP; Consultor Especialista en Procesos de GADs PlanERP |
| 113 | 2.4.2.1.1 | 1 Dirección de Desarrollo Territorial (No incluye Catastro) | 1d |  |  | 2018-09-18 | 2018-09-19 |  |
| 114 | 2.4.2.1.2 | 4 Dirección de Justicia y Vigilancia | 1d | 113FS+1d |  | 2018-09-19 | 2018-09-20 |  |
| 115 | 2.4.2.1.3 | 5 Dirección de Desarrollo Humano y Social | 1d | 114FS+1d |  | 2018-09-20 | 2018-09-21 |  |
| 116 | 2.4.2.1.4 | 8.3 Rentas | 1d | 115FS+1d |  | 2018-09-21 | 2018-09-21 |  |
| 117 | 2.4.2.1.5 | 8.4 Tesorería | 1d | 116FS+1d |  | 2018-09-21 | 2018-09-24 |  |
| 118 | 2.4.2.1.6 | 9.1 Mercados | 0.5d | 117FS+1d |  | 2018-09-24 | 2018-09-25 |  |
| 119 | 2.4.2.1.7 | 9.2 Cementerio | 0.5d | 118FS+0.5d |  | 2018-09-25 | 2018-09-25 |  |
| 120 | 2.4.2.1.8 | 9.3 Camal | 0.5d | 119FS+0.5d |  | 2018-09-25 | 2018-09-26 |  |
| 121 | 2.4.2.1.9 | 10 Registro de la Propiedad y Mercantil | 1d | 120FS+0.5d |  | 2018-09-26 | 2018-09-26 |  |
| 122 | 2.4.2.1.10 | 11 Administración de bomberos | 0.5d | 121FS+1d |  | 2018-09-27 | 2018-09-27 |  |
| 123 | 2.4.2.1.11 | 12 CRM para ciudadanos. Ventanilla Única | 1d | 122FS+0.5d |  | 2018-09-27 | 2018-09-28 |  |
| 124 | 2.4.2.1.12 | 15.1 BI Desarrollo Territorial | 0.5d | 123FS+1d |  | 2018-09-28 | 2018-09-28 |  |
| 125 | 2.4.2.1.13 | 15.5 BI Obras Públicas Municipales | 0.5d | 124FS+0.5d |  | 2018-09-28 | 2018-10-01 |  |
| 126 | 2.4.2.1.14 | 15.7 BI Registro de la Propiedad y Mercantil | 0.5d | 125FS+0.5d |  | 2018-10-01 | 2018-10-01 |  |
| 127 | 2.4.2.1.15 | 16.1 Consultas Portal Web | 1d | 126FS+0.5d |  | 2018-10-01 | 2018-10-02 |  |
| 128 | 2.4.2.1.16 | 16.2 Aplicación para móviles (APP) | 0.5d | 127FS+1d |  | 2018-10-02 | 2018-10-02 |  |
| 129 | 2.4.2.2 | Entrenamiento de Usuario Técnicos | 4d | 128FS+0.5d, 99FS+1h, 79FS+1h, 30FS+2h |  | 2018-10-02 | 2018-10-08 | Funcionarios Técnicos - Cliente; Desarrollador PlanERP; Especialista Base de Datos PlanERP; Líder del Proyecto/Desarrollo PlanERP |
| 130 | 2.4.3 | **Preparación del Sistema** | 0.86d | 111FS+16d | 0.86d | 2018-10-08 |  |  |
| 131 | 2.4.3.1 | Completar la Administración del Sistema | 3h |  |  | 2018-10-08 | 2018-10-08 | Funcionarios Técnicos - Cliente; Desarrollador PlanERP; Analista Procesos PlanERP |
| 132 | 2.4.3.2 | Comprobación de la Puesta a Producción | 3h | 131FS+3h |  | 2018-10-08 | 2018-10-09 | Funcionarios Técnicos - Cliente; Administrador de Contrato - Cliente; Analista de Calidad PlanERP; Líder del Proyecto/Desarrollo PlanERP |

| ID | WBS | Task | Duration | Predecessors | Remaining | Actual start | Actual finish | Resources | Porcentage Avance |
| --- | --- | --- | --- | --- | --- | --- | --- | --- | --- |
| 133 | 2.4.4 | **Transición** | 2.14d | 130FS+0.86d | 2.14d | 2018-10-09 |  |  |  |
| 134 | 2.4.4.1 | Finalizar Procesamiento de Sistemas Legados | 1h |  |  | 2018-10-09 | 2018-10-09 | Administrador de Contrato - Cliente; Líder Funcional - Usuario Experto - Cliente; Desarrollador PlanERP; Líder del Proyecto/Desarrollo PlanERP; Especialista Base de Datos PlanERP |  |
| 135 | 2.4.4.2 | Realizar la Salida a Producción - Carga Inicial y Configuración Inicial | 2d | 134FS+1h |  | 2018-10-09 | 2018-10-11 | Administrador de Contrato - Cliente; Líder Funcional - Usuario Experto - Cliente; Desarrollador PlanERP; Líder del Proyecto/Desarrollo PlanERP; Especialista Base de Datos PlanERP |  |
| 136 | 2.4.5 | Revisar la ETAPA del Proyecto | 2h | 133FS+2.14d |  | 2018-10-11 | 2018-10-11 | Administrador de Contrato - Cliente; Gerente de Proyecto PlanERP; Líder del Proyecto/Desarrollo PlanERP; Analista de Calidad PlanERP |  |
| 137 | 2.4.6 | HITO: FINALIZACION ETAPA 4 | 0d | 136FS+2h |  | 2018-10-11 | 2018-10-11 |  | 35% |
| 138 | 2.5 | **ETAPA 5: Despliegue en Producción y Soporte Técnico - Módulos SC y AC** | 30d | 107FS+19.86d | 30d | 2018-10-11 |  |  |  |
| 139 | 2.5.1 | **Soporte en Producción** | 30d |  | 30d | 2018-10-11 |  |  |  |
| 140 | 2.5.1.1 | Soporte durante la Salida a Producción | 30d | 136FS+2h |  | 2018-10-11 | 2018-11-16 | Funcionarios Técnicos - Cliente; Desarrollador PlanERP; Analista Procesos PlanERP; Especialista Base de Datos PlanERP; Consultor Especialista en Procesos de GADs PlanERP |  |
| 141 | 2.5.1.2 | Resolver incidentes críticos | 20d | 136FS+2h |  | 2018-10-11 | 2018-11-05 | Funcionarios Técnicos - Cliente; Desarrollador PlanERP; Analista Procesos PlanERP; Especialista Base de Datos PlanERP; Consultor Especialista en Procesos de GADs PlanERP |  |
| 142 | 2.5.1.3 | Entregar el soporte y Administración al cliente | 1d |  |  | 2018-10-11 | 2018-10-12 | Funcionarios Técnicos - Cliente; Desarrollador PlanERP; Analista Procesos PlanERP; Especialista Base de Datos PlanERP; Consultor Especialista en Procesos de GADs PlanERP |  |
| 143 | 2.5.2 | **Mejora Continua** | 10d |  | 10d | 2018-10-11 |  |  |  |
| 144 | 2.5.2.1 | Monitoreo del Sistema y Acompañamiento ETAPA1 | 10d | 136FS+2h |  | 2018-10-11 | 2018-10-24 | Administrador de Contrato - Cliente; Funcionarios Técnicos - Cliente; Líder Funcional - Usuario Experto - Cliente; Especialista Base de Datos PlanERP; Líder del Proyecto/Desarrollo PlanERP; Consultor Especialista en Procesos de GADs PlanERP |  |
| 145 | 2.5.2.2 | Ajustes y Configuraciones finales al Software acorde a necesidades Entidad | 10d | 136FS+2h |  | 2018-10-11 | 2018-10-24 | Administrador de Contrato - Cliente; Funcionarios Técnicos - Cliente; Líder Funcional - Usuario Experto - Cliente; Especialista Base de Datos PlanERP; Líder del Proyecto/Desarrollo PlanERP; Consultor Especialista en Procesos de GADs PlanERP |  |
| 146 | 2.5.3 | **Cierre de la ETAPA 5** | 0.29d |  | 0.29d | 2018-10-24 |  |  |  |
| 147 | 2.5.3.1 | Reunión de Cierre de la ETAPA 5 | 2h | 143FS+10d |  | 2018-10-24 | 2018-10-24 | Administrador de Contrato - Cliente; Líder Funcional - Usuario Experto - Cliente; Funcionarios Técnicos - Cliente; Gerente de Proyecto PlanERP; Líder del Proyecto/Desarrollo PlanERP; Analista de Calidad PlanERP |  |
| 148 | 2.5.4 | HITO: FIN DE LA ETAPA 5 | 0d | 147FS+2h |  | 2018-10-24 | 2018-10-24 |  | 40% |
| 149 | 2.6 | **ETAPA 6: Estabilización, Apoyo Emisión 2019 y Desarrollo de funcionalidades no establecidas en el Alcance Contractual** | 57.29d |  | 57.29d | 2018-11-16 |  |  |  |
| 150 | 2.6.1 | Depuración de Errores de Calidad de Información fuente migrada (Base Oracle) | 30d | 138FS+30d |  | 2018-11-16 | 2018-12-24 |  |  |
| 151 | 2.6.2 | Soporte y Mantenimiento de Módulos de la Fase 1 | 30d | 138FS+30d |  | 2018-11-16 | 2018-12-24 |  |  |
| 152 | 2.6.3 | Adaptaciones a Software para incluir Nuevas funcionalidades no contempladas en alcance proyecto | 30d | 138FS+30d |  | 2018-11-16 | 2018-12-24 |  |  |
| 153 | 2.6.4 | Implementación de Licencia temporal de Modulo de Catastro Urbano SIIM | 20d |  |  | 2018-12-03 | 2018-12-26 |  |  |
| 154 | 2.6.5 | Migración de información de Emisión de Impuestos de Catastro Urbano 2019 | 20d |  |  | 2018-12-03 | 2018-12-26 |  |  |
| 155 | 2.6.6 | Creación de interfaces mediante ETLs para integración entre Sistema Oracle y SIIM para la recaudación de Impuestos 2019 de Catastro Urbano | 20d |  |  | 2018-12-03 | 2018-12-26 |  |  |
| 156 | 2.6.7 | Soporte en Recaudación de Impuestos de Catastro urbano y mejoras 2019 | 25d | 155FS+20d |  | 2018-12-26 | 2019-01-25 |  |  |

| ID | WBS | Task | Duration | Predecessors | Remaining | Actual start | Actual finish | Resources | Porcentage Avance |
| --- | --- | --- | --- | --- | --- | --- | --- | --- | --- |
| 157 | 2.6.8 | **Cierre de la FASE 1** | 0.29d |  | 0.29d | 2019-01-25 |  |  |  |
| 158 | 2.6.8.1 | Reunión de Cierre de la FASE 1 | 2h | 156FS+25d |  | 2019-01-25 | 2019-01-25 | Administrador de Contrato - Cliente; Líder Funcional - Usuario Experto - Cliente; Funcionarios Técnicos - Cliente; Gerente de Proyecto PlanERP; Líder del Proyecto/Desarrollo PlanERP; Analista de Calidad PlanERP |  |
| 159 | 2.6.8.2 | HITO: FIN DE LA FASE 1 | 0d | 158FS+2h |  | 2019-01-25 | 2019-01-25 |  | 50% |
| 160 | 3 | **FASE 2: Implementación de Módulos de Planificación de Recursos Institucionales - PRI** | 88.29d |  | 88.29d | 2019-01-25 |  |  |  |
| 161 | 3.1 | **ETAPA 1: Instalación del SIIM - Módulos PRI** | 4.14d |  | 4.14d | 2019-01-25 |  |  |  |
| 162 | 3.1.1 | **Entrega e Instalación del Software** | 3.14d |  | 3.14d | 2019-01-25 |  |  |  |
| 163 | 3.1.1.1 | **Instalar SIIM en Servidor** | 2.86d |  | 2.86d | 2019-01-25 |  | Funcionarios Técnicos - Cliente |  |
| 164 | 3.1.1.1.1 | **Instalar Módulos PRI** | 2.86d | 149FS+57.29d | 2.86d | 2019-01-25 |  | Funcionarios Técnicos - Cliente; Desarrollador PlanERP; Líder del Proyecto/Desarrollo PlanERP |  |
| 165 | 3.1.1.1.1.1 | 2.1 Administración Técnica | 2h |  |  | 2019-01-25 | 2019-01-25 |  |  |
| 166 | 3.1.1.1.1.2 | 2.2 Salud Ocupacional y Riesgos | 2h | 165FS+2h |  | 2019-01-25 | 2019-01-28 |  |  |
| 167 | 3.1.1.1.1.3 | 3.2 Adquisiciones | 2h | 166FS+2h |  | 2019-01-28 | 2019-01-28 |  |  |
| 168 | 3.1.1.1.1.4 | 6.1 Administración de Bienes | 2h | 167FS+2h |  | 2019-01-28 | 2019-01-28 |  |  |
| 169 | 3.1.1.1.1.5 | 8.1 Contabilidad | 2h | 168FS+2h |  | 2019-01-28 | 2019-01-28 |  |  |
| 170 | 3.1.1.1.1.6 | 8.2 Presupuestos | 2h | 169FS+2h |  | 2019-01-28 | 2019-01-29 |  |  |
| 171 | 3.1.1.1.1.7 | 13 CRM para Urbanizaciones | 2h | 170FS+2h |  | 2019-01-29 | 2019-01-29 |  |  |
| 172 | 3.1.1.1.1.8 | 14 Dirección de Planificación Institucional (Incluye control de proyectos de Obras Públicas | 2h | 171FS+2h |  | 2019-01-29 | 2019-01-29 |  |  |
| 173 | 3.1.1.1.1.9 | 15.6 Servicios Corporativos | 2h | 172FS+2h |  | 2019-01-29 | 2019-01-29 |  |  |
| 174 | 3.1.1.1.1.10 | 15.8 BI Planificación Institucional | 2h | 173FS+2h |  | 2019-01-29 | 2019-01-30 |  |  |
| 175 | 3.1.1.2 | Entrega de Software | 2h | 163FS+2.86d |  | 2019-01-30 | 2019-01-30 | Gerente de Proyecto PlanERP; Administrador de Contrato - Cliente |  |
| 176 | 3.1.2 | Revisar la ETAPA del Proyecto | 1d | 162FS+3.14d |  | 2019-01-30 | 2019-01-31 | Administrador de Contrato - Cliente; Gerente de Proyecto PlanERP; Analista de Calidad PlanERP |  |
| 177 | 3.1.3 | HITO: FINALIZACION ETAPA 1 | 0d | 176FS+1d |  | 2019-01-31 | 2019-01-31 |  | 53% |
| 178 | 3.2 | **ETAPA 2: Levantamiento de Características Institucionales - Módulos PRI** | 8.57d | 161FS+4.14d | 8.57d | 2019-01-31 |  |  |  |
| 179 | 3.2.1 | **Actividades de Gestión del Proyecto** | 0.57d |  | 0.57d | 2019-01-31 |  |  |  |
| 180 | 3.2.1.1 | Revisión del Plan del Proyecto | 2h |  |  | 2019-01-31 | 2019-01-31 | Administrador de Contrato - Cliente; Gerente de Proyecto PlanERP |  |
| 181 | 3.2.1.2 | Programar talleres de requerimientos de Entidad | 2h | 180FS+2h |  | 2019-01-31 | 2019-01-31 | Administrador de Contrato - Cliente; Gerente de Proyecto PlanERP |  |

| ID | WBS | Task | Duration | Predecessors | Remaining | Actual start | Actual finish | Resources | Porcentage Avance |
| --- | --- | --- | --- | --- | --- | --- | --- | --- | --- |
| 182 | 3.2.2 | **Sesiones de Requerimientos del Entidad** | 6d | 179FS+0.57d | 6d | 2019-01-31 |  |  |  |
| 183 | 3.2.2.1 | Conducir Sesiones de Requerimientos | 5d |  |  | 2019-01-31 | 2019-02-07 | Funcionarios Técnicos - Cliente; Analista Procesos PlanERP; Consultor Especialista en Procesos de GADs PlanERP |  |
| 184 | 3.2.2.2 | Crear Documento de Características del Entidad | 1d | 183FS+5d |  | 2019-02-07 | 2019-02-08 | Analista Procesos PlanERP; Funcionarios Técnicos - Cliente; Consultor Especialista en Procesos de GADs PlanERP |  |
| 185 | 3.2.3 | **Revisar el Documento de Características del Entidad** | 1d | 182FS+6d | 1d | 2019-02-08 |  |  |  |
| 186 | 3.2.3.1 | Revisar el Documento de Características del Entidad | 4h |  |  | 2019-02-08 | 2019-02-08 | Administrador de Contrato - Cliente; Gerente de Proyecto PlanERP; Analista de Calidad PlanERP; Consultor Especialista en Procesos de GADs PlanERP; Analista Procesos PlanERP |  |
| 187 | 3.2.3.2 | Revisar el Plan del Proyecto | 3h | 186FS+4h |  | 2019-02-08 | 2019-02-08 | Administrador de Contrato - Cliente; Gerente de Proyecto PlanERP |  |
| 188 | 3.2.4 | Revisar la ETAPA del Proyecto | 1d | 185FS+1d |  | 2019-02-08 | 2019-02-11 | Administrador de Contrato - Cliente; Gerente de Proyecto PlanERP; Líder del Proyecto/Desarrollo PlanERP; Analista de Calidad PlanERP |  |
| 189 | 3.2.5 | HITO: FINALIZACION ETAPA 2 | 0d | 188FS+1d |  | 2019-02-11 | 2019-02-11 |  | 55% |
| 190 | 3.3 | **ETAPA 3: Migración de Datos, Configuración y Pruebas de Operación de Módulos - Módulos PRI** | 33.71d | 178FS+8.57d | 33.71d | 2019-02-11 |  |  |  |
| 191 | 3.3.1 | **Gestión General del Proyecto** | 1.57d |  | 1.57d | 2019-02-11 |  |  |  |
| 192 | 3.3.1.1 | Planificar cambio Organizacional | 3h |  |  | 2019-02-11 | 2019-02-12 | Administrador de Contrato - Cliente; Gerente de Proyecto PlanERP; Líder del Proyecto/Desarrollo PlanERP |  |
| 193 | 3.3.1.2 | Planificar Entrenamiento a Usuarios Finales | 4h | 192FS+3h |  | 2019-02-12 | 2019-02-12 | Administrador de Contrato - Cliente; Gerente de Proyecto PlanERP; Líder del Proyecto/Desarrollo PlanERP |  |
| 194 | 3.3.1.3 | Definir y Preparar la Migración de Datos | 4h | 193FS+4h |  | 2019-02-12 | 2019-02-13 | Funcionarios Técnicos - Cliente; Líder del Proyecto/Desarrollo PlanERP; Especialista Base de Datos PlanERP |  |
| 195 | 3.3.2 | **Configuración del Sistema en Producción** | 19.57d | 191FS+1.57d | 19.57d | 2019-02-13 |  |  |  |
| 196 | 3.3.2.1 | Instalar el SIIM en Producción | 4h |  |  | 2019-02-13 | 2019-02-13 | Funcionarios Técnicos - Cliente; Analista Procesos PlanERP; Desarrollador PlanERP; Líder del Proyecto/Desarrollo PlanERP; Especialista Base de Datos PlanERP |  |
| 197 | 3.3.2.2 | Configurar Inicialización del Sistema | 1d | 196FS+4h |  | 2019-02-13 | 2019-02-14 | Funcionarios Técnicos - Cliente; Analista Procesos PlanERP; Desarrollador PlanERP; Líder del Proyecto/Desarrollo PlanERP; Especialista Base de Datos PlanERP |  |
| 198 | 3.3.2.3 | Realizar la Migración de Datos | 13d | 197FS+1d |  | 2019-02-14 | 2019-03-01 | Funcionarios Técnicos - Cliente; Analista Procesos PlanERP; Desarrollador PlanERP; Líder del Proyecto/Desarrollo PlanERP; Especialista Base de Datos PlanERP |  |
| 199 | 3.3.2.4 | Desarrollar Adaptaciones al Software | 2d | 198FS+13d |  | 2019-03-01 | 2019-03-05 | Funcionarios Técnicos - Cliente; Analista Procesos PlanERP; Desarrollador PlanERP; Líder del Proyecto/Desarrollo PlanERP; Especialista Base de Datos PlanERP |  |
| 200 | 3.3.2.5 | Configuración del Sistema en base al Documento de Características del Entidad | 1d | 199FS+2d |  | 2019-03-05 | 2019-03-06 | Funcionarios Técnicos - Cliente; Analista Procesos PlanERP; Desarrollador PlanERP; Líder del Proyecto/Desarrollo PlanERP; Especialista Base de Datos PlanERP |  |
| 201 | 3.3.2.6 | Configurar Interfaces | 1d | 200FS+1d |  | 2019-03-06 | 2019-03-07 | Funcionarios Técnicos - Cliente; Analista Procesos PlanERP; Desarrollador PlanERP; Líder del Proyecto/Desarrollo PlanERP; Especialista Base de Datos PlanERP |  |
| 202 | 3.3.2.7 | Configurar Usuarios y Autorizaciones | 1d | 201FS+1d |  | 2019-03-07 | 2019-03-08 | Funcionarios Técnicos - Cliente; Analista Procesos PlanERP; Desarrollador PlanERP; Líder del Proyecto/Desarrollo PlanERP; Especialista Base de Datos PlanERP |  |
| 203 | 3.3.3 | **Gestión del Cambio Organizacional** | 0.29d | 195FS+19.57d | 0.29d | 2019-03-08 |  |  |  |
| 204 | 3.3.3.1 | Conducir la comunicación de la Gestión de Cambios (si es aplicable) | 2h |  |  | 2019-03-08 | 2019-03-08 | Administrador de Contrato - Cliente; Líder Funcional - Usuario Experto - Cliente; Gerente de Proyecto PlanERP; Consultor Especialista en Procesos de GADs PlanERP |  |
| 205 | 3.3.4 | **Pruebas de validación del Sistema** | 4.57d | 203FS+0.29d | 4.57d | 2019-03-08 |  |  |  |
| 206 | 3.3.4.1 | Mantener la Lista Maestra de Procesos de Entidad | 4h |  |  | 2019-03-08 | 2019-03-11 | Líder Funcional - Usuario Experto - Cliente; Gerente de Proyecto PlanERP; Líder del Proyecto/Desarrollo PlanERP; Analista Procesos PlanERP; Consultor Especialista en Procesos de GADs PlanERP |  |

| ID | WBS | Task | Duration | Predecessors | Remaining | Actual start | Actual finish | Resources |
| --- | --- | --- | --- | --- | --- | --- | --- | --- |
| 207 | 3.3.4.2 | **Conducir Talleres de Validación** | 4d | 206FS+4h | 4d | 2019-03-11 |  | Líder Funcional - Usuario Experto - Cliente; Analista Procesos PlanERP; Analista de Calidad PlanERP; Consultor Especialista en Procesos de GADs PlanERP |
| 208 | 3.3.4.2.1 | 2.1 Administración Técnica | 4h |  |  | 2019-03-11 | 2019-03-11 |  |
| 209 | 3.3.4.2.2 | 2.2 Salud Ocupacional y Riesgos | 2h | 208FS+4h |  | 2019-03-11 | 2019-03-11 |  |
| 210 | 3.3.4.2.3 | 3.2 Adquisiciones | 4h | 209FS+2h |  | 2019-03-11 | 2019-03-12 |  |
| 211 | 3.3.4.2.4 | 6.1 Administración de Bienes | 2h | 210FS+4h |  | 2019-03-12 | 2019-03-12 |  |
| 212 | 3.3.4.2.5 | 8.1 Contabilidad | 4h | 211FS+2h |  | 2019-03-12 | 2019-03-13 |  |
| 213 | 3.3.4.2.6 | 8.2 Presupuestos | 4h | 212FS+4h |  | 2019-03-13 | 2019-03-13 |  |
| 214 | 3.3.4.2.7 | 13 CRM para Urbanizaciones | 2h | 213FS+4h |  | 2019-03-13 | 2019-03-13 |  |
| 215 | 3.3.4.2.8 | 14 Dirección de Planificación Institucional (Incluye control de proyectos de Obras Públicas) | 2h | 214FS+2h |  | 2019-03-13 | 2019-03-14 |  |
| 216 | 3.3.4.2.9 | 15.6 BI Servicios Corporativos | 2h | 215FS+2h |  | 2019-03-14 | 2019-03-14 |  |
| 217 | 3.3.4.2.10 | 15.8 BI Planificación Institucional | 2h | 216FS+2h |  | 2019-03-14 | 2019-03-14 |  |
| 218 | 3.3.5 | **Pruebas de aceptacion del Sistema** | 5.43d | 205FS+4.57d | 5.43d | 2019-03-14 |  |  |
| 219 | 3.3.5.1 | Definir casos de prueba y alcance | 3h |  |  | 2019-03-14 | 2019-03-14 | Líder Funcional - Usuario Experto - Cliente; Líder del Proyecto/Desarrollo PlanERP; Analista de Calidad PlanERP; Funcionarios Técnicos - Cliente |
| 220 | 3.3.5.2 | Preparar ambiente de pruebas | 1d | 219FS+3h |  | 2019-03-14 | 2019-03-15 | Funcionarios Técnicos - Cliente; Líder Funcional - Usuario Experto - Cliente; Líder del Proyecto/Desarrollo PlanERP; Analista de Calidad PlanERP |
| 221 | 3.3.5.3 | **Ejecutar el plan de pruebas** | 4d | 220FS+1d | 4d | 2019-03-15 |  | Líder Funcional - Usuario Experto - Cliente; Líder del Proyecto/Desarrollo PlanERP; Analista de Calidad PlanERP; Funcionarios Técnicos - Cliente; Consultor Especialista en Procesos de GADs PlanERP |
| 222 | 3.3.5.3.1 | 2.1 Administración Técnica | 4h |  |  | 2019-03-15 | 2019-03-18 |  |
| 223 | 3.3.5.3.2 | 2.2 Salud Ocupacional y Riesgos | 2h | 222FS+4h |  | 2019-03-18 | 2019-03-18 |  |
| 224 | 3.3.5.3.3 | 3.2 Adquisiciones | 4h | 223FS+2h |  | 2019-03-18 | 2019-03-19 |  |
| 225 | 3.3.5.3.4 | 6.1 Administración de Bienes | 2h | 224FS+4h |  | 2019-03-19 | 2019-03-19 |  |
| 226 | 3.3.5.3.5 | 8.1 Contabilidad | 4h | 225FS+2h |  | 2019-03-19 | 2019-03-19 |  |
| 227 | 3.3.5.3.6 | 8.2 Presupuestos | 4h | 226FS+4h |  | 2019-03-19 | 2019-03-20 |  |
| 228 | 3.3.5.3.7 | 13 CRM para Urbanizaciones | 2h | 227FS+4h |  | 2019-03-20 | 2019-03-20 |  |
| 229 | 3.3.5.3.8 | 14 Dirección de Planificación Institucional (Incluye control de proyectos de Obras Públicas) | 2h | 228FS+2h |  | 2019-03-20 | 2019-03-20 |  |
| 230 | 3.3.5.3.9 | 15.6 BI Servicios Corporativos | 2h | 229FS+2h |  | 2019-03-20 | 2019-03-21 |  |
| 231 | 3.3.5.3.10 | 15.8 BI Planificación Institucional | 2h | 230FS+2h |  | 2019-03-21 | 2019-03-21 |  |
| 232 | 3.3.5.4 | Revisar los resultados de las pruebas y necesidades de cambios | 1d |  |  | 2019-03-14 | 2019-03-15 | Administrador de Contrato - Cliente; Gerente de Proyecto PlanERP; Analista de Calidad PlanERP; Consultor Especialista en Procesos de GADs PlanERP |

| ID | WBS | Task | Duration | Predecessors | Remaining | Actual start | Actual finish | Resources | Porcentage Avance |
| --- | --- | --- | --- | --- | --- | --- | --- | --- | --- |
| 233 | 3.3.6 | **Planificar Salida a Producción y Soporte** | 1.29d | 218FS+5.43d | 1.29d | 2019-03-21 |  |  |  |
| 234 | 3.3.6.1 | Definir Plan de Salida a Producción | 3h |  |  | 2019-03-21 | 2019-03-21 | Administrador de Contrato - Cliente; Líder Funcional - Usuario Experto - Cliente; Gerente de Proyecto PlanERP; Líder del Proyecto/Desarrollo PlanERP |  |
| 235 | 3.3.6.2 | Planificar Estrategia de Soporte | 3h | 234FS+3h |  | 2019-03-21 | 2019-03-22 | Administrador de Contrato - Cliente; Líder Funcional - Usuario Experto - Cliente; Gerente de Proyecto PlanERP; Líder del Proyecto/Desarrollo PlanERP |  |
| 236 | 3.3.6.3 | Planificar Administración del Sistema | 3h | 235FS+3h |  | 2019-03-22 | 2019-03-22 | Administrador de Contrato - Cliente; Líder Funcional - Usuario Experto - Cliente; Gerente de Proyecto PlanERP; Líder del Proyecto/Desarrollo PlanERP |  |
| 237 | 3.3.7 | Revisar la ETAPA del Proyecto | 1d | 233FS+1.29d |  | 2019-03-22 | 2019-03-25 | Administrador de Contrato - Cliente; Gerente de Proyecto PlanERP; Líder del Proyecto/Desarrollo PlanERP; Analista de Calidad PlanERP |  |
| 238 | 3.3.8 | HITO: FINALIZACION ETAPA 3 | 0d | 237FS+1d |  | 2019-03-25 | 2019-03-25 |  | %60 |
| 239 | 3.4 | **ETAPA 4: Preparación Final previo Despliegue en Producción - Módulos PRI** | 11.43d | 190FS+33.71d | 11.43d | 2019-03-25 |  |  |  |
| 240 | 3.4.1 | **Gestión General del Proyecto** | 1.14d |  | 1.14d | 2019-03-25 |  |  |  |
| 241 | 3.4.1.1 | Confirmar el Plan de Entrenamiento | 4h |  |  | 2019-03-25 | 2019-03-25 | Administrador de Contrato - Cliente; Funcionarios Técnicos - Cliente; Gerente de Proyecto PlanERP; Líder del Proyecto/Desarrollo PlanERP |  |
| 242 | 3.4.1.2 | Finalizar plan de Salida a Producción | 4h | 241FS+4h |  | 2019-03-25 | 2019-03-26 | Administrador de Contrato - Cliente; Funcionarios Técnicos - Cliente; Gerente de Proyecto PlanERP; Líder del Proyecto/Desarrollo PlanERP; Analista de Calidad PlanERP |  |
| 243 | 3.4.2 | **Entrenamiento** | 6d | 240FS+1.14d | 6d | 2019-03-26 |  |  |  |
| 244 | 3.4.2.1 | **Entrenamiento de Usuarios Funcionales y Certificación de Procesos** | 4d |  | 4d | 2019-03-26 |  | Líder Funcional - Usuario Experto - Cliente; Usuarios Finales - Cliente; Funcionarios Técnicos - Cliente; Analista Procesos PlanERP; Desarrollador PlanERP; Consultor Especialista en Procesos de GADs PlanERP |  |
| 245 | 3.4.2.1.1 | 2.1 Administración Técnica | 4h |  |  | 2019-03-26 | 2019-03-26 |  |  |
| 246 | 3.4.2.1.2 | 2.2 Salud Ocupacional y Riesgos | 2h | 245FS+4h |  | 2019-03-26 | 2019-03-27 |  |  |
| 247 | 3.4.2.1.3 | 3.2 Adquisiciones | 4h | 246FS+2h |  | 2019-03-27 | 2019-03-27 |  |  |
| 248 | 3.4.2.1.4 | 6.1 Administración de Bienes | 2h | 247FS+4h |  | 2019-03-27 | 2019-03-27 |  |  |
| 249 | 3.4.2.1.5 | 8.1 Contabilidad | 4h | 248FS+2h |  | 2019-03-27 | 2019-03-28 |  |  |
| 250 | 3.4.2.1.6 | 8.2 Presupuestos | 4h | 249FS+4h |  | 2019-03-28 | 2019-03-28 |  |  |
| 251 | 3.4.2.1.7 | 13 CRM para Urbanizaciones | 2h | 250FS+4h |  | 2019-03-28 | 2019-03-29 |  |  |
| 252 | 3.4.2.1.8 | 14 Dirección de Planificación Institucional (Incluye control de proyectos de Obras Públicas) | 2h | 251FS+2h |  | 2019-03-29 | 2019-03-29 |  |  |
| 253 | 3.4.2.1.9 | 15.6 BI Servicios Corporativos | 2h | 252FS+2h |  | 2019-03-29 | 2019-03-29 |  |  |
| 254 | 3.4.2.1.10 | 15.8 BI Planificación Institucional | 2h | 253FS+2h |  | 2019-03-29 | 2019-03-29 |  |  |
| 255 | 3.4.2.2 | Entrenamiento de Usuario Técnicos | 6d |  |  | 2019-03-26 | 2019-04-02 | Funcionarios Técnicos - Cliente; Desarrollador PlanERP; Especialista Base de Datos PlanERP; Líder del Proyecto/Desarrollo PlanERP |  |
| 256 | 3.4.3 | **Preparación del Sistema** | 1.43d | 243FS+6d | 1.43d | 2019-04-02 |  |  |  |
| 257 | 3.4.3.1 | Completar la Administración del Sistema | 5h |  |  | 2019-04-02 | 2019-04-03 | Funcionarios Técnicos - Cliente; Desarrollador PlanERP; Analista Procesos PlanERP |  |
| 258 | 3.4.3.2 | Comprobación de la Puesta a Producción | 5h | 257FS+5h |  | 2019-04-03 | 2019-04-03 | Funcionarios Técnicos - Cliente; Administrador de Contrato - Cliente; Analista de Calidad PlanERP; Líder del Proyecto/Desarrollo PlanERP |  |

| ID | WBS | Task | Duration | Predecessors | Remaining | Actual start | Actual finish | Resources | Porcentage Avance |
| --- | --- | --- | --- | --- | --- | --- | --- | --- | --- |
| 259 | 3.4.4 | **Transición** | 2.57d | 256FS+1.43d | 2.57d | 2019-04-03 |  |  |  |
| 260 | 3.4.4.1 | Finalizar Procesamiento de Sistemas Legados | 4h |  |  | 2019-04-03 | 2019-04-04 | Administrador de Contrato - Cliente; Líder Funcional - Usuario Experto - Cliente; Desarrollador PlanERP; Líder del Proyecto/Desarrollo PlanERP; Especialista Base de Datos PlanERP |  |
| 261 | 3.4.4.2 | Realizar la Salida a Producción - Carga Inicial y Configuración Inicial | 2d | 260FS+4h |  | 2019-04-04 | 2019-04-08 | Administrador de Contrato - Cliente; Líder Funcional - Usuario Experto - Cliente; Desarrollador PlanERP; Líder del Proyecto/Desarrollo PlanERP; Especialista Base de Datos PlanERP |  |
| 262 | 3.4.5 | Revisar la ETAPA del Proyecto | 2h | 259FS+2.57d |  | 2019-04-08 | 2019-04-08 | Administrador de Contrato - Cliente; Gerente de Proyecto PlanERP; Líder del Proyecto/Desarrollo PlanERP; Analista de Calidad PlanERP |  |
| 263 | 3.4.6 | HITO: FINALIZACION ETAPA 4 | 0d | 262FS+2h |  | 2019-04-08 | 2019-04-08 |  | 80% |
| 264 | 3.5 | **ETAPA 5: Despliegue en Producción y Soporte Técnico - Módulos PRI** | 30.43d | 239FS+11.43d | 30.43d | 2019-04-08 |  |  |  |
| 265 | 3.5.1 | **Soporte en Producción** | 15d |  | 15d | 2019-04-08 |  |  |  |
| 266 | 3.5.1.1 | Soporte durante la Salida a Producción | 15d |  |  | 2019-04-08 | 2019-04-25 | Funcionarios Técnicos - Cliente; Desarrollador PlanERP; Analista Procesos PlanERP; Especialista Base de Datos PlanERP; Consultor Especialista en Procesos de GADs PlanERP |  |
| 267 | 3.5.1.2 | Resolver incidentes críticos | 15d | 262FS+2h |  | 2019-04-08 | 2019-04-25 | Funcionarios Técnicos - Cliente; Desarrollador PlanERP; Analista Procesos PlanERP; Especialista Base de Datos PlanERP; Consultor Especialista en Procesos de GADs PlanERP |  |
| 268 | 3.5.1.3 | Entregar el soporte y Administración al cliente | 2d | 262FS+2h |  | 2019-04-08 | 2019-04-10 | Funcionarios Técnicos - Cliente; Desarrollador PlanERP; Analista Procesos PlanERP; Especialista Base de Datos PlanERP; Consultor Especialista en Procesos de GADs PlanERP |  |
| 269 | 3.5.2 | **Mejora Continua** | 15d | 265FS+15d | 15d | 2019-04-25 |  |  |  |
| 270 | 3.5.2.1 | Monitoreo del Sistema y Acompañamiento ETAPA2 | 15d | 262FS+2h |  | 2019-04-25 | 2019-05-14 | Administrador de Contrato - Cliente; Funcionarios Técnicos - Cliente; Líder Funcional - Usuario Experto - Cliente; Especialista Base de Datos PlanERP; Líder del Proyecto/Desarrollo PlanERP; Consultor Especialista en Procesos de GADs PlanERP |  |
| 271 | 3.5.2.2 | Ajustes y Configuraciones finales al Software acorde a necesidades Entidad | 15d | 262FS+2h |  | 2019-04-25 | 2019-05-14 | Administrador de Contrato - Cliente; Funcionarios Técnicos - Cliente; Líder Funcional - Usuario Experto - Cliente; Especialista Base de Datos PlanERP; Líder del Proyecto/Desarrollo PlanERP; Consultor Especialista en Procesos de GADs PlanERP |  |
| 272 | 3.5.3 | **Cierre de la FASE 2** | 0.43d | 269FS+15d | 0.43d | 2019-05-14 |  |  |  |
| 273 | 3.5.3.1 | Reunión de Cierre de la FASE 2 | 3h |  |  | 2019-05-14 | 2019-05-14 | Administrador de Contrato - Cliente; Líder Funcional - Usuario Experto - Cliente; Funcionarios Técnicos - Cliente; Gerente de Proyecto PlanERP; Líder del Proyecto/Desarrollo PlanERP; Analista de Calidad PlanERP |  |
| 274 | 3.5.4 | HITO: FIN DE LA FASE 2 | 0d | 272FS+0.43d |  | 2019-05-14 | 2019-05-14 |  | 85% |
| 275 | 4 | **FASE 3: Implementación de Módulos de Planificación de Recursos Institucionales - PRI** | 76.86d |  | 76.86d | 2019-04-08 |  |  |  |
| 276 | 4.1 | **ETAPA 1: Instalación del SIIM - Módulos PRI** | 4.29d |  | 4.29d | 2019-04-08 |  |  |  |
| 277 | 4.1.1 | **Entrega e Instalación del Software** | 3.29d |  | 3.29d | 2019-04-08 |  |  |  |
| 278 | 4.1.1.1 | **Instalar SIIM en Servidor** | 3d |  | 3d | 2019-04-08 |  | Funcionarios Técnicos - Cliente |  |
| 279 | 4.1.1.1.1 | Instalar Módulos PRI | 3d | 263 |  | 2019-04-08 | 2019-04-10 | Funcionarios Técnicos - Cliente; Desarrollador PlanERP; Líder del Proyecto/Desarrollo PlanERP |  |
| 280 | 4.1.1.2 | Entrega de Software | 2h | 278FS+3d |  | 2019-04-10 | 2019-04-11 | Gerente de Proyecto PlanERP; Administrador de Contrato - Cliente |  |
| 281 | 4.1.2 | Revisar la ETAPA del Proyecto | 1d | 277FS+3.29d |  | 2019-04-11 | 2019-04-12 | Administrador de Contrato - Cliente; Gerente de Proyecto PlanERP; Analista de Calidad PlanERP |  |
| 282 | 4.1.3 | HITO: FINALIZACION ETAPA 1 | 0d | 281FS+1d |  | 2019-04-12 | 2019-04-12 |  | 86% |

| ID | WBS | Task | Duration | Predecessors | Remaining | Actual start | Actual finish | Resources | Porcentage Avance |
| --- | --- | --- | --- | --- | --- | --- | --- | --- | --- |
| 283 | 4.2 | **ETAPA 2: Levantamiento de Características Institucionales - Módulos PRI** | 8.57d | 276FS+4.29d | 8.57d | 2019-04-12 |  |  |  |
| 284 | 4.2.1 | **Actividades de Gestión del Proyecto** | 0.57d |  | 0.57d | 2019-04-12 |  |  |  |
| 285 | 4.2.1.1 | Revisión del Plan del Proyecto | 2h |  |  | 2019-04-12 | 2019-04-12 | Administrador de Contrato - Cliente; Gerente de Proyecto PlanERP |  |
| 286 | 4.2.1.2 | Programar talleres de requerimientos de Entidad | 2h | 285FS+2h |  | 2019-04-12 | 2019-04-12 | Administrador de Contrato - Cliente; Gerente de Proyecto PlanERP |  |
| 287 | 4.2.2 | **Sesiones de Requerimientos del Entidad** | 6d | 284FS+0.57d | 6d | 2019-04-12 |  |  |  |
| 288 | 4.2.2.1 | Conducir Sesiones de Requerimientos | 3d |  |  | 2019-04-12 | 2019-04-17 | Funcionarios Técnicos - Cliente; Analista Procesos PlanERP; Consultor Especialista en Procesos de GADs PlanERP |  |
| 289 | 4.2.2.2 | Crear Documento de Características del Entidad | 3d | 288FS+3d |  | 2019-04-17 | 2019-04-19 | Analista Procesos PlanERP; Funcionarios Técnicos - Cliente; Consultor Especialista en Procesos de GADs PlanERP |  |
| 290 | 4.2.3 | **Revisar el Documento de Características del Entidad** | 1d | 287FS+6d | 1d | 2019-04-19 |  |  |  |
| 291 | 4.2.3.1 | Revisar el Documento de Características del Entidad | 4h |  |  | 2019-04-19 | 2019-04-22 | Administrador de Contrato - Cliente; Gerente de Proyecto PlanERP; Analista de Calidad PlanERP; Consultor Especialista en Procesos de GADs PlanERP; Analista Procesos PlanERP |  |
| 292 | 4.2.3.2 | Revisar el Plan del Proyecto | 3h | 291FS+4h |  | 2019-04-22 | 2019-04-22 | Administrador de Contrato - Cliente; Gerente de Proyecto PlanERP |  |
| 293 | 4.2.4 | Revisar la ETAPA del Proyecto | 1d | 290FS+1d |  | 2019-04-22 | 2019-04-23 | Administrador de Contrato - Cliente; Gerente de Proyecto PlanERP; Líder del Proyecto/Desarrollo PlanERP; Analista de Calidad PlanERP |  |
| 294 | 4.2.5 | HITO: FINALIZACION ETAPA 2 | 0d | 293FS+1d |  | 2019-04-23 | 2019-04-23 |  | 87% |
| 295 | 4.3 | **ETAPA 3: Migración de Datos, Configuración y Pruebas de Operación de Módulos - Módulos PRI** | 33.43d | 283FS+8.57d | 33.43d | 2019-04-23 |  |  |  |
| 296 | 4.3.1 | **Gestión General del Proyecto** | 1.57d |  | 1.57d | 2019-04-23 |  |  |  |
| 297 | 4.3.1.1 | Planificar cambio Organizacional | 3h |  |  | 2019-04-23 | 2019-04-23 | Administrador de Contrato - Cliente; Gerente de Proyecto PlanERP; Líder del Proyecto/Desarrollo PlanERP |  |
| 298 | 4.3.1.2 | Planificar Entrenamiento a Usuarios Finales | 4h | 297FS+3h |  | 2019-04-23 | 2019-04-24 | Administrador de Contrato - Cliente; Gerente de Proyecto PlanERP; Líder del Proyecto/Desarrollo PlanERP |  |
| 299 | 4.3.1.3 | Definir y Preparar la Migración de Datos | 4h | 298FS+4h |  | 2019-04-24 | 2019-04-24 | Funcionarios Técnicos - Cliente; Líder del Proyecto/Desarrollo PlanERP; Especialista Base de Datos PlanERP |  |
| 300 | 4.3.2 | **Configuración del Sistema en Producción** | 20.57d | 296FS+1.57d | 20.57d | 2019-04-24 |  |  |  |
| 301 | 4.3.2.1 | Instalar el SIIM en Producción | 4h |  |  | 2019-04-24 | 2019-04-25 | Funcionarios Técnicos - Cliente; Analista Procesos PlanERP; Desarrollador PlanERP; Líder del Proyecto/Desarrollo PlanERP; Especialista Base de Datos PlanERP |  |
| 302 | 4.3.2.2 | Configurar Inicialización del Sistema | 1d | 301FS+4h |  | 2019-04-25 | 2019-04-26 | Funcionarios Técnicos - Cliente; Analista Procesos PlanERP; Desarrollador PlanERP; Líder del Proyecto/Desarrollo PlanERP; Especialista Base de Datos PlanERP |  |
| 303 | 4.3.2.3 | Realizar la Migración de Datos | 10d | 302FS+1d |  | 2019-04-26 | 2019-05-09 | Funcionarios Técnicos - Cliente; Analista Procesos PlanERP; Desarrollador PlanERP; Líder del Proyecto/Desarrollo PlanERP; Especialista Base de Datos PlanERP |  |
| 304 | 4.3.2.4 | Desarrollar Adaptaciones al Software | 5d | 303FS+10d |  | 2019-05-09 | 2019-05-15 | Funcionarios Técnicos - Cliente; Analista Procesos PlanERP; Desarrollador PlanERP; Líder del Proyecto/Desarrollo PlanERP; Especialista Base de Datos PlanERP |  |
| 305 | 4.3.2.5 | Configuración del Sistema en base al Documento de Características del Entidad | 2d | 304FS+5d |  | 2019-05-15 | 2019-05-17 | Funcionarios Técnicos - Cliente; Analista Procesos PlanERP; Desarrollador PlanERP; Líder del Proyecto/Desarrollo PlanERP; Especialista Base de Datos PlanERP |  |
| 306 | 4.3.2.6 | Configurar Interfaces | 1d | 305FS+2d |  | 2019-05-17 | 2019-05-20 | Funcionarios Técnicos - Cliente; Analista Procesos PlanERP; Desarrollador PlanERP; Líder del Proyecto/Desarrollo PlanERP; Especialista Base de Datos PlanERP |  |
| 307 | 4.3.2.7 | Configurar Usuarios y Autorizaciones | 1d | 306FS+1d |  | 2019-05-20 | 2019-05-20 | Funcionarios Técnicos - Cliente; Analista Procesos PlanERP; Desarrollador PlanERP; Líder del Proyecto/Desarrollo PlanERP; Especialista Base de Datos PlanERP |  |

| ID | WBS | Task | Duration | Predecessors | Remaining | Actual start | Actual finish | Resources |
| --- | --- | --- | --- | --- | --- | --- | --- | --- |
| 308 | 4.3.3 | **Gestión del Cambio Organizacional** | 2d | 300FS+20.57d | 2d | 2019-05-20 |  |  |
| 309 | 4.3.3.1 | Conducir la comunicación de la Gestión de Cambios (si es aplicable) | 2d |  |  | 2019-05-20 | 2019-05-22 | Administrador de Contrato - Cliente; Líder Funcional - Usuario Experto - Cliente; Gerente de Proyecto PlanERP; Consultor Especialista en Procesos de GADs PlanERP |
| 310 | 4.3.4 | **Pruebas de validación/aceptación del Sistema** | 2.57d | 308FS+2d | 2.57d | 2019-05-22 |  |  |
| 311 | 4.3.4.1 | Mantener la Lista Maestra de Procesos de Entidad | 4h |  |  | 2019-05-22 | 2019-05-23 | Líder Funcional - Usuario Experto - Cliente; Gerente de Proyecto PlanERP; Líder del Proyecto/Desarrollo PlanERP; Analista Procesos PlanERP; Consultor Especialista en Procesos de GADs PlanERP |
| 312 | 4.3.4.2 | **Conducir Talleres de Validación** | 2d | 311FS+4h | 2d | 2019-05-23 |  | Líder Funcional - Usuario Experto - Cliente; Analista Procesos PlanERP; Analista de Calidad PlanERP; Consultor Especialista en Procesos de GADs PlanERP |
| 313 | 4.3.4.2.1 | 3.1 Compras Públicas | 2h |  |  | 2019-05-23 | 2019-05-23 |  |
| 314 | 4.3.4.2.2 | 6.2 Servicios Generales | 2h | 313FS+2h |  | 2019-05-23 | 2019-05-23 |  |
| 315 | 4.3.4.2.3 | 8.5 Gestión Jurídica - Financiera | 2h | 314FS+2h |  | 2019-05-23 | 2019-05-23 |  |
| 316 | 4.3.4.2.4 | 15.2 BI Financiero | 2h | 315FS+2h |  | 2019-05-23 | 2019-05-24 |  |
| 317 | 4.3.4.2.5 | 15.3 BI Administración del Talento Humano | 2h | 316FS+2h |  | 2019-05-24 | 2019-05-24 |  |
| 318 | 4.3.4.2.6 | 15.4 BI Compras Públicas | 2h | 317FS+2h |  | 2019-05-24 | 2019-05-24 |  |
| 319 | 4.3.4.2.7 | 15.9 Tablero de Control | 2h | 318FS+2h |  | 2019-05-24 | 2019-05-24 |  |
| 320 | 4.3.5 | **Pruebas de aceptacion del Sistema** | 4.43d | 310FS+2.57d | 4.43d | 2019-05-24 |  |  |
| 321 | 4.3.5.1 | Definir casos de prueba y alcance | 3h |  |  | 2019-05-24 | 2019-05-27 | Líder Funcional - Usuario Experto - Cliente; Líder del Proyecto/Desarrollo PlanERP; Analista de Calidad PlanERP; Funcionarios Técnicos - Cliente |
| 322 | 4.3.5.2 | Preparar ambiente de pruebas | 1d | 321FS+3h |  | 2019-05-27 | 2019-05-28 | Funcionarios Técnicos - Cliente; Líder Funcional - Usuario Experto - Cliente; Líder del Proyecto/Desarrollo PlanERP; Analista de Calidad PlanERP |
| 323 | 4.3.5.3 | **Ejecutar el plan de pruebas** | 2d | 322FS+1d | 2d | 2019-05-28 |  | Líder Funcional - Usuario Experto - Cliente; Líder del Proyecto/Desarrollo PlanERP; Analista de Calidad PlanERP; Funcionarios Técnicos - Cliente; Consultor Especialista en Procesos de GADs PlanERP |
| 324 | 4.3.5.3.1 | 3.1 Compras Públicas | 2h |  |  | 2019-05-28 | 2019-05-28 |  |
| 325 | 4.3.5.3.2 | 6.2 Servicios Generales | 2h | 324FS+2h |  | 2019-05-28 | 2019-05-28 |  |
| 326 | 4.3.5.3.3 | 8.5 Gestión Jurídica - Financiera | 2h | 325FS+2h |  | 2019-05-28 | 2019-05-28 |  |
| 327 | 4.3.5.3.4 | 15.2 BI Financiero | 2h | 326FS+2h |  | 2019-05-28 | 2019-05-29 |  |
| 328 | 4.3.5.3.5 | 15.3 BI Administración del Talento Humano | 2h | 327FS+2h |  | 2019-05-29 | 2019-05-29 |  |
| 329 | 4.3.5.3.6 | 15.4 BI Compras Públicas | 2h | 328FS+2h |  | 2019-05-29 | 2019-05-29 |  |
| 330 | 4.3.5.3.7 | 15.9 Tablero de Control | 2h | 329FS+2h |  | 2019-05-29 | 2019-05-29 |  |
| 331 | 4.3.5.4 | Revisar los resultados de las pruebas y necesidades de cambios | 1d | 330FS+2h, 319FS+2h |  | 2019-05-29 | 2019-05-30 | Administrador de Contrato - Cliente; Gerente de Proyecto PlanERP; Analista de Calidad PlanERP; Consultor Especialista en Procesos de GADs PlanERP |

| ID | WBS | Task | Duration | Predecessors | Remaining | Actual start | Actual finish | Resources | Porcentage Avance |
| --- | --- | --- | --- | --- | --- | --- | --- | --- | --- |
| 332 | 4.3.6 | **Planificar Salida a Producción y Soporte** | 1.29d | 320FS+4.43d | 1.29d | 2019-05-30 |  |  |  |
| 333 | 4.3.6.1 | Definir Plan de Salida a Producción | 3h |  |  | 2019-05-30 | 2019-05-31 | Administrador de Contrato - Cliente; Líder Funcional - Usuario Experto - Cliente; Gerente de Proyecto PlanERP; Líder del Proyecto/Desarrollo PlanERP |  |
| 334 | 4.3.6.2 | Planificar Estrategia de Soporte | 3h | 333FS+3h |  | 2019-05-31 | 2019-05-31 | Administrador de Contrato - Cliente; Líder Funcional - Usuario Experto - Cliente; Gerente de Proyecto PlanERP; Líder del Proyecto/Desarrollo PlanERP |  |
| 335 | 4.3.6.3 | Planificar Administración del Sistema | 3h | 334FS+3h |  | 2019-05-31 | 2019-05-31 | Administrador de Contrato - Cliente; Líder Funcional - Usuario Experto - Cliente; Gerente de Proyecto PlanERP; Líder del Proyecto/Desarrollo PlanERP |  |
| 336 | 4.3.7 | Revisar la ETAPA del Proyecto | 1d | 332FS+1.29d |  | 2019-05-31 | 2019-06-03 | Administrador de Contrato - Cliente; Gerente de Proyecto PlanERP; Líder del Proyecto/Desarrollo PlanERP; Analista de Calidad PlanERP |  |
| 337 | 4.3.8 | HITO: FINALIZACION ETAPA 3 | 0d | 336FS+1d |  | 2019-06-03 | 2019-06-03 |  | 95% |
| 338 | 4.4 | **ETAPA 4: Preparación Final previo Despliegue en Producción - Módulos PRI** | 12.43d | 295FS+33.43d | 12.43d | 2019-06-03 |  |  |  |
| 339 | 4.4.1 | **Gestión General del Proyecto** | 1.14d |  | 1.14d | 2019-06-03 |  |  |  |
| 340 | 4.4.1.1 | Confirmar el Plan de Entrenamiento | 4h |  |  | 2019-06-03 | 2019-06-04 | Administrador de Contrato - Cliente; Funcionarios Técnicos - Cliente; Gerente de Proyecto PlanERP; Líder del Proyecto/Desarrollo PlanERP |  |
| 341 | 4.4.1.2 | Finalizar plan de Salida a Producción | 4h | 340FS+4h |  | 2019-06-04 | 2019-06-04 | Administrador de Contrato - Cliente; Funcionarios Técnicos - Cliente; Gerente de Proyecto PlanERP; Líder del Proyecto/Desarrollo PlanERP; Analista de Calidad PlanERP |  |
| 342 | 4.4.2 | **Entrenamiento** | 7d | 339FS+1.14d | 7d | 2019-06-04 |  |  |  |
| 343 | 4.4.2.1 | **Entrenamiento de Usuarios Funcionales y Certificación de Procesos** | 4d |  | 4d | 2019-06-04 |  | Líder Funcional - Usuario Experto - Cliente; Usuarios Finales - Cliente; Funcionarios Técnicos - Cliente; Analista Procesos PlanERP; Desarrollador PlanERP; Consultor Especialista en Procesos de GADs PlanERP |  |
| 344 | 4.4.2.1.1 | 3.1 Compras Públicas | 4h |  |  | 2019-06-04 | 2019-06-05 |  |  |
| 345 | 4.4.2.1.2 | 6.2 Servicios Generales | 4h | 344FS+4h |  | 2019-06-05 | 2019-06-05 |  |  |
| 346 | 4.4.2.1.3 | 8.5 Gestión Jurídica - Financiera | 4h | 345FS+4h |  | 2019-06-05 | 2019-06-06 |  |  |
| 347 | 4.4.2.1.4 | 15.2 BI Financiero | 4h | 346FS+4h |  | 2019-06-06 | 2019-06-06 |  |  |
| 348 | 4.4.2.1.5 | 15.3 BI Administración del Talento Humano | 4h | 347FS+4h |  | 2019-06-06 | 2019-06-07 |  |  |
| 349 | 4.4.2.1.6 | 15.4 BI Compras Públicas | 4h | 348FS+4h |  | 2019-06-07 | 2019-06-07 |  |  |
| 350 | 4.4.2.1.7 | 15.9 Tablero de Control | 4h | 349FS+4h |  | 2019-06-07 | 2019-06-10 |  |  |
| 351 | 4.4.2.2 | Entrenamiento de Usuario Técnicos | 3d | 350FS+4h |  | 2019-06-10 | 2019-06-12 | Funcionarios Técnicos - Cliente; Desarrollador PlanERP; Especialista Base de Datos PlanERP; Líder del Proyecto/Desarrollo PlanERP |  |
| 352 | 4.4.3 | **Preparación del Sistema** | 1.43d | 342FS+7d | 1.43d | 2019-06-12 |  |  |  |
| 353 | 4.4.3.1 | Completar la Administración del Sistema | 5h |  |  | 2019-06-12 | 2019-06-13 | Funcionarios Técnicos - Cliente; Desarrollador PlanERP; Analista Procesos PlanERP |  |
| 354 | 4.4.3.2 | Comprobación de la Puesta a Producción | 5h | 353FS+5h |  | 2019-06-13 | 2019-06-14 | Funcionarios Técnicos - Cliente; Administrador de Contrato - Cliente; Analista de Calidad PlanERP; Líder del Proyecto/Desarrollo PlanERP |  |
| 355 | 4.4.4 | **Transición** | 2.57d | 352FS+1.43d | 2.57d | 2019-06-14 |  |  |  |
| 356 | 4.4.4.1 | Finalizar Procesamiento de Sistemas Legados | 4h |  |  | 2019-06-14 | 2019-06-14 | Administrador de Contrato - Cliente; Líder Funcional - Usuario Experto - Cliente; Desarrollador PlanERP; Líder del Proyecto/Desarrollo PlanERP; Especialista Base de Datos PlanERP |  |
| 357 | 4.4.4.2 | Realizar la Salida a Producción - Carga Inicial y Configuración Inicial | 2d | 356FS+4h |  | 2019-06-14 | 2019-06-18 | Administrador de Contrato - Cliente; Líder Funcional - Usuario Experto - Cliente; Desarrollador PlanERP; Líder del Proyecto/Desarrollo PlanERP; Especialista Base de Datos PlanERP |  |
| 358 | 4.4.5 | Revisar la ETAPA del Proyecto | 2h | 355FS+2.57d |  | 2019-06-18 | 2019-06-18 | Administrador de Contrato - Cliente; Gerente de Proyecto PlanERP; Líder del Proyecto/Desarrollo PlanERP; Analista de Calidad PlanERP |  |
| 359 | 4.4.6 | HITO: FINALIZACION ETAPA 4 | 0d | 358FS+2h |  | 2019-06-18 | 2019-06-18 |  | 98% |

| ID | WBS | Task | Duration | Predecessors | Remaining | Actual start | Actual finish | Resources | Porcentage Avance |
| --- | --- | --- | --- | --- | --- | --- | --- | --- | --- |
| 360 | 4.5 | **ETAPA 5: Despliegue en Producción y Soporte Técnico - Módulos PRI** | 15.43d | 338FS+12.43d | 15.43d | 2019-06-21 |  |  |  |
| 361 | 4.5.1 | **Soporte en Producción** | 10d |  | 10d | 2019-06-21 |  |  |  |
| 362 | 4.5.1.1 | Soporte durante la Salida a Producción | 5d |  |  | 2019-06-21 | 2019-06-28 | Funcionarios Técnicos - Cliente; Desarrollador PlanERP; Analista Procesos PlanERP; Especialista Base de Datos PlanERP; Consultor Especialista en Procesos de GADs PlanERP |  |
| 363 | 4.5.1.2 | Resolver incidentes críticos | 3d | 362FS+5d |  | 2019-06-28 | 2019-07-02 | Funcionarios Técnicos - Cliente; Desarrollador PlanERP; Analista Procesos PlanERP; Especialista Base de Datos PlanERP; Consultor Especialista en Procesos de GADs PlanERP |  |
| 364 | 4.5.1.3 | Entregar el soporte y Administración al cliente | 2d | 363FS+3d |  | 2019-07-02 | 2019-07-04 | Funcionarios Técnicos - Cliente; Desarrollador PlanERP; Analista Procesos PlanERP; Especialista Base de Datos PlanERP; Consultor Especialista en Procesos de GADs PlanERP |  |
| 365 | 4.5.2 | **Mejora Continua** | 15d | 338FS+12.43d | 15d | 2019-06-21 |  |  |  |
| 366 | 4.5.2.1 | Monitoreo del Sistema y Acompañamiento | 15d |  |  | 2019-06-21 | 2019-07-10 | Administrador de Contrato - Cliente; Funcionarios Técnicos - Cliente; Líder Funcional - Usuario Experto - Cliente; Especialista Base de Datos PlanERP; Líder del Proyecto/Desarrollo PlanERP; Consultor Especialista en Procesos de GADs PlanERP |  |
| 367 | 4.5.2.2 | Ajustes y Configuraciones finales al Software acorde a necesidades Entidad | 15d | 338FS+12.43d |  | 2019-06-21 | 2019-07-10 | Administrador de Contrato - Cliente; Funcionarios Técnicos - Cliente; Líder Funcional - Usuario Experto - Cliente; Especialista Base de Datos PlanERP; Líder del Proyecto/Desarrollo PlanERP; Consultor Especialista en Procesos de GADs PlanERP |  |
| 368 | 4.5.3 | **Cierre de la FASE 3 y Proyecto** | 0.43d | 365FS+15d | 0.43d | 2019-07-10 |  |  |  |
| 369 | 4.5.3.1 | Reunión de Cierre de la FASE 3 y Proyecto | 3h |  |  | 2019-07-10 | 2019-07-10 | Administrador de Contrato - Cliente; Líder Funcional - Usuario Experto - Cliente; Funcionarios Técnicos - Cliente; Gerente de Proyecto PlanERP; Líder del Proyecto/Desarrollo PlanERP; Analista de Calidad PlanERP |  |
| 370 | 4.5.4 | HITO: FIN DE LA FASE 3 y Proyecto | 0d | 365FS+15d |  | 2019-07-10 | 2019-07-10 |  | 100% |
