# 010101010010101001010101001010100101

Schedule from MS Project MPX, 2019-08-16 to 2019-08-16.

## Calendars

- Estándar: Mon-Fri 09:00 am-01:00 pm, 03:00 pm-07:00 pm; Sat-Sun off.

## Resources

| Resource |
| --- |
| Administrador de Contrato - Cliente |
| Líder Técnico - Cliente |
| Líder Funcional - Usuario Experto - Cliente |
| Funcionarios Técnicos - Cliente |
| Usuarios Finales - Cliente |
| Desarrollador PlanERP |
| Gerente de Proyecto PlanERP |
| Líder del Proyecto/Desarrollo PlanERP |
| Analista Procesos PlanERP |
| Analista de Calidad PlanERP |
| Especialista Base de Datos PlanERP |
| Consultor Especialista en Procesos de GADs PlanERP |

## Schedule

| ID | WBS | Task | Duration | Start | Finish | Predecessors | Free slack |
| --- | --- | --- | --- | --- | --- | --- | --- |
| 1 | 0 | 20190122- Plan del Proyecto de Implementacion del SIIM Daule | 294.29d | 2019-08-16 | 2019-08-16 |  | 0d |
| 2 | 2 | **Programa de Implementación SIIM** | 294.29d |  |  |  |  |
| 3 | 2.1 | **FASE 1: Implementación de Módulos de Servicio al Cliente (SC) y Atención al Ciudadano (AC)** | 159.57d |  |  |  |  |
| 4 | 2.1.1 | **ETAPA 1: Preparación del Proyecto e Instalación del SIIM - Módulos SC y AC** | 9d |  |  |  |  |
| 5 | 2.1.1.1 | **Actividades de Gestión del Proyecto** | 2.29d |  |  |  |  |
| 6 | 2.1.1.1.1 | Revisión de Información de Contrato y Anexos | 6h |  |  |  |  |
| 7 | 2.1.1.1.2 | Definir la Organización del Proyecto | 4h |  |  | 6 |  |
| 8 | 2.1.1.1.3 | Kick-off Interno del Proyecto | 6h |  |  | 7 |  |
| 9 | 2.1.1.2 | **Preparación del kick-off del Proyecto** | 1.14d |  |  |  |  |
| 10 | 2.1.1.2.1 | Comunicación con el Cliente | 4h |  |  | 8 |  |
| 11 | 2.1.1.2.2 | Crear la presentación del kick-off | 4h |  |  | 10 |  |
| 12 | 2.1.1.3 | **Reunión de Kick-off** | 0.29d |  |  |  |  |
| 13 | 2.1.1.3.1 | Realizar la reunión de kick-off | 2h |  |  | 11 |  |
| 14 | 2.1.1.4 | **Entrega e Instalación del Software** | 4.29d |  |  |  |  |
| 15 | 2.1.1.4.1 | **Instalar SIIM en Servidor** | 4d |  |  | 12 |  |
| 16 | 2.1.1.4.1.1 | 1 Dirección de Desarrollo Territorial (No incluye Catastro) | 2h |  |  |  |  |
| 17 | 2.1.1.4.1.2 | 4 Dirección de Justicia y Vigilancia | 2h |  |  | 16 |  |
| 18 | 2.1.1.4.1.3 | 5 Dirección de Desarrollo Humano y Social | 2h |  |  | 17 |  |
| 19 | 2.1.1.4.1.4 | 8.3 Rentas | 2h |  |  | 18 |  |
| 20 | 2.1.1.4.1.5 | 8.4 Tesorería | 2h |  |  | 19 |  |
| 21 | 2.1.1.4.1.6 | 9.1 Mercados | 1h |  |  | 20 |  |
| 22 | 2.1.1.4.1.7 | 9.2 Cementerio | 1h |  |  | 21 |  |
| 23 | 2.1.1.4.1.8 | 9.3 Camal | 1h |  |  | 22 |  |
| 24 | 2.1.1.4.1.9 | 10 Registro de la Propiedad y Mercantil | 2h |  |  | 23 |  |
| 25 | 2.1.1.4.1.10 | 11 Administración de bomberos | 1h |  |  | 24 |  |
| 26 | 2.1.1.4.1.11 | 12 CRM para ciudadanos. Ventanilla Única | 2h |  |  | 25 |  |
| 27 | 2.1.1.4.1.12 | 15.1 BI Desarrollo Territorial | 2h |  |  | 26 |  |
| 28 | 2.1.1.4.1.13 | 15.5 BI Obras Públicas Municipales | 2h |  |  | 27 |  |
| 29 | 2.1.1.4.1.14 | 15.7 BI Registro de la Propiedad y Mercantil | 2h |  |  | 28 |  |
| 30 | 2.1.1.4.1.15 | 16.1 Consultas Portal Web | 2h |  |  | 29 |  |
| 31 | 2.1.1.4.1.16 | 16.2 Aplicación para móviles (APP) | 2h |  |  | 30 |  |
| 32 | 2.1.1.4.2 | Entrega de Software | 2h |  |  | 15 |  |
| 33 | 2.1.1.5 | Revisar la ETAPA del Proyecto | 1d |  |  | 14 |  |
| 34 | 2.1.1.6 | HITO: FINALIZACION ETAPA 1 | 0d |  |  | 33 |  |

| ID | WBS | Task | Duration | Predecessors |
| --- | --- | --- | --- | --- |
| 35 | 2.1.2 | **ETAPA 2: Levantamiento de Características Institucionales - Módulos SC y AC** | 14.71d | 4 |
| 36 | 2.1.2.1 | **Actividades de Gestión del Proyecto** | 1.14d |  |
| 37 | 2.1.2.1.1 | Revisión del Plan del Proyecto | 4h | 33 |
| 38 | 2.1.2.1.2 | Programar talleres de requerimientos de Entidad | 4h | 37 |
| 39 | 2.1.2.2 | **Sesiones de Requerimientos del Entidad** | 12d |  |
| 40 | 2.1.2.2.1 | Conducir Sesiones de Requerimientos | 10d | 38 |
| 41 | 2.1.2.2.2 | Crear Documento de Características del Entidad | 2d | 40 |
| 42 | 2.1.2.3 | **Revisar el Documento de Características del Entidad** | 0.57d |  |
| 43 | 2.1.2.3.1 | Revisar el Documento de Características del Entidad | 2h | 41 |
| 44 | 2.1.2.3.2 | Revisar el Plan del Proyecto | 2h | 43 |
| 45 | 2.1.2.4 | Revisar la ETAPA del Proyecto | 1d | 42 |
| 46 | 2.1.2.5 | HITO: FINALIZACION ETAPA 2 | 0d | 45 |
| 47 | 2.1.3 | **ETAPA 3: Migración de Datos, Configuración y Pruebas de Operación - Módulos SC y AC** | 56.57d | 35 |
| 48 | 2.1.3.1 | **Gestión General del Proyecto** | 0.57d |  |
| 49 | 2.1.3.1.1 | Planificar cambio Organizacional | 2h | 45 |
| 50 | 2.1.3.1.2 | Planificar Entrenamiento a Usuarios Finales | 2h | 49 |
| 51 | 2.1.3.1.3 | Definir y Preparar la Migración de Datos | 2h | 49 |
| 52 | 2.1.3.2 | **Configuración del Sistema en Producción** | 56d |  |
| 53 | 2.1.3.2.1 | Instalar el SIIM en Producción | 1d | 51 |
| 54 | 2.1.3.2.2 | Configurar Inicialización del Sistema | 1d | 53 |
| 55 | 2.1.3.2.3 | Realizar la Migración de Datos | 54d | 54 |
| 56 | 2.1.3.2.4 | Desarrollar Adaptaciones al Software | 10d | 54 |
| 57 | 2.1.3.2.5 | Configuración del Sistema en base al Documento de Características del Entidad | 3d | 56 |
| 58 | 2.1.3.2.6 | Configurar Interfaces | 1d | 57 |
| 59 | 2.1.3.2.7 | Configurar Usuarios y Autorizaciones | 1d | 58 |

| ID | WBS | Task | Duration | Predecessors |
| --- | --- | --- | --- | --- |
| 60 | 2.1.3.3 | **Gestión del Cambio Organizacional** | 1d |  |
| 61 | 2.1.3.3.1 | Conducir la comunicación de la Gestión de Cambios (si es aplicable) | 1d | 59 |
| 62 | 2.1.3.4 | **Pruebas de validación/aceptación del Sistema** | 3.43d |  |
| 63 | 2.1.3.4.1 | Mantener la Lista Maestra de Procesos de Entidad | 2h | 61 |
| 64 | 2.1.3.4.2 | **Conducir Talleres de Validación** | 3.14d | 63 |
| 65 | 2.1.3.4.2.1 | 1 Dirección de Desarrollo Territorial (No incluye Catastro) | 2h |  |
| 66 | 2.1.3.4.2.2 | 4 Dirección de Justicia y Vigilancia | 2h | 65 |
| 67 | 2.1.3.4.2.3 | 5 Dirección de Desarrollo Humano y Social | 1h | 66 |
| 68 | 2.1.3.4.2.4 | 8.3 Rentas | 2h | 67 |
| 69 | 2.1.3.4.2.5 | 8.4 Tesorería | 2h | 68 |
| 70 | 2.1.3.4.2.6 | 9.1 Mercados | 1h | 69 |
| 71 | 2.1.3.4.2.7 | 9.2 Cementerio | 1h | 70 |
| 72 | 2.1.3.4.2.8 | 9.3 Camal | 1h | 71 |
| 73 | 2.1.3.4.2.9 | 10 Registro de la Propiedad y Mercantil | 2h | 72 |
| 74 | 2.1.3.4.2.10 | 11 Administración de bomberos | 1h | 73 |
| 75 | 2.1.3.4.2.11 | 12 CRM para ciudadanos. Ventanilla Única | 2h | 74 |
| 76 | 2.1.3.4.2.12 | 15.1 BI Desarrollo Territorial | 1h | 75 |
| 77 | 2.1.3.4.2.13 | 15.5 BI Obras Públicas Municipales | 1h | 76 |
| 78 | 2.1.3.4.2.14 | 15.7 BI Registro de la Propiedad y Mercantil | 1h | 77 |
| 79 | 2.1.3.4.2.15 | 16.1 Consultas Portal Web | 1h | 78 |
| 80 | 2.1.3.4.2.16 | 16.2 Aplicación para móviles (APP) | 1h | 79 |
| 81 | 2.1.3.5 | **Pruebas de Aceptacion Sistema** | 5.43d |  |
| 82 | 2.1.3.5.1 | Definir casos de prueba y alcance | 2h | 80, 31 |
| 83 | 2.1.3.5.2 | Preparar ambiente de pruebas | 1d | 82 |

| ID | WBS | Task | Duration | Predecessors |
| --- | --- | --- | --- | --- |
| 84 | 2.1.3.5.3 | **Ejecutar el plan de pruebas de Aceptacion del Sistema** | 3.14d | 83 |
| 85 | 2.1.3.5.3.1 | 1 Dirección de Desarrollo Territorial (No incluye Catastro) | 2h |  |
| 86 | 2.1.3.5.3.2 | 4 Dirección de Justicia y Vigilancia | 2h | 85 |
| 87 | 2.1.3.5.3.3 | 5 Dirección de Desarrollo Humano y Social | 1h | 86 |
| 88 | 2.1.3.5.3.4 | 8.3 Rentas | 2h | 87 |
| 89 | 2.1.3.5.3.5 | 8.4 Tesorería | 2h | 88 |
| 90 | 2.1.3.5.3.6 | 9.1 Mercados | 1h | 89 |
| 91 | 2.1.3.5.3.7 | 9.2 Cementerio | 1h | 90 |
| 92 | 2.1.3.5.3.8 | 9.3 Camal | 1h | 91 |
| 93 | 2.1.3.5.3.9 | 10 Registro de la Propiedad y Mercantil | 2h | 92 |
| 94 | 2.1.3.5.3.10 | 11 Administración de bomberos | 1h | 93 |
| 95 | 2.1.3.5.3.11 | 12 CRM para ciudadanos. Ventanilla Única | 2h | 94 |
| 96 | 2.1.3.5.3.12 | 15.1 BI Desarrollo Territorial | 1h | 95 |
| 97 | 2.1.3.5.3.13 | 15.5 BI Obras Públicas Municipales | 1h | 96 |
| 98 | 2.1.3.5.3.14 | 15.7 BI Registro de la Propiedad y Mercantil | 1h | 97 |
| 99 | 2.1.3.5.3.15 | 16.1 Consultas Portal Web | 1h | 98 |
| 100 | 2.1.3.5.3.16 | 16.2 Aplicación para móviles (APP) | 1h | 99 |
| 101 | 2.1.3.5.4 | Revisar los resultados de las pruebas y necesidades de cambios | 1d | 100, 80, 31 |
| 102 | 2.1.3.6 | **Planificar Salida a Producción y Soporte** | 0.29d |  |
| 103 | 2.1.3.6.1 | Definir Plan de Salida a Producción | 2h | 101 |
| 104 | 2.1.3.6.2 | Planificar Estrategia de Soporte | 2h | 101 |
| 105 | 2.1.3.6.3 | Planificar Administración del Sistema | 2h | 101 |
| 106 | 2.1.3.7 | Revisar la ETAPA del Proyecto | 1d | 102 |
| 107 | 2.1.3.8 | HITO: FINALIZACION ETAPA 3 | 0d | 106 |

| ID | WBS | Task | Duration | Predecessors |
| --- | --- | --- | --- | --- |
| 108 | 2.1.4 | **ETAPA 4: Preparación Final previo Despliegue en Producción - Módulos SC y AC** | 19.86d |  |
| 109 | 2.1.4.1 | **Gestión General del Proyecto** | 0.57d |  |
| 110 | 2.1.4.1.1 | Confirmar el Plan de Entrenamiento | 2h | 106 |
| 111 | 2.1.4.1.2 | Finalizar plan de Salida a Producción | 2h | 110 |
| 112 | 2.1.4.2 | **Entrenamiento en Modulos de Areas Funcionales Fase 1** | 16d | 109 |
| 113 | 2.1.4.2.1 | **Entrenamiento de Usuarios Funcionales y Certificación de Procesos** | 12d | 111 |
| 114 | 2.1.4.2.1.1 | 1 Dirección de Desarrollo Territorial (No incluye Catastro) | 1d |  |
| 115 | 2.1.4.2.1.2 | 4 Dirección de Justicia y Vigilancia | 1d | 114 |
| 116 | 2.1.4.2.1.3 | 5 Dirección de Desarrollo Humano y Social | 1d | 115 |
| 117 | 2.1.4.2.1.4 | 8.3 Rentas | 1d | 116 |
| 118 | 2.1.4.2.1.5 | 8.4 Tesorería | 1d | 117 |
| 119 | 2.1.4.2.1.6 | 9.1 Mercados | 0.5d | 118 |
| 120 | 2.1.4.2.1.7 | 9.2 Cementerio | 0.5d | 119 |
| 121 | 2.1.4.2.1.8 | 9.3 Camal | 0.5d | 120 |
| 122 | 2.1.4.2.1.9 | 10 Registro de la Propiedad y Mercantil | 1d | 121 |
| 123 | 2.1.4.2.1.10 | 11 Administración de bomberos | 0.5d | 122 |
| 124 | 2.1.4.2.1.11 | 12 CRM para ciudadanos. Ventanilla Única | 1d | 123 |
| 125 | 2.1.4.2.1.12 | 15.1 BI Desarrollo Territorial | 0.5d | 124 |
| 126 | 2.1.4.2.1.13 | 15.5 BI Obras Públicas Municipales | 0.5d | 125 |
| 127 | 2.1.4.2.1.14 | 15.7 BI Registro de la Propiedad y Mercantil | 0.5d | 126 |
| 128 | 2.1.4.2.1.15 | 16.1 Consultas Portal Web | 1d | 127 |
| 129 | 2.1.4.2.1.16 | 16.2 Aplicación para móviles (APP) | 0.5d | 128 |
| 130 | 2.1.4.2.2 | Entrenamiento de Usuario Técnicos | 4d | 129, 100, 80, 31 |
| 131 | 2.1.4.3 | **Preparación del Sistema** | 0.86d | 112 |
| 132 | 2.1.4.3.1 | Completar la Administración del Sistema | 3h |  |
| 133 | 2.1.4.3.2 | Comprobación de la Puesta a Producción | 3h | 132 |

| ID | WBS | Task | Duration | Predecessors |
| --- | --- | --- | --- | --- |
| 134 | 2.1.4.4 | **Transición** | 2.14d | 131 |
| 135 | 2.1.4.4.1 | Finalizar Procesamiento de Sistemas Legados | 1h |  |
| 136 | 2.1.4.4.2 | Realizar la Salida a Producción - Carga Inicial y Configuración Inicial | 2d | 135 |
| 137 | 2.1.4.5 | Revisar la ETAPA del Proyecto | 2h | 134 |
| 138 | 2.1.4.6 | HITO: FINALIZACION ETAPA 4 | 0d | 137 |
| 139 | 2.1.5 | **ETAPA 5: Despliegue en Producción y Soporte Técnico - Módulos SC y AC** | 30d | 108 |
| 140 | 2.1.5.1 | **Soporte en Producción** | 30d |  |
| 141 | 2.1.5.1.1 | Soporte durante la Salida a Producción | 30d | 137 |
| 142 | 2.1.5.1.2 | Resolver incidentes críticos | 20d | 137 |
| 143 | 2.1.5.1.3 | Entregar el soporte y Administración al cliente | 1d |  |
| 144 | 2.1.5.2 | **Mejora Continua** | 10d |  |
| 145 | 2.1.5.2.1 | Monitoreo del Sistema y Acompañamiento ETAPA1 | 10d | 137 |
| 146 | 2.1.5.2.2 | Ajustes y Configuraciones finales al Software acorde a necesidades Entidad | 10d | 137 |
| 147 | 2.1.5.3 | **Cierre de la ETAPA 5** | 0.29d |  |
| 148 | 2.1.5.3.1 | Reunión de Cierre de la ETAPA 5 | 2h | 144 |
| 149 | 2.1.5.4 | HITO: FIN DE LA ETAPA 5 | 0d | 148 |
| 150 | 2.1.6 | **ETAPA 6: Estabilización, Apoyo Emisión 2019 y Desarrollo de funcionalidades no establecidas en el Alcance Contractual** | 57.29d |  |
| 151 | 2.1.6.1 | Depuración de Errores de Calidad de Información fuente migrada (Base Oracle) | 30d | 139 |
| 152 | 2.1.6.2 | Soporte y Mantenimiento de Módulos de la Fase 1 | 30d | 139 |
| 153 | 2.1.6.3 | Adaptaciones a Software para incluir Nuevas funcionalidades no contempladas en alcance proyecto | 30d | 139 |
| 154 | 2.1.6.4 | Implementación de Licencia temporal de Modulo de Catastro Urbano SIIM | 20d |  |
| 155 | 2.1.6.5 | Migración de información de Emisión de Impuestos de Catastro Urbano 2019 | 20d |  |
| 156 | 2.1.6.6 | Creación de interfaces mediante ETLs para integración entre Sistema Oracle y SIIM para la recaudación de Impuestos 2019 de Catastro Urbano | 20d |  |
| 157 | 2.1.6.7 | Soporte en Recaudación de Impuestos de Catastro urbano y mejoras 2019 | 25d | 156 |

| ID | WBS | Task | Duration | Predecessors |
| --- | --- | --- | --- | --- |
| 158 | 2.1.6.8 | **Cierre de la FASE 1** | 0.29d |  |
| 159 | 2.1.6.8.1 | Reunión de Cierre de la FASE 1 | 2h | 157 |
| 160 | 2.1.6.8.2 | HITO: FIN DE LA FASE 1 | 0d | 159 |
| 161 | 2.2 | **FASE 2: Implementación de Módulos de Planificación de Recursos Institucionales - PRI** | 88.29d |  |
| 162 | 2.2.1 | **ETAPA 1: Instalación del SIIM - Módulos PRI** | 4.14d |  |
| 163 | 2.2.1.1 | **Entrega e Instalación del Software** | 3.14d |  |
| 164 | 2.2.1.1.1 | **Instalar SIIM en Servidor** | 2.86d |  |
| 165 | 2.2.1.1.1.1 | **Instalar Módulos PRI** | 2.86d | 150 |
| 166 | 2.2.1.1.1.1.1 | 2.1 Administración Técnica | 2h |  |
| 167 | 2.2.1.1.1.1.2 | 2.2 Salud Ocupacional y Riesgos | 2h | 166 |
| 168 | 2.2.1.1.1.1.3 | 3.2 Adquisiciones | 2h | 167 |
| 169 | 2.2.1.1.1.1.4 | 6.1 Administración de Bienes | 2h | 168 |
| 170 | 2.2.1.1.1.1.5 | 8.1 Contabilidad | 2h | 169 |
| 171 | 2.2.1.1.1.1.6 | 8.2 Presupuestos | 2h | 170 |
| 172 | 2.2.1.1.1.1.7 | 13 CRM para Urbanizaciones | 2h | 171 |
| 173 | 2.2.1.1.1.1.8 | 14 Dirección de Planificación Institucional (Incluye control de proyectos de Obras Públicas | 2h | 172 |
| 174 | 2.2.1.1.1.1.9 | 15.6 Servicios Corporativos | 2h | 173 |
| 175 | 2.2.1.1.1.1.10 | 15.8 BI Planificación Institucional | 2h | 174 |
| 176 | 2.2.1.1.2 | Entrega de Software | 2h | 164 |
| 177 | 2.2.1.2 | Revisar la ETAPA del Proyecto | 1d | 163 |
| 178 | 2.2.1.3 | HITO: FINALIZACION ETAPA 1 | 0d | 177 |
| 179 | 2.2.2 | **ETAPA 2: Levantamiento de Características Institucionales - Módulos PRI** | 8.57d | 162 |
| 180 | 2.2.2.1 | **Actividades de Gestión del Proyecto** | 0.57d |  |
| 181 | 2.2.2.1.1 | Revisión del Plan del Proyecto | 2h |  |
| 182 | 2.2.2.1.2 | Programar talleres de requerimientos de Entidad | 2h | 181 |

| ID | WBS | Task | Duration | Predecessors |
| --- | --- | --- | --- | --- |
| 183 | 2.2.2.2 | **Sesiones de Requerimientos del Entidad** | 6d | 180 |
| 184 | 2.2.2.2.1 | Conducir Sesiones de Requerimientos | 5d |  |
| 185 | 2.2.2.2.2 | Crear Documento de Características del Entidad | 1d | 184 |
| 186 | 2.2.2.3 | **Revisar el Documento de Características del Entidad** | 1d | 183 |
| 187 | 2.2.2.3.1 | Revisar el Documento de Características del Entidad | 4h |  |
| 188 | 2.2.2.3.2 | Revisar el Plan del Proyecto | 3h | 187 |
| 189 | 2.2.2.4 | Revisar la ETAPA del Proyecto | 1d | 186 |
| 190 | 2.2.2.5 | HITO: FINALIZACION ETAPA 2 | 0d | 189 |
| 191 | 2.2.3 | **ETAPA 3: Migración de Datos, Configuración y Pruebas de Operación de Módulos - Módulos PRI** | 33.71d | 179 |
| 192 | 2.2.3.1 | **Gestión General del Proyecto** | 1.57d |  |
| 193 | 2.2.3.1.1 | Planificar cambio Organizacional | 3h |  |
| 194 | 2.2.3.1.2 | Planificar Entrenamiento a Usuarios Finales | 4h | 193 |
| 195 | 2.2.3.1.3 | Definir y Preparar la Migración de Datos | 4h | 194 |
| 196 | 2.2.3.2 | **Configuración del Sistema en Producción** | 19.57d | 192 |
| 197 | 2.2.3.2.1 | Instalar el SIIM en Producción | 4h |  |
| 198 | 2.2.3.2.2 | Configurar Inicialización del Sistema | 1d | 197 |
| 199 | 2.2.3.2.3 | Realizar la Migración de Datos | 13d | 198 |
| 200 | 2.2.3.2.4 | Desarrollar Adaptaciones al Software | 2d | 199 |
| 201 | 2.2.3.2.5 | Configuración del Sistema en base al Documento de Características del Entidad | 1d | 200 |
| 202 | 2.2.3.2.6 | Configurar Interfaces | 1d | 201 |
| 203 | 2.2.3.2.7 | Configurar Usuarios y Autorizaciones | 1d | 202 |
| 204 | 2.2.3.3 | **Gestión del Cambio Organizacional** | 0.29d | 196 |
| 205 | 2.2.3.3.1 | Conducir la comunicación de la Gestión de Cambios (si es aplicable) | 2h |  |
| 206 | 2.2.3.4 | **Pruebas de validación del Sistema** | 4.57d | 204 |
| 207 | 2.2.3.4.1 | Mantener la Lista Maestra de Procesos de Entidad | 4h |  |

| ID | WBS | Task | Duration | Predecessors |
| --- | --- | --- | --- | --- |
| 208 | 2.2.3.4.2 | **Conducir Talleres de Validación** | 4d | 207 |
| 209 | 2.2.3.4.2.1 | 2.1 Administración Técnica | 4h |  |
| 210 | 2.2.3.4.2.2 | 2.2 Salud Ocupacional y Riesgos | 2h | 209 |
| 211 | 2.2.3.4.2.3 | 3.2 Adquisiciones | 4h | 210 |
| 212 | 2.2.3.4.2.4 | 6.1 Administración de Bienes | 2h | 211 |
| 213 | 2.2.3.4.2.5 | 8.1 Contabilidad | 4h | 212 |
| 214 | 2.2.3.4.2.6 | 8.2 Presupuestos | 4h | 213 |
| 215 | 2.2.3.4.2.7 | 13 CRM para Urbanizaciones | 2h | 214 |
| 216 | 2.2.3.4.2.8 | 14 Dirección de Planificación Institucional (Incluye control de proyectos de Obras Públicas) | 2h | 215 |
| 217 | 2.2.3.4.2.9 | 15.6 BI Servicios Corporativos | 2h | 216 |
| 218 | 2.2.3.4.2.10 | 15.8 BI Planificación Institucional | 2h | 217 |
| 219 | 2.2.3.5 | **Pruebas de aceptacion del Sistema** | 5.43d | 206 |
| 220 | 2.2.3.5.1 | Definir casos de prueba y alcance | 3h |  |
| 221 | 2.2.3.5.2 | Preparar ambiente de pruebas | 1d | 220 |
| 222 | 2.2.3.5.3 | **Ejecutar el plan de pruebas** | 4d | 221 |
| 223 | 2.2.3.5.3.1 | 2.1 Administración Técnica | 4h |  |
| 224 | 2.2.3.5.3.2 | 2.2 Salud Ocupacional y Riesgos | 2h | 223 |
| 225 | 2.2.3.5.3.3 | 3.2 Adquisiciones | 4h | 224 |
| 226 | 2.2.3.5.3.4 | 6.1 Administración de Bienes | 2h | 225 |
| 227 | 2.2.3.5.3.5 | 8.1 Contabilidad | 4h | 226 |
| 228 | 2.2.3.5.3.6 | 8.2 Presupuestos | 4h | 227 |
| 229 | 2.2.3.5.3.7 | 13 CRM para Urbanizaciones | 2h | 228 |
| 230 | 2.2.3.5.3.8 | 14 Dirección de Planificación Institucional (Incluye control de proyectos de Obras Públicas) | 2h | 229 |
| 231 | 2.2.3.5.3.9 | 15.6 BI Servicios Corporativos | 2h | 230 |
| 232 | 2.2.3.5.3.10 | 15.8 BI Planificación Institucional | 2h | 231 |
| 233 | 2.2.3.5.4 | Revisar los resultados de las pruebas y necesidades de cambios | 1d |  |

| ID | WBS | Task | Duration | Predecessors |
| --- | --- | --- | --- | --- |
| 234 | 2.2.3.6 | **Planificar Salida a Producción y Soporte** | 1.29d | 219 |
| 235 | 2.2.3.6.1 | Definir Plan de Salida a Producción | 3h |  |
| 236 | 2.2.3.6.2 | Planificar Estrategia de Soporte | 3h | 235 |
| 237 | 2.2.3.6.3 | Planificar Administración del Sistema | 3h | 236 |
| 238 | 2.2.3.7 | Revisar la ETAPA del Proyecto | 1d | 234 |
| 239 | 2.2.3.8 | HITO: FINALIZACION ETAPA 3 | 0d | 238 |
| 240 | 2.2.4 | **ETAPA 4: Preparación Final previo Despliegue en Producción - Módulos PRI** | 11.43d | 191 |
| 241 | 2.2.4.1 | **Gestión General del Proyecto** | 1.14d |  |
| 242 | 2.2.4.1.1 | Confirmar el Plan de Entrenamiento | 4h |  |
| 243 | 2.2.4.1.2 | Finalizar plan de Salida a Producción | 4h | 242 |
| 244 | 2.2.4.2 | **Entrenamiento** | 6d | 241 |
| 245 | 2.2.4.2.1 | **Entrenamiento de Usuarios Funcionales y Certificación de Procesos** | 4d |  |
| 246 | 2.2.4.2.1.1 | 2.1 Administración Técnica | 4h |  |
| 247 | 2.2.4.2.1.2 | 2.2 Salud Ocupacional y Riesgos | 2h | 246 |
| 248 | 2.2.4.2.1.3 | 3.2 Adquisiciones | 4h | 247 |
| 249 | 2.2.4.2.1.4 | 6.1 Administración de Bienes | 2h | 248 |
| 250 | 2.2.4.2.1.5 | 8.1 Contabilidad | 4h | 249 |
| 251 | 2.2.4.2.1.6 | 8.2 Presupuestos | 4h | 250 |
| 252 | 2.2.4.2.1.7 | 13 CRM para Urbanizaciones | 2h | 251 |
| 253 | 2.2.4.2.1.8 | 14 Dirección de Planificación Institucional (Incluye control de proyectos de Obras Públicas) | 2h | 252 |
| 254 | 2.2.4.2.1.9 | 15.6 BI Servicios Corporativos | 2h | 253 |
| 255 | 2.2.4.2.1.10 | 15.8 BI Planificación Institucional | 2h | 254 |
| 256 | 2.2.4.2.2 | Entrenamiento de Usuario Técnicos | 6d |  |
| 257 | 2.2.4.3 | **Preparación del Sistema** | 1.43d | 244 |
| 258 | 2.2.4.3.1 | Completar la Administración del Sistema | 5h |  |
| 259 | 2.2.4.3.2 | Comprobación de la Puesta a Producción | 5h | 258 |

| ID | WBS | Task | Duration | Predecessors |
| --- | --- | --- | --- | --- |
| 260 | 2.2.4.4 | **Transición** | 2.57d | 257 |
| 261 | 2.2.4.4.1 | Finalizar Procesamiento de Sistemas Legados | 4h |  |
| 262 | 2.2.4.4.2 | Realizar la Salida a Producción - Carga Inicial y Configuración Inicial | 2d | 261 |
| 263 | 2.2.4.5 | Revisar la ETAPA del Proyecto | 2h | 260 |
| 264 | 2.2.4.6 | HITO: FINALIZACION ETAPA 4 | 0d | 263 |
| 265 | 2.2.5 | **ETAPA 5: Despliegue en Producción y Soporte Técnico - Módulos PRI** | 30.43d | 240 |
| 266 | 2.2.5.1 | **Soporte en Producción** | 15d |  |
| 267 | 2.2.5.1.1 | Soporte durante la Salida a Producción | 15d |  |
| 268 | 2.2.5.1.2 | Resolver incidentes críticos | 15d | 263 |
| 269 | 2.2.5.1.3 | Entregar el soporte y Administración al cliente | 2d | 263 |
| 270 | 2.2.5.2 | **Mejora Continua** | 15d | 266 |
| 271 | 2.2.5.2.1 | Monitoreo del Sistema y Acompañamiento ETAPA2 | 15d | 263 |
| 272 | 2.2.5.2.2 | Ajustes y Configuraciones finales al Software acorde a necesidades Entidad | 15d | 263 |
| 273 | 2.2.5.3 | **Cierre de la FASE 2** | 0.43d | 270 |
| 274 | 2.2.5.3.1 | Reunión de Cierre de la FASE 2 | 3h |  |
| 275 | 2.2.5.4 | HITO: FIN DE LA FASE 2 | 0d | 273 |
| 276 | 2.3 | **FASE 3: Implementación de Módulos de Planificación de Recursos Institucionales - PRI** | 76.86d |  |
| 277 | 2.3.1 | **ETAPA 1: Instalación del SIIM - Módulos PRI** | 4.29d |  |
| 278 | 2.3.1.1 | **Entrega e Instalación del Software** | 3.29d |  |
| 279 | 2.3.1.1.1 | **Instalar SIIM en Servidor** | 3d |  |
| 280 | 2.3.1.1.1.1 | Instalar Módulos PRI | 3d | 264 |
| 281 | 2.3.1.1.2 | Entrega de Software | 2h | 279 |
| 282 | 2.3.1.2 | Revisar la ETAPA del Proyecto | 1d | 278 |
| 283 | 2.3.1.3 | HITO: FINALIZACION ETAPA 1 | 0d | 282 |

| ID | WBS | Task | Duration | Predecessors |
| --- | --- | --- | --- | --- |
| 284 | 2.3.2 | **ETAPA 2: Levantamiento de Características Institucionales - Módulos PRI** | 8.57d | 277 |
| 285 | 2.3.2.1 | **Actividades de Gestión del Proyecto** | 0.57d |  |
| 286 | 2.3.2.1.1 | Revisión del Plan del Proyecto | 2h |  |
| 287 | 2.3.2.1.2 | Programar talleres de requerimientos de Entidad | 2h | 286 |
| 288 | 2.3.2.2 | **Sesiones de Requerimientos del Entidad** | 6d | 285 |
| 289 | 2.3.2.2.1 | Conducir Sesiones de Requerimientos | 3d |  |
| 290 | 2.3.2.2.2 | Crear Documento de Características del Entidad | 3d | 289 |
| 291 | 2.3.2.3 | **Revisar el Documento de Características del Entidad** | 1d | 288 |
| 292 | 2.3.2.3.1 | Revisar el Documento de Características del Entidad | 4h |  |
| 293 | 2.3.2.3.2 | Revisar el Plan del Proyecto | 3h | 292 |
| 294 | 2.3.2.4 | Revisar la ETAPA del Proyecto | 1d | 291 |
| 295 | 2.3.2.5 | HITO: FINALIZACION ETAPA 2 | 0d | 294 |
| 296 | 2.3.3 | **ETAPA 3: Migración de Datos, Configuración y Pruebas de Operación de Módulos - Módulos PRI** | 33.43d | 284 |
| 297 | 2.3.3.1 | **Gestión General del Proyecto** | 1.57d |  |
| 298 | 2.3.3.1.1 | Planificar cambio Organizacional | 3h |  |
| 299 | 2.3.3.1.2 | Planificar Entrenamiento a Usuarios Finales | 4h | 298 |
| 300 | 2.3.3.1.3 | Definir y Preparar la Migración de Datos | 4h | 299 |
| 301 | 2.3.3.2 | **Configuración del Sistema en Producción** | 20.57d | 297 |
| 302 | 2.3.3.2.1 | Instalar el SIIM en Producción | 4h |  |
| 303 | 2.3.3.2.2 | Configurar Inicialización del Sistema | 1d | 302 |
| 304 | 2.3.3.2.3 | Realizar la Migración de Datos | 10d | 303 |
| 305 | 2.3.3.2.4 | Desarrollar Adaptaciones al Software | 5d | 304 |
| 306 | 2.3.3.2.5 | Configuración del Sistema en base al Documento de Características del Entidad | 2d | 305 |
| 307 | 2.3.3.2.6 | Configurar Interfaces | 1d | 306 |
| 308 | 2.3.3.2.7 | Configurar Usuarios y Autorizaciones | 1d | 307 |

| ID | WBS | Task | Duration | Predecessors |
| --- | --- | --- | --- | --- |
| 309 | 2.3.3.3 | **Gestión del Cambio Organizacional** | 2d | 301 |
| 310 | 2.3.3.3.1 | Conducir la comunicación de la Gestión de Cambios (si es aplicable) | 2d |  |
| 311 | 2.3.3.4 | **Pruebas de validación/aceptación del Sistema** | 2.57d | 309 |
| 312 | 2.3.3.4.1 | Mantener la Lista Maestra de Procesos de Entidad | 4h |  |
| 313 | 2.3.3.4.2 | **Conducir Talleres de Validación** | 2d | 312 |
| 314 | 2.3.3.4.2.1 | 3.1 Compras Públicas | 2h |  |
| 315 | 2.3.3.4.2.2 | 6.2 Servicios Generales | 2h | 314 |
| 316 | 2.3.3.4.2.3 | 8.5 Gestión Jurídica - Financiera | 2h | 315 |
| 317 | 2.3.3.4.2.4 | 15.2 BI Financiero | 2h | 316 |
| 318 | 2.3.3.4.2.5 | 15.3 BI Administración del Talento Humano | 2h | 317 |
| 319 | 2.3.3.4.2.6 | 15.4 BI Compras Públicas | 2h | 318 |
| 320 | 2.3.3.4.2.7 | 15.9 Tablero de Control | 2h | 319 |
| 321 | 2.3.3.5 | **Pruebas de aceptacion del Sistema** | 4.43d | 311 |
| 322 | 2.3.3.5.1 | Definir casos de prueba y alcance | 3h |  |
| 323 | 2.3.3.5.2 | Preparar ambiente de pruebas | 1d | 322 |
| 324 | 2.3.3.5.3 | **Ejecutar el plan de pruebas** | 2d | 323 |
| 325 | 2.3.3.5.3.1 | 3.1 Compras Públicas | 2h |  |
| 326 | 2.3.3.5.3.2 | 6.2 Servicios Generales | 2h | 325 |
| 327 | 2.3.3.5.3.3 | 8.5 Gestión Jurídica - Financiera | 2h | 326 |
| 328 | 2.3.3.5.3.4 | 15.2 BI Financiero | 2h | 327 |
| 329 | 2.3.3.5.3.5 | 15.3 BI Administración del Talento Humano | 2h | 328 |
| 330 | 2.3.3.5.3.6 | 15.4 BI Compras Públicas | 2h | 329 |
| 331 | 2.3.3.5.3.7 | 15.9 Tablero de Control | 2h | 330 |
| 332 | 2.3.3.5.4 | Revisar los resultados de las pruebas y necesidades de cambios | 1d | 331, 320 |

| ID | WBS | Task | Duration | Predecessors |
| --- | --- | --- | --- | --- |
| 333 | 2.3.3.6 | **Planificar Salida a Producción y Soporte** | 1.29d | 321 |
| 334 | 2.3.3.6.1 | Definir Plan de Salida a Producción | 3h |  |
| 335 | 2.3.3.6.2 | Planificar Estrategia de Soporte | 3h | 334 |
| 336 | 2.3.3.6.3 | Planificar Administración del Sistema | 3h | 335 |
| 337 | 2.3.3.7 | Revisar la ETAPA del Proyecto | 1d | 333 |
| 338 | 2.3.3.8 | HITO: FINALIZACION ETAPA 3 | 0d | 337 |
| 339 | 2.3.4 | **ETAPA 4: Preparación Final previo Despliegue en Producción - Módulos PRI** | 12.43d | 296 |
| 340 | 2.3.4.1 | **Gestión General del Proyecto** | 1.14d |  |
| 341 | 2.3.4.1.1 | Confirmar el Plan de Entrenamiento | 4h |  |
| 342 | 2.3.4.1.2 | Finalizar plan de Salida a Producción | 4h | 341 |
| 343 | 2.3.4.2 | **Entrenamiento** | 7d | 340 |
| 344 | 2.3.4.2.1 | **Entrenamiento de Usuarios Funcionales y Certificación de Procesos** | 4d |  |
| 345 | 2.3.4.2.1.1 | 3.1 Compras Públicas | 4h |  |
| 346 | 2.3.4.2.1.2 | 6.2 Servicios Generales | 4h | 345 |
| 347 | 2.3.4.2.1.3 | 8.5 Gestión Jurídica - Financiera | 4h | 346 |
| 348 | 2.3.4.2.1.4 | 15.2 BI Financiero | 4h | 347 |
| 349 | 2.3.4.2.1.5 | 15.3 BI Administración del Talento Humano | 4h | 348 |
| 350 | 2.3.4.2.1.6 | 15.4 BI Compras Públicas | 4h | 349 |
| 351 | 2.3.4.2.1.7 | 15.9 Tablero de Control | 4h | 350 |
| 352 | 2.3.4.2.2 | Entrenamiento de Usuario Técnicos | 3d | 351 |
| 353 | 2.3.4.3 | **Preparación del Sistema** | 1.43d | 343 |
| 354 | 2.3.4.3.1 | Completar la Administración del Sistema | 5h |  |
| 355 | 2.3.4.3.2 | Comprobación de la Puesta a Producción | 5h | 354 |
| 356 | 2.3.4.4 | **Transición** | 2.57d | 353 |
| 357 | 2.3.4.4.1 | Finalizar Procesamiento de Sistemas Legados | 4h |  |
| 358 | 2.3.4.4.2 | Realizar la Salida a Producción - Carga Inicial y Configuración Inicial | 2d | 357 |
| 359 | 2.3.4.5 | Revisar la ETAPA del Proyecto | 2h | 356 |
| 360 | 2.3.4.6 | HITO: FINALIZACION ETAPA 4 | 0d | 359 |

| ID | WBS | Task | Duration | Predecessors |
| --- | --- | --- | --- | --- |
| 361 | 2.3.5 | **ETAPA 5: Despliegue en Producción y Soporte Técnico - Módulos PRI** | 15.43d | 339 |
| 362 | 2.3.5.1 | **Soporte en Producción** | 10d |  |
| 363 | 2.3.5.1.1 | Soporte durante la Salida a Producción | 5d |  |
| 364 | 2.3.5.1.2 | Resolver incidentes críticos | 3d | 363 |
| 365 | 2.3.5.1.3 | Entregar el soporte y Administración al cliente | 2d | 364 |
| 366 | 2.3.5.2 | **Mejora Continua** | 15d | 339 |
| 367 | 2.3.5.2.1 | Monitoreo del Sistema y Acompañamiento | 15d |  |
| 368 | 2.3.5.2.2 | Ajustes y Configuraciones finales al Software acorde a necesidades Entidad | 15d | 339 |
| 369 | 2.3.5.3 | **Cierre de la FASE 3 y Proyecto** | 0.43d | 366 |
| 370 | 2.3.5.3.1 | Reunión de Cierre de la FASE 3 y Proyecto | 3h |  |
| 371 | 2.3.5.4 | HITO: FIN DE LA FASE 3 y Proyecto | 0d | 366 |
