# Proyecto1.xml

Schedule from MS Project XML, 2018-07-16 to 2019-08-26, A marks actual dates.

## Calendars

- Standard: Mon-Fri 08:00-12:00, 13:00-17:00; Sat-Sun off.

## Resources

| Resource |
| --- |
| Administrador de Contrato - Cliente |
| Líder Técnico - Cliente |
| Líder Funcional - Usuario Experto - Cliente |
| Funcionarios Técnicos - Cliente |
| Usuarios Finales - Cliente |
| Desarrollador PlanERP |
| Gerente de Proyecto PlanERP |
| Líder del Proyecto/Desarrollo PlanERP |
| Analista Procesos PlanERP |
| Analista de Calidad PlanERP |
| Especialista Base de Datos PlanERP |
| Consultor Especialista en Procesos de GADs PlanERP |

## Schedule

| ID | WBS | Task | Duration | Start | Finish | Predecessors | Remaining | Actual start | Actual finish | Resources | Porcentage Avance |
| --- | --- | --- | --- | --- | --- | --- | --- | --- | --- | --- | --- |
| 1 | 0 | 20190122- Plan del Proyecto de Implementacion del SIIM Daule | 294.29d? | 2018-07-16 A | 2019-08-26 |  |  |  |  |  |  |
| 2 | 2 | **Programa de Implementación SIIM** | 294.29d |  |  |  | 294.29d | 2018-07-16 |  |  |  |
| 3 | 2.1 | **FASE 1: Implementación de Módulos de Servicio al Cliente (SC) y Atención al Ciudadano (AC)** | 159.57d |  |  |  | 159.57d | 2018-07-16 |  |  |  |
| 4 | 2.1.1 | **ETAPA 1: Preparación del Proyecto e Instalación del SIIM - Módulos SC y AC** | 9d |  |  |  | 9d | 2018-07-16 |  |  |  |
| 5 | 2.1.1.1 | **Actividades de Gestión del Proyecto** | 2.29d |  |  |  | 2.29d | 2018-07-16 |  |  |  |
| 6 | 2.1.1.1.1 | Revisión de Información de Contrato y Anexos | 6h |  |  |  |  | 2018-07-16 | 2018-07-16 | Gerente de Proyecto PlanERP; Líder del Proyecto/Desarrollo PlanERP |  |
| 7 | 2.1.1.1.2 | Definir la Organización del Proyecto | 4h |  |  | 6FS+6h |  | 2018-07-16 | 2018-07-17 | Gerente de Proyecto PlanERP; Líder del Proyecto/Desarrollo PlanERP |  |
| 8 | 2.1.1.1.3 | Kick-off Interno del Proyecto | 6h |  |  | 7FS+4h |  | 2018-07-17 | 2018-07-18 | Gerente de Proyecto PlanERP; Líder del Proyecto/Desarrollo PlanERP |  |
| 9 | 2.1.1.2 | **Preparación del kick-off del Proyecto** | 1.14d |  |  |  | 1.14d | 2018-07-18 |  |  |  |
| 10 | 2.1.1.2.1 | Comunicación con el Cliente | 4h |  |  | 8FS+6h |  | 2018-07-18 | 2018-07-18 | Administrador de Contrato - Cliente; Gerente de Proyecto PlanERP |  |
| 11 | 2.1.1.2.2 | Crear la presentación del kick-off | 4h |  |  | 10FS+4h |  | 2018-07-18 | 2018-07-19 | Gerente de Proyecto PlanERP; Líder del Proyecto/Desarrollo PlanERP |  |
| 12 | 2.1.1.3 | **Reunión de Kick-off** | 0.29d |  |  |  | 0.29d | 2018-07-19 |  |  |  |
| 13 | 2.1.1.3.1 | Realizar la reunión de kick-off | 2h |  |  | 11FS+4h |  | 2018-07-19 | 2018-07-19 | Administrador de Contrato - Cliente; Líder Funcional - Usuario Experto - Cliente; Gerente de Proyecto PlanERP; Líder Técnico - Cliente; Líder del Proyecto/Desarrollo PlanERP |  |
| 14 | 2.1.1.4 | **Entrega e Instalación del Software** | 4.29d |  |  |  | 4.29d | 2018-07-19 |  |  |  |
| 15 | 2.1.1.4.1 | **Instalar SIIM en Servidor** | 4d |  |  | 12FS+0.29d | 4d | 2018-07-19 |  | Funcionarios Técnicos - Cliente |  |
| 16 | 2.1.1.4.1.1 | 1 Dirección de Desarrollo Territorial (No incluye Catastro) | 2h |  |  |  |  | 2018-07-19 | 2018-07-19 |  |  |
| 17 | 2.1.1.4.1.2 | 4 Dirección de Justicia y Vigilancia | 2h |  |  | 16FS+2h |  | 2018-07-19 | 2018-07-19 |  |  |
| 18 | 2.1.1.4.1.3 | 5 Dirección de Desarrollo Humano y Social | 2h |  |  | 17FS+2h |  | 2018-07-19 | 2018-07-20 |  |  |
| 19 | 2.1.1.4.1.4 | 8.3 Rentas | 2h |  |  | 18FS+2h |  | 2018-07-20 | 2018-07-20 |  |  |
| 20 | 2.1.1.4.1.5 | 8.4 Tesorería | 2h |  |  | 19FS+2h |  | 2018-07-20 | 2018-07-20 |  |  |
| 21 | 2.1.1.4.1.6 | 9.1 Mercados | 1h |  |  | 20FS+2h |  | 2018-07-20 | 2018-07-20 |  |  |
| 22 | 2.1.1.4.1.7 | 9.2 Cementerio | 1h |  |  | 21FS+1h |  | 2018-07-20 | 2018-07-20 |  |  |
| 23 | 2.1.1.4.1.8 | 9.3 Camal | 1h |  |  | 22FS+1h |  | 2018-07-20 | 2018-07-20 |  |  |
| 24 | 2.1.1.4.1.9 | 10 Registro de la Propiedad y Mercantil | 2h |  |  | 23FS+1h |  | 2018-07-20 | 2018-07-23 |  |  |
| 25 | 2.1.1.4.1.10 | 11 Administración de bomberos | 1h |  |  | 24FS+2h |  | 2018-07-23 | 2018-07-23 |  |  |
| 26 | 2.1.1.4.1.11 | 12 CRM para ciudadanos. Ventanilla Única | 2h |  |  | 25FS+1h |  | 2018-07-23 | 2018-07-23 |  |  |
| 27 | 2.1.1.4.1.12 | 15.1 BI Desarrollo Territorial | 2h |  |  | 26FS+2h |  | 2018-07-23 | 2018-07-23 |  |  |
| 28 | 2.1.1.4.1.13 | 15.5 BI Obras Públicas Municipales | 2h |  |  | 27FS+2h |  | 2018-07-23 | 2018-07-24 |  |  |
| 29 | 2.1.1.4.1.14 | 15.7 BI Registro de la Propiedad y Mercantil | 2h |  |  | 28FS+2h |  | 2018-07-24 | 2018-07-24 |  |  |
| 30 | 2.1.1.4.1.15 | 16.1 Consultas Portal Web | 2h |  |  | 29FS+2h |  | 2018-07-24 | 2018-07-24 |  |  |
| 31 | 2.1.1.4.1.16 | 16.2 Aplicación para móviles (APP) | 2h |  |  | 30FS+2h |  | 2018-07-24 | 2018-07-24 |  |  |
| 32 | 2.1.1.4.2 | Entrega de Software | 2h |  |  | 15FS+4d |  | 2018-07-24 | 2018-07-25 | Gerente de Proyecto PlanERP; Administrador de Contrato - Cliente |  |
| 33 | 2.1.1.5 | Revisar la ETAPA del Proyecto | 1d |  |  | 14FS+4.29d |  | 2018-07-25 | 2018-07-25 | Administrador de Contrato - Cliente; Gerente de Proyecto PlanERP; Analista de Calidad PlanERP |  |
| 34 | 2.1.1.6 | HITO: FINALIZACION ETAPA 1 | 0d |  |  | 33FS+1d |  | 2018-07-25 | 2018-07-25 |  | 5% |

| ID | WBS | Task | Duration | Predecessors | Remaining | Actual start | Actual finish | Resources | Porcentage Avance |
| --- | --- | --- | --- | --- | --- | --- | --- | --- | --- |
| 35 | 2.1.2 | **ETAPA 2: Levantamiento de Características Institucionales - Módulos SC y AC** | 14.71d | 4FS+9d | 14.71d | 2018-07-25 |  |  |  |
| 36 | 2.1.2.1 | **Actividades de Gestión del Proyecto** | 1.14d |  | 1.14d | 2018-07-25 |  |  |  |
| 37 | 2.1.2.1.1 | Revisión del Plan del Proyecto | 4h | 33FS+1d |  | 2018-07-25 | 2018-07-26 | Administrador de Contrato - Cliente; Gerente de Proyecto PlanERP |  |
| 38 | 2.1.2.1.2 | Programar talleres de requerimientos de Entidad | 4h | 37FS+4h |  | 2018-07-26 | 2018-07-26 | Administrador de Contrato - Cliente; Gerente de Proyecto PlanERP |  |
| 39 | 2.1.2.2 | **Sesiones de Requerimientos del Entidad** | 12d |  | 12d | 2018-07-26 |  |  |  |
| 40 | 2.1.2.2.1 | Conducir Sesiones de Requerimientos | 10d | 38FS+4h |  | 2018-07-26 | 2018-08-08 | Funcionarios Técnicos - Cliente; Analista Procesos PlanERP; Consultor Especialista en Procesos de GADs PlanERP |  |
| 41 | 2.1.2.2.2 | Crear Documento de Características del Entidad | 2d | 40FS+10d |  | 2018-08-08 | 2018-08-10 | Analista Procesos PlanERP; Funcionarios Técnicos - Cliente; Consultor Especialista en Procesos de GADs PlanERP |  |
| 42 | 2.1.2.3 | **Revisar el Documento de Características del Entidad** | 0.57d |  | 0.57d | 2018-08-10 |  |  |  |
| 43 | 2.1.2.3.1 | Revisar el Documento de Características del Entidad | 2h | 41FS+2d |  | 2018-08-10 | 2018-08-10 | Administrador de Contrato - Cliente; Gerente de Proyecto PlanERP; Analista de Calidad PlanERP; Consultor Especialista en Procesos de GADs PlanERP; Analista Procesos PlanERP |  |
| 44 | 2.1.2.3.2 | Revisar el Plan del Proyecto | 2h | 43FS+2h |  | 2018-08-10 | 2018-08-10 | Administrador de Contrato - Cliente; Gerente de Proyecto PlanERP |  |
| 45 | 2.1.2.4 | Revisar la ETAPA del Proyecto | 1d | 42FS+0.57d |  | 2018-08-10 | 2018-08-13 | Administrador de Contrato - Cliente; Gerente de Proyecto PlanERP; Líder del Proyecto/Desarrollo PlanERP; Analista de Calidad PlanERP |  |
| 46 | 2.1.2.5 | HITO: FINALIZACION ETAPA 2 | 0d | 45FS+1d |  | 2018-08-13 | 2018-08-13 |  | 10% |
| 47 | 2.1.3 | **ETAPA 3: Migración de Datos, Configuración y Pruebas de Operación - Módulos SC y AC** | 56.57d | 35FS+14.71d | 56.57d | 2018-08-13 |  |  |  |
| 48 | 2.1.3.1 | **Gestión General del Proyecto** | 0.57d |  | 0.57d | 2018-08-13 |  |  |  |
| 49 | 2.1.3.1.1 | Planificar cambio Organizacional | 2h | 45FS+1d |  | 2018-08-13 | 2018-08-14 | Administrador de Contrato - Cliente; Gerente de Proyecto PlanERP; Líder del Proyecto/Desarrollo PlanERP |  |
| 50 | 2.1.3.1.2 | Planificar Entrenamiento a Usuarios Finales | 2h | 49FS+2h |  | 2018-08-14 | 2018-08-14 | Administrador de Contrato - Cliente; Gerente de Proyecto PlanERP; Líder del Proyecto/Desarrollo PlanERP |  |
| 51 | 2.1.3.1.3 | Definir y Preparar la Migración de Datos | 2h | 49FS+2h |  | 2018-08-14 | 2018-08-14 | Funcionarios Técnicos - Cliente; Líder del Proyecto/Desarrollo PlanERP; Especialista Base de Datos PlanERP |  |
| 52 | 2.1.3.2 | **Configuración del Sistema en Producción** | 56d |  | 56d | 2018-08-14 |  |  |  |
| 53 | 2.1.3.2.1 | Instalar el SIIM en Producción | 1d | 51FS+2h |  | 2018-08-14 | 2018-08-15 | Funcionarios Técnicos - Cliente; Analista Procesos PlanERP; Desarrollador PlanERP; Líder del Proyecto/Desarrollo PlanERP; Especialista Base de Datos PlanERP |  |
| 54 | 2.1.3.2.2 | Configurar Inicialización del Sistema | 1d | 53FS+1d |  | 2018-08-15 | 2018-08-16 | Funcionarios Técnicos - Cliente; Analista Procesos PlanERP; Desarrollador PlanERP; Líder del Proyecto/Desarrollo PlanERP; Especialista Base de Datos PlanERP |  |
| 55 | 2.1.3.2.3 | Realizar la Migración de Datos | 54d | 54FS+1d |  | 2018-08-16 | 2018-10-22 | Funcionarios Técnicos - Cliente; Analista Procesos PlanERP; Desarrollador PlanERP; Líder del Proyecto/Desarrollo PlanERP; Especialista Base de Datos PlanERP |  |
| 56 | 2.1.3.2.4 | Desarrollar Adaptaciones al Software | 10d | 54FS+1d |  | 2018-08-16 | 2018-08-28 | Funcionarios Técnicos - Cliente; Analista Procesos PlanERP; Desarrollador PlanERP; Líder del Proyecto/Desarrollo PlanERP; Especialista Base de Datos PlanERP |  |
| 57 | 2.1.3.2.5 | Configuración del Sistema en base al Documento de Características del Entidad | 3d | 56FS+10d |  | 2018-08-28 | 2018-08-31 | Funcionarios Técnicos - Cliente; Analista Procesos PlanERP; Desarrollador PlanERP; Líder del Proyecto/Desarrollo PlanERP; Especialista Base de Datos PlanERP |  |
| 58 | 2.1.3.2.6 | Configurar Interfaces | 1d | 57FS+3d |  | 2018-08-31 | 2018-09-03 | Funcionarios Técnicos - Cliente; Analista Procesos PlanERP; Desarrollador PlanERP; Líder del Proyecto/Desarrollo PlanERP; Especialista Base de Datos PlanERP |  |
| 59 | 2.1.3.2.7 | Configurar Usuarios y Autorizaciones | 1d | 58FS+1d |  | 2018-09-03 | 2018-09-04 | Funcionarios Técnicos - Cliente; Analista Procesos PlanERP; Desarrollador PlanERP; Líder del Proyecto/Desarrollo PlanERP; Especialista Base de Datos PlanERP |  |

| ID | WBS | Task | Duration | Predecessors | Remaining | Actual start | Actual finish | Resources |
| --- | --- | --- | --- | --- | --- | --- | --- | --- |
| 60 | 2.1.3.3 | **Gestión del Cambio Organizacional** | 1d |  | 1d | 2018-09-04 |  |  |
| 61 | 2.1.3.3.1 | Conducir la comunicación de la Gestión de Cambios (si es aplicable) | 1d | 59FS+1d |  | 2018-09-04 | 2018-09-05 | Administrador de Contrato - Cliente; Líder Funcional - Usuario Experto - Cliente; Gerente de Proyecto PlanERP; Consultor Especialista en Procesos de GADs PlanERP |
| 62 | 2.1.3.4 | **Pruebas de validación/aceptación del Sistema** | 3.43d |  | 3.43d | 2018-09-05 |  |  |
| 63 | 2.1.3.4.1 | Mantener la Lista Maestra de Procesos de Entidad | 2h | 61FS+1d |  | 2018-09-05 | 2018-09-05 | Líder Funcional - Usuario Experto - Cliente; Gerente de Proyecto PlanERP; Líder del Proyecto/Desarrollo PlanERP; Analista Procesos PlanERP; Consultor Especialista en Procesos de GADs PlanERP |
| 64 | 2.1.3.4.2 | **Conducir Talleres de Validación** | 3.14d | 63FS+2h | 3.14d | 2018-09-05 |  | Líder Funcional - Usuario Experto - Cliente; Analista Procesos PlanERP; Analista de Calidad PlanERP; Consultor Especialista en Procesos de GADs PlanERP |
| 65 | 2.1.3.4.2.1 | 1 Dirección de Desarrollo Territorial (No incluye Catastro) | 2h |  |  | 2018-09-05 | 2018-09-05 |  |
| 66 | 2.1.3.4.2.2 | 4 Dirección de Justicia y Vigilancia | 2h | 65FS+2h |  | 2018-09-05 | 2018-09-05 |  |
| 67 | 2.1.3.4.2.3 | 5 Dirección de Desarrollo Humano y Social | 1h | 66FS+2h |  | 2018-09-05 | 2018-09-05 |  |
| 68 | 2.1.3.4.2.4 | 8.3 Rentas | 2h | 67FS+1h |  | 2018-09-05 | 2018-09-06 |  |
| 69 | 2.1.3.4.2.5 | 8.4 Tesorería | 2h | 68FS+2h |  | 2018-09-06 | 2018-09-06 |  |
| 70 | 2.1.3.4.2.6 | 9.1 Mercados | 1h | 69FS+2h |  | 2018-09-06 | 2018-09-06 |  |
| 71 | 2.1.3.4.2.7 | 9.2 Cementerio | 1h | 70FS+1h |  | 2018-09-06 | 2018-09-06 |  |
| 72 | 2.1.3.4.2.8 | 9.3 Camal | 1h | 71FS+1h |  | 2018-09-06 | 2018-09-06 |  |
| 73 | 2.1.3.4.2.9 | 10 Registro de la Propiedad y Mercantil | 2h | 72FS+1h |  | 2018-09-06 | 2018-09-07 |  |
| 74 | 2.1.3.4.2.10 | 11 Administración de bomberos | 1h | 73FS+2h |  | 2018-09-07 | 2018-09-07 |  |
| 75 | 2.1.3.4.2.11 | 12 CRM para ciudadanos. Ventanilla Única | 2h | 74FS+1h |  | 2018-09-07 | 2018-09-07 |  |
| 76 | 2.1.3.4.2.12 | 15.1 BI Desarrollo Territorial | 1h | 75FS+2h |  | 2018-09-07 | 2018-09-07 |  |
| 77 | 2.1.3.4.2.13 | 15.5 BI Obras Públicas Municipales | 1h | 76FS+1h |  | 2018-09-07 | 2018-09-07 |  |
| 78 | 2.1.3.4.2.14 | 15.7 BI Registro de la Propiedad y Mercantil | 1h | 77FS+1h |  | 2018-09-07 | 2018-09-07 |  |
| 79 | 2.1.3.4.2.15 | 16.1 Consultas Portal Web | 1h | 78FS+1h |  | 2018-09-07 | 2018-09-07 |  |
| 80 | 2.1.3.4.2.16 | 16.2 Aplicación para móviles (APP) | 1h | 79FS+1h |  | 2018-09-07 | 2018-09-10 |  |
| 81 | 2.1.3.5 | **Pruebas de Aceptacion Sistema** | 5.43d |  | 5.43d | 2018-09-10 |  |  |
| 82 | 2.1.3.5.1 | Definir casos de prueba y alcance | 2h | 80FS+1h, 31FS+2h |  | 2018-09-10 | 2018-09-10 | Líder Funcional - Usuario Experto - Cliente; Líder del Proyecto/Desarrollo PlanERP; Analista de Calidad PlanERP; Funcionarios Técnicos - Cliente |
| 83 | 2.1.3.5.2 | Preparar ambiente de pruebas | 1d | 82FS+2h |  | 2018-09-10 | 2018-09-11 | Funcionarios Técnicos - Cliente; Líder Funcional - Usuario Experto - Cliente; Líder del Proyecto/Desarrollo PlanERP; Analista de Calidad PlanERP |

| ID | WBS | Task | Duration | Predecessors | Remaining | Actual start | Actual finish | Resources | Porcentage Avance |
| --- | --- | --- | --- | --- | --- | --- | --- | --- | --- |
| 84 | 2.1.3.5.3 | **Ejecutar el plan de pruebas de Aceptacion del Sistema** | 3.14d | 83FS+1d | 3.14d | 2018-09-11 |  | Líder Funcional - Usuario Experto - Cliente; Líder del Proyecto/Desarrollo PlanERP; Analista de Calidad PlanERP; Funcionarios Técnicos - Cliente; Consultor Especialista en Procesos de GADs PlanERP |  |
| 85 | 2.1.3.5.3.1 | 1 Dirección de Desarrollo Territorial (No incluye Catastro) | 2h |  |  | 2018-09-11 | 2018-09-11 |  |  |
| 86 | 2.1.3.5.3.2 | 4 Dirección de Justicia y Vigilancia | 2h | 85FS+2h |  | 2018-09-11 | 2018-09-11 |  |  |
| 87 | 2.1.3.5.3.3 | 5 Dirección de Desarrollo Humano y Social | 1h | 86FS+2h |  | 2018-09-11 | 2018-09-11 |  |  |
| 88 | 2.1.3.5.3.4 | 8.3 Rentas | 2h | 87FS+1h |  | 2018-09-11 | 2018-09-12 |  |  |
| 89 | 2.1.3.5.3.5 | 8.4 Tesorería | 2h | 88FS+2h |  | 2018-09-12 | 2018-09-12 |  |  |
| 90 | 2.1.3.5.3.6 | 9.1 Mercados | 1h | 89FS+2h |  | 2018-09-12 | 2018-09-12 |  |  |
| 91 | 2.1.3.5.3.7 | 9.2 Cementerio | 1h | 90FS+1h |  | 2018-09-12 | 2018-09-12 |  |  |
| 92 | 2.1.3.5.3.8 | 9.3 Camal | 1h | 91FS+1h |  | 2018-09-12 | 2018-09-12 |  |  |
| 93 | 2.1.3.5.3.9 | 10 Registro de la Propiedad y Mercantil | 2h | 92FS+1h |  | 2018-09-12 | 2018-09-12 |  |  |
| 94 | 2.1.3.5.3.10 | 11 Administración de bomberos | 1h | 93FS+2h |  | 2018-09-12 | 2018-09-13 |  |  |
| 95 | 2.1.3.5.3.11 | 12 CRM para ciudadanos. Ventanilla Única | 2h | 94FS+1h |  | 2018-09-13 | 2018-09-13 |  |  |
| 96 | 2.1.3.5.3.12 | 15.1 BI Desarrollo Territorial | 1h | 95FS+2h |  | 2018-09-13 | 2018-09-13 |  |  |
| 97 | 2.1.3.5.3.13 | 15.5 BI Obras Públicas Municipales | 1h | 96FS+1h |  | 2018-09-13 | 2018-09-13 |  |  |
| 98 | 2.1.3.5.3.14 | 15.7 BI Registro de la Propiedad y Mercantil | 1h | 97FS+1h |  | 2018-09-13 | 2018-09-13 |  |  |
| 99 | 2.1.3.5.3.15 | 16.1 Consultas Portal Web | 1h | 98FS+1h |  | 2018-09-13 | 2018-09-13 |  |  |
| 100 | 2.1.3.5.3.16 | 16.2 Aplicación para móviles (APP) | 1h | 99FS+1h |  | 2018-09-13 | 2018-09-13 |  |  |
| 101 | 2.1.3.5.4 | Revisar los resultados de las pruebas y necesidades de cambios | 1d | 100FS+1h, 80FS+1h, 31FS+2h |  | 2018-09-13 | 2018-09-14 | Administrador de Contrato - Cliente; Gerente de Proyecto PlanERP; Analista de Calidad PlanERP; Consultor Especialista en Procesos de GADs PlanERP |  |
| 102 | 2.1.3.6 | **Planificar Salida a Producción y Soporte** | 0.29d |  | 0.29d | 2018-09-14 |  |  |  |
| 103 | 2.1.3.6.1 | Definir Plan de Salida a Producción | 2h | 101FS+1d |  | 2018-09-14 | 2018-09-17 | Administrador de Contrato - Cliente; Líder Funcional - Usuario Experto - Cliente; Gerente de Proyecto PlanERP; Líder del Proyecto/Desarrollo PlanERP |  |
| 104 | 2.1.3.6.2 | Planificar Estrategia de Soporte | 2h | 101FS+1d |  | 2018-09-14 | 2018-09-17 | Administrador de Contrato - Cliente; Líder Funcional - Usuario Experto - Cliente; Gerente de Proyecto PlanERP; Líder del Proyecto/Desarrollo PlanERP |  |
| 105 | 2.1.3.6.3 | Planificar Administración del Sistema | 2h | 101FS+1d |  | 2018-09-14 | 2018-09-17 | Administrador de Contrato - Cliente; Líder Funcional - Usuario Experto - Cliente; Gerente de Proyecto PlanERP; Líder del Proyecto/Desarrollo PlanERP |  |
| 106 | 2.1.3.7 | Revisar la ETAPA del Proyecto | 1d | 102FS+0.29d |  | 2018-09-17 | 2018-09-17 | Administrador de Contrato - Cliente; Gerente de Proyecto PlanERP; Líder del Proyecto/Desarrollo PlanERP; Analista de Calidad PlanERP |  |
| 107 | 2.1.3.8 | HITO: FINALIZACION ETAPA 3 | 0d | 106FS+1d |  | 2018-09-17 | 2018-09-17 |  | 25% |

| ID | WBS | Task | Duration | Predecessors | Remaining | Actual start | Actual finish | Resources |
| --- | --- | --- | --- | --- | --- | --- | --- | --- |
| 108 | 2.1.4 | **ETAPA 4: Preparación Final previo Despliegue en Producción - Módulos SC y AC** | 19.86d |  | 19.86d | 2018-09-17 |  |  |
| 109 | 2.1.4.1 | **Gestión General del Proyecto** | 0.57d |  | 0.57d | 2018-09-17 |  |  |
| 110 | 2.1.4.1.1 | Confirmar el Plan de Entrenamiento | 2h | 106FS+1d |  | 2018-09-17 | 2018-09-18 | Administrador de Contrato - Cliente; Funcionarios Técnicos - Cliente; Gerente de Proyecto PlanERP; Líder del Proyecto/Desarrollo PlanERP |
| 111 | 2.1.4.1.2 | Finalizar plan de Salida a Producción | 2h | 110FS+2h |  | 2018-09-18 | 2018-09-18 | Administrador de Contrato - Cliente; Funcionarios Técnicos - Cliente; Gerente de Proyecto PlanERP; Líder del Proyecto/Desarrollo PlanERP; Analista de Calidad PlanERP |
| 112 | 2.1.4.2 | **Entrenamiento en Modulos de Areas Funcionales Fase 1** | 16d | 109FS+0.57d | 16d | 2018-09-18 |  |  |
| 113 | 2.1.4.2.1 | **Entrenamiento de Usuarios Funcionales y Certificación de Procesos** | 12d | 111FS+2h | 12d | 2018-09-18 |  | Líder Funcional - Usuario Experto - Cliente; Usuarios Finales - Cliente; Funcionarios Técnicos - Cliente; Analista Procesos PlanERP; Desarrollador PlanERP; Consultor Especialista en Procesos de GADs PlanERP |
| 114 | 2.1.4.2.1.1 | 1 Dirección de Desarrollo Territorial (No incluye Catastro) | 1d |  |  | 2018-09-18 | 2018-09-19 |  |
| 115 | 2.1.4.2.1.2 | 4 Dirección de Justicia y Vigilancia | 1d | 114FS+1d |  | 2018-09-19 | 2018-09-20 |  |
| 116 | 2.1.4.2.1.3 | 5 Dirección de Desarrollo Humano y Social | 1d | 115FS+1d |  | 2018-09-20 | 2018-09-21 |  |
| 117 | 2.1.4.2.1.4 | 8.3 Rentas | 1d | 116FS+1d |  | 2018-09-21 | 2018-09-21 |  |
| 118 | 2.1.4.2.1.5 | 8.4 Tesorería | 1d | 117FS+1d |  | 2018-09-21 | 2018-09-24 |  |
| 119 | 2.1.4.2.1.6 | 9.1 Mercados | 0.5d | 118FS+1d |  | 2018-09-24 | 2018-09-25 |  |
| 120 | 2.1.4.2.1.7 | 9.2 Cementerio | 0.5d | 119FS+0.5d |  | 2018-09-25 | 2018-09-25 |  |
| 121 | 2.1.4.2.1.8 | 9.3 Camal | 0.5d | 120FS+0.5d |  | 2018-09-25 | 2018-09-26 |  |
| 122 | 2.1.4.2.1.9 | 10 Registro de la Propiedad y Mercantil | 1d | 121FS+0.5d |  | 2018-09-26 | 2018-09-26 |  |
| 123 | 2.1.4.2.1.10 | 11 Administración de bomberos | 0.5d | 122FS+1d |  | 2018-09-27 | 2018-09-27 |  |
| 124 | 2.1.4.2.1.11 | 12 CRM para ciudadanos. Ventanilla Única | 1d | 123FS+0.5d |  | 2018-09-27 | 2018-09-28 |  |
| 125 | 2.1.4.2.1.12 | 15.1 BI Desarrollo Territorial | 0.5d | 124FS+1d |  | 2018-09-28 | 2018-09-28 |  |
| 126 | 2.1.4.2.1.13 | 15.5 BI Obras Públicas Municipales | 0.5d | 125FS+0.5d |  | 2018-09-28 | 2018-10-01 |  |
| 127 | 2.1.4.2.1.14 | 15.7 BI Registro de la Propiedad y Mercantil | 0.5d | 126FS+0.5d |  | 2018-10-01 | 2018-10-01 |  |
| 128 | 2.1.4.2.1.15 | 16.1 Consultas Portal Web | 1d | 127FS+0.5d |  | 2018-10-01 | 2018-10-02 |  |
| 129 | 2.1.4.2.1.16 | 16.2 Aplicación para móviles (APP) | 0.5d | 128FS+1d |  | 2018-10-02 | 2018-10-02 |  |
| 130 | 2.1.4.2.2 | Entrenamiento de Usuario Técnicos | 4d | 129FS+0.5d, 100FS+1h, 80FS+1h, 31FS+2h |  | 2018-10-02 | 2018-10-08 | Funcionarios Técnicos - Cliente; Desarrollador PlanERP; Especialista Base de Datos PlanERP; Líder del Proyecto/Desarrollo PlanERP |
| 131 | 2.1.4.3 | **Preparación del Sistema** | 0.86d | 112FS+16d | 0.86d | 2018-10-08 |  |  |
| 132 | 2.1.4.3.1 | Completar la Administración del Sistema | 3h |  |  | 2018-10-08 | 2018-10-08 | Funcionarios Técnicos - Cliente; Desarrollador PlanERP; Analista Procesos PlanERP |
| 133 | 2.1.4.3.2 | Comprobación de la Puesta a Producción | 3h | 132FS+3h |  | 2018-10-08 | 2018-10-09 | Funcionarios Técnicos - Cliente; Administrador de Contrato - Cliente; Analista de Calidad PlanERP; Líder del Proyecto/Desarrollo PlanERP |

| ID | WBS | Task | Duration | Predecessors | Remaining | Actual start | Actual finish | Resources | Porcentage Avance |
| --- | --- | --- | --- | --- | --- | --- | --- | --- | --- |
| 134 | 2.1.4.4 | **Transición** | 2.14d | 131FS+0.86d | 2.14d | 2018-10-09 |  |  |  |
| 135 | 2.1.4.4.1 | Finalizar Procesamiento de Sistemas Legados | 1h |  |  | 2018-10-09 | 2018-10-09 | Administrador de Contrato - Cliente; Líder Funcional - Usuario Experto - Cliente; Desarrollador PlanERP; Líder del Proyecto/Desarrollo PlanERP; Especialista Base de Datos PlanERP |  |
| 136 | 2.1.4.4.2 | Realizar la Salida a Producción - Carga Inicial y Configuración Inicial | 2d | 135FS+1h |  | 2018-10-09 | 2018-10-11 | Administrador de Contrato - Cliente; Líder Funcional - Usuario Experto - Cliente; Desarrollador PlanERP; Líder del Proyecto/Desarrollo PlanERP; Especialista Base de Datos PlanERP |  |
| 137 | 2.1.4.5 | Revisar la ETAPA del Proyecto | 2h | 134FS+2.14d |  | 2018-10-11 | 2018-10-11 | Administrador de Contrato - Cliente; Gerente de Proyecto PlanERP; Líder del Proyecto/Desarrollo PlanERP; Analista de Calidad PlanERP |  |
| 138 | 2.1.4.6 | HITO: FINALIZACION ETAPA 4 | 0d | 137FS+2h |  | 2018-10-11 | 2018-10-11 |  | 35% |
| 139 | 2.1.5 | **ETAPA 5: Despliegue en Producción y Soporte Técnico - Módulos SC y AC** | 30d | 108FS+19.86d | 30d | 2018-10-11 |  |  |  |
| 140 | 2.1.5.1 | **Soporte en Producción** | 30d |  | 30d | 2018-10-11 |  |  |  |
| 141 | 2.1.5.1.1 | Soporte durante la Salida a Producción | 30d | 137FS+2h |  | 2018-10-11 | 2018-11-16 | Funcionarios Técnicos - Cliente; Desarrollador PlanERP; Analista Procesos PlanERP; Especialista Base de Datos PlanERP; Consultor Especialista en Procesos de GADs PlanERP |  |
| 142 | 2.1.5.1.2 | Resolver incidentes críticos | 20d | 137FS+2h |  | 2018-10-11 | 2018-11-05 | Funcionarios Técnicos - Cliente; Desarrollador PlanERP; Analista Procesos PlanERP; Especialista Base de Datos PlanERP; Consultor Especialista en Procesos de GADs PlanERP |  |
| 143 | 2.1.5.1.3 | Entregar el soporte y Administración al cliente | 1d |  |  | 2018-10-11 | 2018-10-12 | Funcionarios Técnicos - Cliente; Desarrollador PlanERP; Analista Procesos PlanERP; Especialista Base de Datos PlanERP; Consultor Especialista en Procesos de GADs PlanERP |  |
| 144 | 2.1.5.2 | **Mejora Continua** | 10d |  | 10d | 2018-10-11 |  |  |  |
| 145 | 2.1.5.2.1 | Monitoreo del Sistema y Acompañamiento ETAPA1 | 10d | 137FS+2h |  | 2018-10-11 | 2018-10-24 | Administrador de Contrato - Cliente; Funcionarios Técnicos - Cliente; Líder Funcional - Usuario Experto - Cliente; Especialista Base de Datos PlanERP; Líder del Proyecto/Desarrollo PlanERP; Consultor Especialista en Procesos de GADs PlanERP |  |
| 146 | 2.1.5.2.2 | Ajustes y Configuraciones finales al Software acorde a necesidades Entidad | 10d | 137FS+2h |  | 2018-10-11 | 2018-10-24 | Administrador de Contrato - Cliente; Funcionarios Técnicos - Cliente; Líder Funcional - Usuario Experto - Cliente; Especialista Base de Datos PlanERP; Líder del Proyecto/Desarrollo PlanERP; Consultor Especialista en Procesos de GADs PlanERP |  |
| 147 | 2.1.5.3 | **Cierre de la ETAPA 5** | 0.29d |  | 0.29d | 2018-10-24 |  |  |  |
| 148 | 2.1.5.3.1 | Reunión de Cierre de la ETAPA 5 | 2h | 144FS+10d |  | 2018-10-24 | 2018-10-24 | Administrador de Contrato - Cliente; Líder Funcional - Usuario Experto - Cliente; Funcionarios Técnicos - Cliente; Gerente de Proyecto PlanERP; Líder del Proyecto/Desarrollo PlanERP; Analista de Calidad PlanERP |  |
| 149 | 2.1.5.4 | HITO: FIN DE LA ETAPA 5 | 0d | 148FS+2h |  | 2018-10-24 | 2018-10-24 |  | 40% |
| 150 | 2.1.6 | **ETAPA 6: Estabilización, Apoyo Emisión 2019 y Desarrollo de funcionalidades no establecidas en el Alcance Contractual** | 57.29d |  | 57.29d | 2018-11-16 |  |  |  |
| 151 | 2.1.6.1 | Depuración de Errores de Calidad de Información fuente migrada (Base Oracle) | 30d | 139FS+30d |  | 2018-11-16 | 2018-12-24 |  |  |
| 152 | 2.1.6.2 | Soporte y Mantenimiento de Módulos de la Fase 1 | 30d | 139FS+30d |  | 2018-11-16 | 2018-12-24 |  |  |
| 153 | 2.1.6.3 | Adaptaciones a Software para incluir Nuevas funcionalidades no contempladas en alcance proyecto | 30d | 139FS+30d |  | 2018-11-16 | 2018-12-24 |  |  |
| 154 | 2.1.6.4 | Implementación de Licencia temporal de Modulo de Catastro Urbano SIIM | 20d |  |  | 2018-12-03 | 2018-12-26 |  |  |
| 155 | 2.1.6.5 | Migración de información de Emisión de Impuestos de Catastro Urbano 2019 | 20d |  |  | 2018-12-03 | 2018-12-26 |  |  |
| 156 | 2.1.6.6 | Creación de interfaces mediante ETLs para integración entre Sistema Oracle y SIIM para la recaudación de Impuestos 2019 de Catastro Urbano | 20d |  |  | 2018-12-03 | 2018-12-26 |  |  |
| 157 | 2.1.6.7 | Soporte en Recaudación de Impuestos de Catastro urbano y mejoras 2019 | 25d | 156FS+20d |  | 2018-12-26 | 2019-01-25 |  |  |

| ID | WBS | Task | Duration | Predecessors | Remaining | Actual start | Actual finish | Resources | Porcentage Avance |
| --- | --- | --- | --- | --- | --- | --- | --- | --- | --- |
| 158 | 2.1.6.8 | **Cierre de la FASE 1** | 0.29d |  | 0.29d | 2019-01-25 |  |  |  |
| 159 | 2.1.6.8.1 | Reunión de Cierre de la FASE 1 | 2h | 157FS+25d |  | 2019-01-25 | 2019-01-25 | Administrador de Contrato - Cliente; Líder Funcional - Usuario Experto - Cliente; Funcionarios Técnicos - Cliente; Gerente de Proyecto PlanERP; Líder del Proyecto/Desarrollo PlanERP; Analista de Calidad PlanERP |  |
| 160 | 2.1.6.8.2 | HITO: FIN DE LA FASE 1 | 0d | 159FS+2h |  | 2019-01-25 | 2019-01-25 |  | 50% |
| 161 | 2.2 | **FASE 2: Implementación de Módulos de Planificación de Recursos Institucionales - PRI** | 88.29d |  | 88.29d | 2019-01-25 |  |  |  |
| 162 | 2.2.1 | **ETAPA 1: Instalación del SIIM - Módulos PRI** | 4.14d |  | 4.14d | 2019-01-25 |  |  |  |
| 163 | 2.2.1.1 | **Entrega e Instalación del Software** | 3.14d |  | 3.14d | 2019-01-25 |  |  |  |
| 164 | 2.2.1.1.1 | **Instalar SIIM en Servidor** | 2.86d |  | 2.86d | 2019-01-25 |  | Funcionarios Técnicos - Cliente |  |
| 165 | 2.2.1.1.1.1 | **Instalar Módulos PRI** | 2.86d | 150FS+57.29d | 2.86d | 2019-01-25 |  | Funcionarios Técnicos - Cliente; Desarrollador PlanERP; Líder del Proyecto/Desarrollo PlanERP |  |
| 166 | 2.2.1.1.1.1.1 | 2.1 Administración Técnica | 2h |  |  | 2019-01-25 | 2019-01-25 |  |  |
| 167 | 2.2.1.1.1.1.2 | 2.2 Salud Ocupacional y Riesgos | 2h | 166FS+2h |  | 2019-01-25 | 2019-01-28 |  |  |
| 168 | 2.2.1.1.1.1.3 | 3.2 Adquisiciones | 2h | 167FS+2h |  | 2019-01-28 | 2019-01-28 |  |  |
| 169 | 2.2.1.1.1.1.4 | 6.1 Administración de Bienes | 2h | 168FS+2h |  | 2019-01-28 | 2019-01-28 |  |  |
| 170 | 2.2.1.1.1.1.5 | 8.1 Contabilidad | 2h | 169FS+2h |  | 2019-01-28 | 2019-01-28 |  |  |
| 171 | 2.2.1.1.1.1.6 | 8.2 Presupuestos | 2h | 170FS+2h |  | 2019-01-28 | 2019-01-29 |  |  |
| 172 | 2.2.1.1.1.1.7 | 13 CRM para Urbanizaciones | 2h | 171FS+2h |  | 2019-01-29 | 2019-01-29 |  |  |
| 173 | 2.2.1.1.1.1.8 | 14 Dirección de Planificación Institucional (Incluye control de proyectos de Obras Públicas | 2h | 172FS+2h |  | 2019-01-29 | 2019-01-29 |  |  |
| 174 | 2.2.1.1.1.1.9 | 15.6 Servicios Corporativos | 2h | 173FS+2h |  | 2019-01-29 | 2019-01-29 |  |  |
| 175 | 2.2.1.1.1.1.10 | 15.8 BI Planificación Institucional | 2h | 174FS+2h |  | 2019-01-29 | 2019-01-30 |  |  |
| 176 | 2.2.1.1.2 | Entrega de Software | 2h | 164FS+2.86d |  | 2019-01-30 | 2019-01-30 | Gerente de Proyecto PlanERP; Administrador de Contrato - Cliente |  |
| 177 | 2.2.1.2 | Revisar la ETAPA del Proyecto | 1d | 163FS+3.14d |  | 2019-01-30 | 2019-01-31 | Administrador de Contrato - Cliente; Gerente de Proyecto PlanERP; Analista de Calidad PlanERP |  |
| 178 | 2.2.1.3 | HITO: FINALIZACION ETAPA 1 | 0d | 177FS+1d |  | 2019-01-31 | 2019-01-31 |  | 53% |
| 179 | 2.2.2 | **ETAPA 2: Levantamiento de Características Institucionales - Módulos PRI** | 8.57d | 162FS+4.14d | 8.57d | 2019-01-31 |  |  |  |
| 180 | 2.2.2.1 | **Actividades de Gestión del Proyecto** | 0.57d |  | 0.57d | 2019-01-31 |  |  |  |
| 181 | 2.2.2.1.1 | Revisión del Plan del Proyecto | 2h |  |  | 2019-01-31 | 2019-01-31 | Administrador de Contrato - Cliente; Gerente de Proyecto PlanERP |  |
| 182 | 2.2.2.1.2 | Programar talleres de requerimientos de Entidad | 2h | 181FS+2h |  | 2019-01-31 | 2019-01-31 | Administrador de Contrato - Cliente; Gerente de Proyecto PlanERP |  |

| ID | WBS | Task | Duration | Predecessors | Remaining | Actual start | Actual finish | Resources | Porcentage Avance |
| --- | --- | --- | --- | --- | --- | --- | --- | --- | --- |
| 183 | 2.2.2.2 | **Sesiones de Requerimientos del Entidad** | 6d | 180FS+0.57d | 6d | 2019-01-31 |  |  |  |
| 184 | 2.2.2.2.1 | Conducir Sesiones de Requerimientos | 5d |  |  | 2019-01-31 | 2019-02-07 | Funcionarios Técnicos - Cliente; Analista Procesos PlanERP; Consultor Especialista en Procesos de GADs PlanERP |  |
| 185 | 2.2.2.2.2 | Crear Documento de Características del Entidad | 1d | 184FS+5d |  | 2019-02-07 | 2019-02-08 | Analista Procesos PlanERP; Funcionarios Técnicos - Cliente; Consultor Especialista en Procesos de GADs PlanERP |  |
| 186 | 2.2.2.3 | **Revisar el Documento de Características del Entidad** | 1d | 183FS+6d | 1d | 2019-02-08 |  |  |  |
| 187 | 2.2.2.3.1 | Revisar el Documento de Características del Entidad | 4h |  |  | 2019-02-08 | 2019-02-08 | Administrador de Contrato - Cliente; Gerente de Proyecto PlanERP; Analista de Calidad PlanERP; Consultor Especialista en Procesos de GADs PlanERP; Analista Procesos PlanERP |  |
| 188 | 2.2.2.3.2 | Revisar el Plan del Proyecto | 3h | 187FS+4h |  | 2019-02-08 | 2019-02-08 | Administrador de Contrato - Cliente; Gerente de Proyecto PlanERP |  |
| 189 | 2.2.2.4 | Revisar la ETAPA del Proyecto | 1d | 186FS+1d |  | 2019-02-08 | 2019-02-11 | Administrador de Contrato - Cliente; Gerente de Proyecto PlanERP; Líder del Proyecto/Desarrollo PlanERP; Analista de Calidad PlanERP |  |
| 190 | 2.2.2.5 | HITO: FINALIZACION ETAPA 2 | 0d | 189FS+1d |  | 2019-02-11 | 2019-02-11 |  | 55% |
| 191 | 2.2.3 | **ETAPA 3: Migración de Datos, Configuración y Pruebas de Operación de Módulos - Módulos PRI** | 33.71d | 179FS+8.57d | 33.71d | 2019-02-11 |  |  |  |
| 192 | 2.2.3.1 | **Gestión General del Proyecto** | 1.57d |  | 1.57d | 2019-02-11 |  |  |  |
| 193 | 2.2.3.1.1 | Planificar cambio Organizacional | 3h |  |  | 2019-02-11 | 2019-02-12 | Administrador de Contrato - Cliente; Gerente de Proyecto PlanERP; Líder del Proyecto/Desarrollo PlanERP |  |
| 194 | 2.2.3.1.2 | Planificar Entrenamiento a Usuarios Finales | 4h | 193FS+3h |  | 2019-02-12 | 2019-02-12 | Administrador de Contrato - Cliente; Gerente de Proyecto PlanERP; Líder del Proyecto/Desarrollo PlanERP |  |
| 195 | 2.2.3.1.3 | Definir y Preparar la Migración de Datos | 4h | 194FS+4h |  | 2019-02-12 | 2019-02-13 | Funcionarios Técnicos - Cliente; Líder del Proyecto/Desarrollo PlanERP; Especialista Base de Datos PlanERP |  |
| 196 | 2.2.3.2 | **Configuración del Sistema en Producción** | 19.57d | 192FS+1.57d | 19.57d | 2019-02-13 |  |  |  |
| 197 | 2.2.3.2.1 | Instalar el SIIM en Producción | 4h |  |  | 2019-02-13 | 2019-02-13 | Funcionarios Técnicos - Cliente; Analista Procesos PlanERP; Desarrollador PlanERP; Líder del Proyecto/Desarrollo PlanERP; Especialista Base de Datos PlanERP |  |
| 198 | 2.2.3.2.2 | Configurar Inicialización del Sistema | 1d | 197FS+4h |  | 2019-02-13 | 2019-02-14 | Funcionarios Técnicos - Cliente; Analista Procesos PlanERP; Desarrollador PlanERP; Líder del Proyecto/Desarrollo PlanERP; Especialista Base de Datos PlanERP |  |
| 199 | 2.2.3.2.3 | Realizar la Migración de Datos | 13d | 198FS+1d |  | 2019-02-14 | 2019-03-01 | Funcionarios Técnicos - Cliente; Analista Procesos PlanERP; Desarrollador PlanERP; Líder del Proyecto/Desarrollo PlanERP; Especialista Base de Datos PlanERP |  |
| 200 | 2.2.3.2.4 | Desarrollar Adaptaciones al Software | 2d | 199FS+13d |  | 2019-03-01 | 2019-03-05 | Funcionarios Técnicos - Cliente; Analista Procesos PlanERP; Desarrollador PlanERP; Líder del Proyecto/Desarrollo PlanERP; Especialista Base de Datos PlanERP |  |
| 201 | 2.2.3.2.5 | Configuración del Sistema en base al Documento de Características del Entidad | 1d | 200FS+2d |  | 2019-03-05 | 2019-03-06 | Funcionarios Técnicos - Cliente; Analista Procesos PlanERP; Desarrollador PlanERP; Líder del Proyecto/Desarrollo PlanERP; Especialista Base de Datos PlanERP |  |
| 202 | 2.2.3.2.6 | Configurar Interfaces | 1d | 201FS+1d |  | 2019-03-06 | 2019-03-07 | Funcionarios Técnicos - Cliente; Analista Procesos PlanERP; Desarrollador PlanERP; Líder del Proyecto/Desarrollo PlanERP; Especialista Base de Datos PlanERP |  |
| 203 | 2.2.3.2.7 | Configurar Usuarios y Autorizaciones | 1d | 202FS+1d |  | 2019-03-07 | 2019-03-08 | Funcionarios Técnicos - Cliente; Analista Procesos PlanERP; Desarrollador PlanERP; Líder del Proyecto/Desarrollo PlanERP; Especialista Base de Datos PlanERP |  |
| 204 | 2.2.3.3 | **Gestión del Cambio Organizacional** | 0.29d | 196FS+19.57d | 0.29d | 2019-03-08 |  |  |  |
| 205 | 2.2.3.3.1 | Conducir la comunicación de la Gestión de Cambios (si es aplicable) | 2h |  |  | 2019-03-08 | 2019-03-08 | Administrador de Contrato - Cliente; Líder Funcional - Usuario Experto - Cliente; Gerente de Proyecto PlanERP; Consultor Especialista en Procesos de GADs PlanERP |  |
| 206 | 2.2.3.4 | **Pruebas de validación del Sistema** | 4.57d | 204FS+0.29d | 4.57d | 2019-03-08 |  |  |  |
| 207 | 2.2.3.4.1 | Mantener la Lista Maestra de Procesos de Entidad | 4h |  |  | 2019-03-08 | 2019-03-11 | Líder Funcional - Usuario Experto - Cliente; Gerente de Proyecto PlanERP; Líder del Proyecto/Desarrollo PlanERP; Analista Procesos PlanERP; Consultor Especialista en Procesos de GADs PlanERP |  |

| ID | WBS | Task | Duration | Predecessors | Remaining | Actual start | Actual finish | Resources |
| --- | --- | --- | --- | --- | --- | --- | --- | --- |
| 208 | 2.2.3.4.2 | **Conducir Talleres de Validación** | 4d | 207FS+4h | 4d | 2019-03-11 |  | Líder Funcional - Usuario Experto - Cliente; Analista Procesos PlanERP; Analista de Calidad PlanERP; Consultor Especialista en Procesos de GADs PlanERP |
| 209 | 2.2.3.4.2.1 | 2.1 Administración Técnica | 4h |  |  | 2019-03-11 | 2019-03-11 |  |
| 210 | 2.2.3.4.2.2 | 2.2 Salud Ocupacional y Riesgos | 2h | 209FS+4h |  | 2019-03-11 | 2019-03-11 |  |
| 211 | 2.2.3.4.2.3 | 3.2 Adquisiciones | 4h | 210FS+2h |  | 2019-03-11 | 2019-03-12 |  |
| 212 | 2.2.3.4.2.4 | 6.1 Administración de Bienes | 2h | 211FS+4h |  | 2019-03-12 | 2019-03-12 |  |
| 213 | 2.2.3.4.2.5 | 8.1 Contabilidad | 4h | 212FS+2h |  | 2019-03-12 | 2019-03-13 |  |
| 214 | 2.2.3.4.2.6 | 8.2 Presupuestos | 4h | 213FS+4h |  | 2019-03-13 | 2019-03-13 |  |
| 215 | 2.2.3.4.2.7 | 13 CRM para Urbanizaciones | 2h | 214FS+4h |  | 2019-03-13 | 2019-03-13 |  |
| 216 | 2.2.3.4.2.8 | 14 Dirección de Planificación Institucional (Incluye control de proyectos de Obras Públicas) | 2h | 215FS+2h |  | 2019-03-13 | 2019-03-14 |  |
| 217 | 2.2.3.4.2.9 | 15.6 BI Servicios Corporativos | 2h | 216FS+2h |  | 2019-03-14 | 2019-03-14 |  |
| 218 | 2.2.3.4.2.10 | 15.8 BI Planificación Institucional | 2h | 217FS+2h |  | 2019-03-14 | 2019-03-14 |  |
| 219 | 2.2.3.5 | **Pruebas de aceptacion del Sistema** | 5.43d | 206FS+4.57d | 5.43d | 2019-03-14 |  |  |
| 220 | 2.2.3.5.1 | Definir casos de prueba y alcance | 3h |  |  | 2019-03-14 | 2019-03-14 | Líder Funcional - Usuario Experto - Cliente; Líder del Proyecto/Desarrollo PlanERP; Analista de Calidad PlanERP; Funcionarios Técnicos - Cliente |
| 221 | 2.2.3.5.2 | Preparar ambiente de pruebas | 1d | 220FS+3h |  | 2019-03-14 | 2019-03-15 | Funcionarios Técnicos - Cliente; Líder Funcional - Usuario Experto - Cliente; Líder del Proyecto/Desarrollo PlanERP; Analista de Calidad PlanERP |
| 222 | 2.2.3.5.3 | **Ejecutar el plan de pruebas** | 4d | 221FS+1d | 4d | 2019-03-15 |  | Líder Funcional - Usuario Experto - Cliente; Líder del Proyecto/Desarrollo PlanERP; Analista de Calidad PlanERP; Funcionarios Técnicos - Cliente; Consultor Especialista en Procesos de GADs PlanERP |
| 223 | 2.2.3.5.3.1 | 2.1 Administración Técnica | 4h |  |  | 2019-03-15 | 2019-03-18 |  |
| 224 | 2.2.3.5.3.2 | 2.2 Salud Ocupacional y Riesgos | 2h | 223FS+4h |  | 2019-03-18 | 2019-03-18 |  |
| 225 | 2.2.3.5.3.3 | 3.2 Adquisiciones | 4h | 224FS+2h |  | 2019-03-18 | 2019-03-19 |  |
| 226 | 2.2.3.5.3.4 | 6.1 Administración de Bienes | 2h | 225FS+4h |  | 2019-03-19 | 2019-03-19 |  |
| 227 | 2.2.3.5.3.5 | 8.1 Contabilidad | 4h | 226FS+2h |  | 2019-03-19 | 2019-03-19 |  |
| 228 | 2.2.3.5.3.6 | 8.2 Presupuestos | 4h | 227FS+4h |  | 2019-03-19 | 2019-03-20 |  |
| 229 | 2.2.3.5.3.7 | 13 CRM para Urbanizaciones | 2h | 228FS+4h |  | 2019-03-20 | 2019-03-20 |  |
| 230 | 2.2.3.5.3.8 | 14 Dirección de Planificación Institucional (Incluye control de proyectos de Obras Públicas) | 2h | 229FS+2h |  | 2019-03-20 | 2019-03-20 |  |
| 231 | 2.2.3.5.3.9 | 15.6 BI Servicios Corporativos | 2h | 230FS+2h |  | 2019-03-20 | 2019-03-21 |  |
| 232 | 2.2.3.5.3.10 | 15.8 BI Planificación Institucional | 2h | 231FS+2h |  | 2019-03-21 | 2019-03-21 |  |
| 233 | 2.2.3.5.4 | Revisar los resultados de las pruebas y necesidades de cambios | 1d |  |  | 2019-03-14 | 2019-03-15 | Administrador de Contrato - Cliente; Gerente de Proyecto PlanERP; Analista de Calidad PlanERP; Consultor Especialista en Procesos de GADs PlanERP |

| ID | WBS | Task | Duration | Predecessors | Remaining | Actual start | Actual finish | Resources | Porcentage Avance |
| --- | --- | --- | --- | --- | --- | --- | --- | --- | --- |
| 234 | 2.2.3.6 | **Planificar Salida a Producción y Soporte** | 1.29d | 219FS+5.43d | 1.29d | 2019-03-21 |  |  |  |
| 235 | 2.2.3.6.1 | Definir Plan de Salida a Producción | 3h |  |  | 2019-03-21 | 2019-03-21 | Administrador de Contrato - Cliente; Líder Funcional - Usuario Experto - Cliente; Gerente de Proyecto PlanERP; Líder del Proyecto/Desarrollo PlanERP |  |
| 236 | 2.2.3.6.2 | Planificar Estrategia de Soporte | 3h | 235FS+3h |  | 2019-03-21 | 2019-03-22 | Administrador de Contrato - Cliente; Líder Funcional - Usuario Experto - Cliente; Gerente de Proyecto PlanERP; Líder del Proyecto/Desarrollo PlanERP |  |
| 237 | 2.2.3.6.3 | Planificar Administración del Sistema | 3h | 236FS+3h |  | 2019-03-22 | 2019-03-22 | Administrador de Contrato - Cliente; Líder Funcional - Usuario Experto - Cliente; Gerente de Proyecto PlanERP; Líder del Proyecto/Desarrollo PlanERP |  |
| 238 | 2.2.3.7 | Revisar la ETAPA del Proyecto | 1d | 234FS+1.29d |  | 2019-03-22 | 2019-03-25 | Administrador de Contrato - Cliente; Gerente de Proyecto PlanERP; Líder del Proyecto/Desarrollo PlanERP; Analista de Calidad PlanERP |  |
| 239 | 2.2.3.8 | HITO: FINALIZACION ETAPA 3 | 0d | 238FS+1d |  | 2019-03-25 | 2019-03-25 |  | %60 |
| 240 | 2.2.4 | **ETAPA 4: Preparación Final previo Despliegue en Producción - Módulos PRI** | 11.43d | 191FS+33.71d | 11.43d | 2019-03-25 |  |  |  |
| 241 | 2.2.4.1 | **Gestión General del Proyecto** | 1.14d |  | 1.14d | 2019-03-25 |  |  |  |
| 242 | 2.2.4.1.1 | Confirmar el Plan de Entrenamiento | 4h |  |  | 2019-03-25 | 2019-03-25 | Administrador de Contrato - Cliente; Funcionarios Técnicos - Cliente; Gerente de Proyecto PlanERP; Líder del Proyecto/Desarrollo PlanERP |  |
| 243 | 2.2.4.1.2 | Finalizar plan de Salida a Producción | 4h | 242FS+4h |  | 2019-03-25 | 2019-03-26 | Administrador de Contrato - Cliente; Funcionarios Técnicos - Cliente; Gerente de Proyecto PlanERP; Líder del Proyecto/Desarrollo PlanERP; Analista de Calidad PlanERP |  |
| 244 | 2.2.4.2 | **Entrenamiento** | 6d | 241FS+1.14d | 6d | 2019-03-26 |  |  |  |
| 245 | 2.2.4.2.1 | **Entrenamiento de Usuarios Funcionales y Certificación de Procesos** | 4d |  | 4d | 2019-03-26 |  | Líder Funcional - Usuario Experto - Cliente; Usuarios Finales - Cliente; Funcionarios Técnicos - Cliente; Analista Procesos PlanERP; Desarrollador PlanERP; Consultor Especialista en Procesos de GADs PlanERP |  |
| 246 | 2.2.4.2.1.1 | 2.1 Administración Técnica | 4h |  |  | 2019-03-26 | 2019-03-26 |  |  |
| 247 | 2.2.4.2.1.2 | 2.2 Salud Ocupacional y Riesgos | 2h | 246FS+4h |  | 2019-03-26 | 2019-03-27 |  |  |
| 248 | 2.2.4.2.1.3 | 3.2 Adquisiciones | 4h | 247FS+2h |  | 2019-03-27 | 2019-03-27 |  |  |
| 249 | 2.2.4.2.1.4 | 6.1 Administración de Bienes | 2h | 248FS+4h |  | 2019-03-27 | 2019-03-27 |  |  |
| 250 | 2.2.4.2.1.5 | 8.1 Contabilidad | 4h | 249FS+2h |  | 2019-03-27 | 2019-03-28 |  |  |
| 251 | 2.2.4.2.1.6 | 8.2 Presupuestos | 4h | 250FS+4h |  | 2019-03-28 | 2019-03-28 |  |  |
| 252 | 2.2.4.2.1.7 | 13 CRM para Urbanizaciones | 2h | 251FS+4h |  | 2019-03-28 | 2019-03-29 |  |  |
| 253 | 2.2.4.2.1.8 | 14 Dirección de Planificación Institucional (Incluye control de proyectos de Obras Públicas) | 2h | 252FS+2h |  | 2019-03-29 | 2019-03-29 |  |  |
| 254 | 2.2.4.2.1.9 | 15.6 BI Servicios Corporativos | 2h | 253FS+2h |  | 2019-03-29 | 2019-03-29 |  |  |
| 255 | 2.2.4.2.1.10 | 15.8 BI Planificación Institucional | 2h | 254FS+2h |  | 2019-03-29 | 2019-03-29 |  |  |
| 256 | 2.2.4.2.2 | Entrenamiento de Usuario Técnicos | 6d |  |  | 2019-03-26 | 2019-04-02 | Funcionarios Técnicos - Cliente; Desarrollador PlanERP; Especialista Base de Datos PlanERP; Líder del Proyecto/Desarrollo PlanERP |  |
| 257 | 2.2.4.3 | **Preparación del Sistema** | 1.43d | 244FS+6d | 1.43d | 2019-04-02 |  |  |  |
| 258 | 2.2.4.3.1 | Completar la Administración del Sistema | 5h |  |  | 2019-04-02 | 2019-04-03 | Funcionarios Técnicos - Cliente; Desarrollador PlanERP; Analista Procesos PlanERP |  |
| 259 | 2.2.4.3.2 | Comprobación de la Puesta a Producción | 5h | 258FS+5h |  | 2019-04-03 | 2019-04-03 | Funcionarios Técnicos - Cliente; Administrador de Contrato - Cliente; Analista de Calidad PlanERP; Líder del Proyecto/Desarrollo PlanERP |  |

| ID | WBS | Task | Duration | Predecessors | Remaining | Actual start | Actual finish | Resources | Porcentage Avance |
| --- | --- | --- | --- | --- | --- | --- | --- | --- | --- |
| 260 | 2.2.4.4 | **Transición** | 2.57d | 257FS+1.43d | 2.57d | 2019-04-03 |  |  |  |
| 261 | 2.2.4.4.1 | Finalizar Procesamiento de Sistemas Legados | 4h |  |  | 2019-04-03 | 2019-04-04 | Administrador de Contrato - Cliente; Líder Funcional - Usuario Experto - Cliente; Desarrollador PlanERP; Líder del Proyecto/Desarrollo PlanERP; Especialista Base de Datos PlanERP |  |
| 262 | 2.2.4.4.2 | Realizar la Salida a Producción - Carga Inicial y Configuración Inicial | 2d | 261FS+4h |  | 2019-04-04 | 2019-04-08 | Administrador de Contrato - Cliente; Líder Funcional - Usuario Experto - Cliente; Desarrollador PlanERP; Líder del Proyecto/Desarrollo PlanERP; Especialista Base de Datos PlanERP |  |
| 263 | 2.2.4.5 | Revisar la ETAPA del Proyecto | 2h | 260FS+2.57d |  | 2019-04-08 | 2019-04-08 | Administrador de Contrato - Cliente; Gerente de Proyecto PlanERP; Líder del Proyecto/Desarrollo PlanERP; Analista de Calidad PlanERP |  |
| 264 | 2.2.4.6 | HITO: FINALIZACION ETAPA 4 | 0d | 263FS+2h |  | 2019-04-08 | 2019-04-08 |  | 80% |
| 265 | 2.2.5 | **ETAPA 5: Despliegue en Producción y Soporte Técnico - Módulos PRI** | 30.43d | 240FS+11.43d | 30.43d | 2019-04-08 |  |  |  |
| 266 | 2.2.5.1 | **Soporte en Producción** | 15d |  | 15d | 2019-04-08 |  |  |  |
| 267 | 2.2.5.1.1 | Soporte durante la Salida a Producción | 15d |  |  | 2019-04-08 | 2019-04-25 | Funcionarios Técnicos - Cliente; Desarrollador PlanERP; Analista Procesos PlanERP; Especialista Base de Datos PlanERP; Consultor Especialista en Procesos de GADs PlanERP |  |
| 268 | 2.2.5.1.2 | Resolver incidentes críticos | 15d | 263FS+2h |  | 2019-04-08 | 2019-04-25 | Funcionarios Técnicos - Cliente; Desarrollador PlanERP; Analista Procesos PlanERP; Especialista Base de Datos PlanERP; Consultor Especialista en Procesos de GADs PlanERP |  |
| 269 | 2.2.5.1.3 | Entregar el soporte y Administración al cliente | 2d | 263FS+2h |  | 2019-04-08 | 2019-04-10 | Funcionarios Técnicos - Cliente; Desarrollador PlanERP; Analista Procesos PlanERP; Especialista Base de Datos PlanERP; Consultor Especialista en Procesos de GADs PlanERP |  |
| 270 | 2.2.5.2 | **Mejora Continua** | 15d | 266FS+15d | 15d | 2019-04-25 |  |  |  |
| 271 | 2.2.5.2.1 | Monitoreo del Sistema y Acompañamiento ETAPA2 | 15d | 263FS+2h |  | 2019-04-25 | 2019-05-14 | Administrador de Contrato - Cliente; Funcionarios Técnicos - Cliente; Líder Funcional - Usuario Experto - Cliente; Especialista Base de Datos PlanERP; Líder del Proyecto/Desarrollo PlanERP; Consultor Especialista en Procesos de GADs PlanERP |  |
| 272 | 2.2.5.2.2 | Ajustes y Configuraciones finales al Software acorde a necesidades Entidad | 15d | 263FS+2h |  | 2019-04-25 | 2019-05-14 | Administrador de Contrato - Cliente; Funcionarios Técnicos - Cliente; Líder Funcional - Usuario Experto - Cliente; Especialista Base de Datos PlanERP; Líder del Proyecto/Desarrollo PlanERP; Consultor Especialista en Procesos de GADs PlanERP |  |
| 273 | 2.2.5.3 | **Cierre de la FASE 2** | 0.43d | 270FS+15d | 0.43d | 2019-05-14 |  |  |  |
| 274 | 2.2.5.3.1 | Reunión de Cierre de la FASE 2 | 3h |  |  | 2019-05-14 | 2019-05-14 | Administrador de Contrato - Cliente; Líder Funcional - Usuario Experto - Cliente; Funcionarios Técnicos - Cliente; Gerente de Proyecto PlanERP; Líder del Proyecto/Desarrollo PlanERP; Analista de Calidad PlanERP |  |
| 275 | 2.2.5.4 | HITO: FIN DE LA FASE 2 | 0d | 273FS+0.43d |  | 2019-05-14 | 2019-05-14 |  | 85% |
| 276 | 2.3 | **FASE 3: Implementación de Módulos de Planificación de Recursos Institucionales - PRI** | 76.86d |  | 76.86d | 2019-04-08 |  |  |  |
| 277 | 2.3.1 | **ETAPA 1: Instalación del SIIM - Módulos PRI** | 4.29d |  | 4.29d | 2019-04-08 |  |  |  |
| 278 | 2.3.1.1 | **Entrega e Instalación del Software** | 3.29d |  | 3.29d | 2019-04-08 |  |  |  |
| 279 | 2.3.1.1.1 | **Instalar SIIM en Servidor** | 3d |  | 3d | 2019-04-08 |  | Funcionarios Técnicos - Cliente |  |
| 280 | 2.3.1.1.1.1 | Instalar Módulos PRI | 3d | 264 |  | 2019-04-08 | 2019-04-10 | Funcionarios Técnicos - Cliente; Desarrollador PlanERP; Líder del Proyecto/Desarrollo PlanERP |  |
| 281 | 2.3.1.1.2 | Entrega de Software | 2h | 279FS+3d |  | 2019-04-10 | 2019-04-11 | Gerente de Proyecto PlanERP; Administrador de Contrato - Cliente |  |
| 282 | 2.3.1.2 | Revisar la ETAPA del Proyecto | 1d | 278FS+3.29d |  | 2019-04-11 | 2019-04-12 | Administrador de Contrato - Cliente; Gerente de Proyecto PlanERP; Analista de Calidad PlanERP |  |
| 283 | 2.3.1.3 | HITO: FINALIZACION ETAPA 1 | 0d | 282FS+1d |  | 2019-04-12 | 2019-04-12 |  | 86% |

| ID | WBS | Task | Duration | Predecessors | Remaining | Actual start | Actual finish | Resources | Porcentage Avance |
| --- | --- | --- | --- | --- | --- | --- | --- | --- | --- |
| 284 | 2.3.2 | **ETAPA 2: Levantamiento de Características Institucionales - Módulos PRI** | 8.57d | 277FS+4.29d | 8.57d | 2019-04-12 |  |  |  |
| 285 | 2.3.2.1 | **Actividades de Gestión del Proyecto** | 0.57d |  | 0.57d | 2019-04-12 |  |  |  |
| 286 | 2.3.2.1.1 | Revisión del Plan del Proyecto | 2h |  |  | 2019-04-12 | 2019-04-12 | Administrador de Contrato - Cliente; Gerente de Proyecto PlanERP |  |
| 287 | 2.3.2.1.2 | Programar talleres de requerimientos de Entidad | 2h | 286FS+2h |  | 2019-04-12 | 2019-04-12 | Administrador de Contrato - Cliente; Gerente de Proyecto PlanERP |  |
| 288 | 2.3.2.2 | **Sesiones de Requerimientos del Entidad** | 6d | 285FS+0.57d | 6d | 2019-04-12 |  |  |  |
| 289 | 2.3.2.2.1 | Conducir Sesiones de Requerimientos | 3d |  |  | 2019-04-12 | 2019-04-17 | Funcionarios Técnicos - Cliente; Analista Procesos PlanERP; Consultor Especialista en Procesos de GADs PlanERP |  |
| 290 | 2.3.2.2.2 | Crear Documento de Características del Entidad | 3d | 289FS+3d |  | 2019-04-17 | 2019-04-19 | Analista Procesos PlanERP; Funcionarios Técnicos - Cliente; Consultor Especialista en Procesos de GADs PlanERP |  |
| 291 | 2.3.2.3 | **Revisar el Documento de Características del Entidad** | 1d | 288FS+6d | 1d | 2019-04-19 |  |  |  |
| 292 | 2.3.2.3.1 | Revisar el Documento de Características del Entidad | 4h |  |  | 2019-04-19 | 2019-04-22 | Administrador de Contrato - Cliente; Gerente de Proyecto PlanERP; Analista de Calidad PlanERP; Consultor Especialista en Procesos de GADs PlanERP; Analista Procesos PlanERP |  |
| 293 | 2.3.2.3.2 | Revisar el Plan del Proyecto | 3h | 292FS+4h |  | 2019-04-22 | 2019-04-22 | Administrador de Contrato - Cliente; Gerente de Proyecto PlanERP |  |
| 294 | 2.3.2.4 | Revisar la ETAPA del Proyecto | 1d | 291FS+1d |  | 2019-04-22 | 2019-04-23 | Administrador de Contrato - Cliente; Gerente de Proyecto PlanERP; Líder del Proyecto/Desarrollo PlanERP; Analista de Calidad PlanERP |  |
| 295 | 2.3.2.5 | HITO: FINALIZACION ETAPA 2 | 0d | 294FS+1d |  | 2019-04-23 | 2019-04-23 |  | 87% |
| 296 | 2.3.3 | **ETAPA 3: Migración de Datos, Configuración y Pruebas de Operación de Módulos - Módulos PRI** | 33.43d | 284FS+8.57d | 33.43d | 2019-04-23 |  |  |  |
| 297 | 2.3.3.1 | **Gestión General del Proyecto** | 1.57d |  | 1.57d | 2019-04-23 |  |  |  |
| 298 | 2.3.3.1.1 | Planificar cambio Organizacional | 3h |  |  | 2019-04-23 | 2019-04-23 | Administrador de Contrato - Cliente; Gerente de Proyecto PlanERP; Líder del Proyecto/Desarrollo PlanERP |  |
| 299 | 2.3.3.1.2 | Planificar Entrenamiento a Usuarios Finales | 4h | 298FS+3h |  | 2019-04-23 | 2019-04-24 | Administrador de Contrato - Cliente; Gerente de Proyecto PlanERP; Líder del Proyecto/Desarrollo PlanERP |  |
| 300 | 2.3.3.1.3 | Definir y Preparar la Migración de Datos | 4h | 299FS+4h |  | 2019-04-24 | 2019-04-24 | Funcionarios Técnicos - Cliente; Líder del Proyecto/Desarrollo PlanERP; Especialista Base de Datos PlanERP |  |
| 301 | 2.3.3.2 | **Configuración del Sistema en Producción** | 20.57d | 297FS+1.57d | 20.57d | 2019-04-24 |  |  |  |
| 302 | 2.3.3.2.1 | Instalar el SIIM en Producción | 4h |  |  | 2019-04-24 | 2019-04-25 | Funcionarios Técnicos - Cliente; Analista Procesos PlanERP; Desarrollador PlanERP; Líder del Proyecto/Desarrollo PlanERP; Especialista Base de Datos PlanERP |  |
| 303 | 2.3.3.2.2 | Configurar Inicialización del Sistema | 1d | 302FS+4h |  | 2019-04-25 | 2019-04-26 | Funcionarios Técnicos - Cliente; Analista Procesos PlanERP; Desarrollador PlanERP; Líder del Proyecto/Desarrollo PlanERP; Especialista Base de Datos PlanERP |  |
| 304 | 2.3.3.2.3 | Realizar la Migración de Datos | 10d | 303FS+1d |  | 2019-04-26 | 2019-05-09 | Funcionarios Técnicos - Cliente; Analista Procesos PlanERP; Desarrollador PlanERP; Líder del Proyecto/Desarrollo PlanERP; Especialista Base de Datos PlanERP |  |
| 305 | 2.3.3.2.4 | Desarrollar Adaptaciones al Software | 5d | 304FS+10d |  | 2019-05-09 | 2019-05-15 | Funcionarios Técnicos - Cliente; Analista Procesos PlanERP; Desarrollador PlanERP; Líder del Proyecto/Desarrollo PlanERP; Especialista Base de Datos PlanERP |  |
| 306 | 2.3.3.2.5 | Configuración del Sistema en base al Documento de Características del Entidad | 2d | 305FS+5d |  | 2019-05-15 | 2019-05-17 | Funcionarios Técnicos - Cliente; Analista Procesos PlanERP; Desarrollador PlanERP; Líder del Proyecto/Desarrollo PlanERP; Especialista Base de Datos PlanERP |  |
| 307 | 2.3.3.2.6 | Configurar Interfaces | 1d | 306FS+2d |  | 2019-05-17 | 2019-05-20 | Funcionarios Técnicos - Cliente; Analista Procesos PlanERP; Desarrollador PlanERP; Líder del Proyecto/Desarrollo PlanERP; Especialista Base de Datos PlanERP |  |
| 308 | 2.3.3.2.7 | Configurar Usuarios y Autorizaciones | 1d | 307FS+1d |  | 2019-05-20 | 2019-05-20 | Funcionarios Técnicos - Cliente; Analista Procesos PlanERP; Desarrollador PlanERP; Líder del Proyecto/Desarrollo PlanERP; Especialista Base de Datos PlanERP |  |

| ID | WBS | Task | Duration | Predecessors | Remaining | Actual start | Actual finish | Resources |
| --- | --- | --- | --- | --- | --- | --- | --- | --- |
| 309 | 2.3.3.3 | **Gestión del Cambio Organizacional** | 2d | 301FS+20.57d | 2d | 2019-05-20 |  |  |
| 310 | 2.3.3.3.1 | Conducir la comunicación de la Gestión de Cambios (si es aplicable) | 2d |  |  | 2019-05-20 | 2019-05-22 | Administrador de Contrato - Cliente; Líder Funcional - Usuario Experto - Cliente; Gerente de Proyecto PlanERP; Consultor Especialista en Procesos de GADs PlanERP |
| 311 | 2.3.3.4 | **Pruebas de validación/aceptación del Sistema** | 2.57d | 309FS+2d | 2.57d | 2019-05-22 |  |  |
| 312 | 2.3.3.4.1 | Mantener la Lista Maestra de Procesos de Entidad | 4h |  |  | 2019-05-22 | 2019-05-23 | Líder Funcional - Usuario Experto - Cliente; Gerente de Proyecto PlanERP; Líder del Proyecto/Desarrollo PlanERP; Analista Procesos PlanERP; Consultor Especialista en Procesos de GADs PlanERP |
| 313 | 2.3.3.4.2 | **Conducir Talleres de Validación** | 2d | 312FS+4h | 2d | 2019-05-23 |  | Líder Funcional - Usuario Experto - Cliente; Analista Procesos PlanERP; Analista de Calidad PlanERP; Consultor Especialista en Procesos de GADs PlanERP |
| 314 | 2.3.3.4.2.1 | 3.1 Compras Públicas | 2h |  |  | 2019-05-23 | 2019-05-23 |  |
| 315 | 2.3.3.4.2.2 | 6.2 Servicios Generales | 2h | 314FS+2h |  | 2019-05-23 | 2019-05-23 |  |
| 316 | 2.3.3.4.2.3 | 8.5 Gestión Jurídica - Financiera | 2h | 315FS+2h |  | 2019-05-23 | 2019-05-23 |  |
| 317 | 2.3.3.4.2.4 | 15.2 BI Financiero | 2h | 316FS+2h |  | 2019-05-23 | 2019-05-24 |  |
| 318 | 2.3.3.4.2.5 | 15.3 BI Administración del Talento Humano | 2h | 317FS+2h |  | 2019-05-24 | 2019-05-24 |  |
| 319 | 2.3.3.4.2.6 | 15.4 BI Compras Públicas | 2h | 318FS+2h |  | 2019-05-24 | 2019-05-24 |  |
| 320 | 2.3.3.4.2.7 | 15.9 Tablero de Control | 2h | 319FS+2h |  | 2019-05-24 | 2019-05-24 |  |
| 321 | 2.3.3.5 | **Pruebas de aceptacion del Sistema** | 4.43d | 311FS+2.57d | 4.43d | 2019-05-24 |  |  |
| 322 | 2.3.3.5.1 | Definir casos de prueba y alcance | 3h |  |  | 2019-05-24 | 2019-05-27 | Líder Funcional - Usuario Experto - Cliente; Líder del Proyecto/Desarrollo PlanERP; Analista de Calidad PlanERP; Funcionarios Técnicos - Cliente |
| 323 | 2.3.3.5.2 | Preparar ambiente de pruebas | 1d | 322FS+3h |  | 2019-05-27 | 2019-05-28 | Funcionarios Técnicos - Cliente; Líder Funcional - Usuario Experto - Cliente; Líder del Proyecto/Desarrollo PlanERP; Analista de Calidad PlanERP |
| 324 | 2.3.3.5.3 | **Ejecutar el plan de pruebas** | 2d | 323FS+1d | 2d | 2019-05-28 |  | Líder Funcional - Usuario Experto - Cliente; Líder del Proyecto/Desarrollo PlanERP; Analista de Calidad PlanERP; Funcionarios Técnicos - Cliente; Consultor Especialista en Procesos de GADs PlanERP |
| 325 | 2.3.3.5.3.1 | 3.1 Compras Públicas | 2h |  |  | 2019-05-28 | 2019-05-28 |  |
| 326 | 2.3.3.5.3.2 | 6.2 Servicios Generales | 2h | 325FS+2h |  | 2019-05-28 | 2019-05-28 |  |
| 327 | 2.3.3.5.3.3 | 8.5 Gestión Jurídica - Financiera | 2h | 326FS+2h |  | 2019-05-28 | 2019-05-28 |  |
| 328 | 2.3.3.5.3.4 | 15.2 BI Financiero | 2h | 327FS+2h |  | 2019-05-28 | 2019-05-29 |  |
| 329 | 2.3.3.5.3.5 | 15.3 BI Administración del Talento Humano | 2h | 328FS+2h |  | 2019-05-29 | 2019-05-29 |  |
| 330 | 2.3.3.5.3.6 | 15.4 BI Compras Públicas | 2h | 329FS+2h |  | 2019-05-29 | 2019-05-29 |  |
| 331 | 2.3.3.5.3.7 | 15.9 Tablero de Control | 2h | 330FS+2h |  | 2019-05-29 | 2019-05-29 |  |
| 332 | 2.3.3.5.4 | Revisar los resultados de las pruebas y necesidades de cambios | 1d | 331FS+2h, 320FS+2h |  | 2019-05-29 | 2019-05-30 | Administrador de Contrato - Cliente; Gerente de Proyecto PlanERP; Analista de Calidad PlanERP; Consultor Especialista en Procesos de GADs PlanERP |

| ID | WBS | Task | Duration | Predecessors | Remaining | Actual start | Actual finish | Resources | Porcentage Avance |
| --- | --- | --- | --- | --- | --- | --- | --- | --- | --- |
| 333 | 2.3.3.6 | **Planificar Salida a Producción y Soporte** | 1.29d | 321FS+4.43d | 1.29d | 2019-05-30 |  |  |  |
| 334 | 2.3.3.6.1 | Definir Plan de Salida a Producción | 3h |  |  | 2019-05-30 | 2019-05-31 | Administrador de Contrato - Cliente; Líder Funcional - Usuario Experto - Cliente; Gerente de Proyecto PlanERP; Líder del Proyecto/Desarrollo PlanERP |  |
| 335 | 2.3.3.6.2 | Planificar Estrategia de Soporte | 3h | 334FS+3h |  | 2019-05-31 | 2019-05-31 | Administrador de Contrato - Cliente; Líder Funcional - Usuario Experto - Cliente; Gerente de Proyecto PlanERP; Líder del Proyecto/Desarrollo PlanERP |  |
| 336 | 2.3.3.6.3 | Planificar Administración del Sistema | 3h | 335FS+3h |  | 2019-05-31 | 2019-05-31 | Administrador de Contrato - Cliente; Líder Funcional - Usuario Experto - Cliente; Gerente de Proyecto PlanERP; Líder del Proyecto/Desarrollo PlanERP |  |
| 337 | 2.3.3.7 | Revisar la ETAPA del Proyecto | 1d | 333FS+1.29d |  | 2019-05-31 | 2019-06-03 | Administrador de Contrato - Cliente; Gerente de Proyecto PlanERP; Líder del Proyecto/Desarrollo PlanERP; Analista de Calidad PlanERP |  |
| 338 | 2.3.3.8 | HITO: FINALIZACION ETAPA 3 | 0d | 337FS+1d |  | 2019-06-03 | 2019-06-03 |  | 95% |
| 339 | 2.3.4 | **ETAPA 4: Preparación Final previo Despliegue en Producción - Módulos PRI** | 12.43d | 296FS+33.43d | 12.43d | 2019-06-03 |  |  |  |
| 340 | 2.3.4.1 | **Gestión General del Proyecto** | 1.14d |  | 1.14d | 2019-06-03 |  |  |  |
| 341 | 2.3.4.1.1 | Confirmar el Plan de Entrenamiento | 4h |  |  | 2019-06-03 | 2019-06-04 | Administrador de Contrato - Cliente; Funcionarios Técnicos - Cliente; Gerente de Proyecto PlanERP; Líder del Proyecto/Desarrollo PlanERP |  |
| 342 | 2.3.4.1.2 | Finalizar plan de Salida a Producción | 4h | 341FS+4h |  | 2019-06-04 | 2019-06-04 | Administrador de Contrato - Cliente; Funcionarios Técnicos - Cliente; Gerente de Proyecto PlanERP; Líder del Proyecto/Desarrollo PlanERP; Analista de Calidad PlanERP |  |
| 343 | 2.3.4.2 | **Entrenamiento** | 7d | 340FS+1.14d | 7d | 2019-06-04 |  |  |  |
| 344 | 2.3.4.2.1 | **Entrenamiento de Usuarios Funcionales y Certificación de Procesos** | 4d |  | 4d | 2019-06-04 |  | Líder Funcional - Usuario Experto - Cliente; Usuarios Finales - Cliente; Funcionarios Técnicos - Cliente; Analista Procesos PlanERP; Desarrollador PlanERP; Consultor Especialista en Procesos de GADs PlanERP |  |
| 345 | 2.3.4.2.1.1 | 3.1 Compras Públicas | 4h |  |  | 2019-06-04 | 2019-06-05 |  |  |
| 346 | 2.3.4.2.1.2 | 6.2 Servicios Generales | 4h | 345FS+4h |  | 2019-06-05 | 2019-06-05 |  |  |
| 347 | 2.3.4.2.1.3 | 8.5 Gestión Jurídica - Financiera | 4h | 346FS+4h |  | 2019-06-05 | 2019-06-06 |  |  |
| 348 | 2.3.4.2.1.4 | 15.2 BI Financiero | 4h | 347FS+4h |  | 2019-06-06 | 2019-06-06 |  |  |
| 349 | 2.3.4.2.1.5 | 15.3 BI Administración del Talento Humano | 4h | 348FS+4h |  | 2019-06-06 | 2019-06-07 |  |  |
| 350 | 2.3.4.2.1.6 | 15.4 BI Compras Públicas | 4h | 349FS+4h |  | 2019-06-07 | 2019-06-07 |  |  |
| 351 | 2.3.4.2.1.7 | 15.9 Tablero de Control | 4h | 350FS+4h |  | 2019-06-07 | 2019-06-10 |  |  |
| 352 | 2.3.4.2.2 | Entrenamiento de Usuario Técnicos | 3d | 351FS+4h |  | 2019-06-10 | 2019-06-12 | Funcionarios Técnicos - Cliente; Desarrollador PlanERP; Especialista Base de Datos PlanERP; Líder del Proyecto/Desarrollo PlanERP |  |
| 353 | 2.3.4.3 | **Preparación del Sistema** | 1.43d | 343FS+7d | 1.43d | 2019-06-12 |  |  |  |
| 354 | 2.3.4.3.1 | Completar la Administración del Sistema | 5h |  |  | 2019-06-12 | 2019-06-13 | Funcionarios Técnicos - Cliente; Desarrollador PlanERP; Analista Procesos PlanERP |  |
| 355 | 2.3.4.3.2 | Comprobación de la Puesta a Producción | 5h | 354FS+5h |  | 2019-06-13 | 2019-06-14 | Funcionarios Técnicos - Cliente; Administrador de Contrato - Cliente; Analista de Calidad PlanERP; Líder del Proyecto/Desarrollo PlanERP |  |
| 356 | 2.3.4.4 | **Transición** | 2.57d | 353FS+1.43d | 2.57d | 2019-06-14 |  |  |  |
| 357 | 2.3.4.4.1 | Finalizar Procesamiento de Sistemas Legados | 4h |  |  | 2019-06-14 | 2019-06-14 | Administrador de Contrato - Cliente; Líder Funcional - Usuario Experto - Cliente; Desarrollador PlanERP; Líder del Proyecto/Desarrollo PlanERP; Especialista Base de Datos PlanERP |  |
| 358 | 2.3.4.4.2 | Realizar la Salida a Producción - Carga Inicial y Configuración Inicial | 2d | 357FS+4h |  | 2019-06-14 | 2019-06-18 | Administrador de Contrato - Cliente; Líder Funcional - Usuario Experto - Cliente; Desarrollador PlanERP; Líder del Proyecto/Desarrollo PlanERP; Especialista Base de Datos PlanERP |  |
| 359 | 2.3.4.5 | Revisar la ETAPA del Proyecto | 2h | 356FS+2.57d |  | 2019-06-18 | 2019-06-18 | Administrador de Contrato - Cliente; Gerente de Proyecto PlanERP; Líder del Proyecto/Desarrollo PlanERP; Analista de Calidad PlanERP |  |
| 360 | 2.3.4.6 | HITO: FINALIZACION ETAPA 4 | 0d | 359FS+2h |  | 2019-06-18 | 2019-06-18 |  | 98% |

| ID | WBS | Task | Duration | Predecessors | Remaining | Actual start | Actual finish | Resources | Porcentage Avance |
| --- | --- | --- | --- | --- | --- | --- | --- | --- | --- |
| 361 | 2.3.5 | **ETAPA 5: Despliegue en Producción y Soporte Técnico - Módulos PRI** | 15.43d | 339FS+12.43d | 15.43d | 2019-06-21 |  |  |  |
| 362 | 2.3.5.1 | **Soporte en Producción** | 10d |  | 10d | 2019-06-21 |  |  |  |
| 363 | 2.3.5.1.1 | Soporte durante la Salida a Producción | 5d |  |  | 2019-06-21 | 2019-06-28 | Funcionarios Técnicos - Cliente; Desarrollador PlanERP; Analista Procesos PlanERP; Especialista Base de Datos PlanERP; Consultor Especialista en Procesos de GADs PlanERP |  |
| 364 | 2.3.5.1.2 | Resolver incidentes críticos | 3d | 363FS+5d |  | 2019-06-28 | 2019-07-02 | Funcionarios Técnicos - Cliente; Desarrollador PlanERP; Analista Procesos PlanERP; Especialista Base de Datos PlanERP; Consultor Especialista en Procesos de GADs PlanERP |  |
| 365 | 2.3.5.1.3 | Entregar el soporte y Administración al cliente | 2d | 364FS+3d |  | 2019-07-02 | 2019-07-04 | Funcionarios Técnicos - Cliente; Desarrollador PlanERP; Analista Procesos PlanERP; Especialista Base de Datos PlanERP; Consultor Especialista en Procesos de GADs PlanERP |  |
| 366 | 2.3.5.2 | **Mejora Continua** | 15d | 339FS+12.43d | 15d | 2019-06-21 |  |  |  |
| 367 | 2.3.5.2.1 | Monitoreo del Sistema y Acompañamiento | 15d |  |  | 2019-06-21 | 2019-07-10 | Administrador de Contrato - Cliente; Funcionarios Técnicos - Cliente; Líder Funcional - Usuario Experto - Cliente; Especialista Base de Datos PlanERP; Líder del Proyecto/Desarrollo PlanERP; Consultor Especialista en Procesos de GADs PlanERP |  |
| 368 | 2.3.5.2.2 | Ajustes y Configuraciones finales al Software acorde a necesidades Entidad | 15d | 339FS+12.43d |  | 2019-06-21 | 2019-07-10 | Administrador de Contrato - Cliente; Funcionarios Técnicos - Cliente; Líder Funcional - Usuario Experto - Cliente; Especialista Base de Datos PlanERP; Líder del Proyecto/Desarrollo PlanERP; Consultor Especialista en Procesos de GADs PlanERP |  |
| 369 | 2.3.5.3 | **Cierre de la FASE 3 y Proyecto** | 0.43d | 366FS+15d | 0.43d | 2019-07-10 |  |  |  |
| 370 | 2.3.5.3.1 | Reunión de Cierre de la FASE 3 y Proyecto | 3h |  |  | 2019-07-10 | 2019-07-10 | Administrador de Contrato - Cliente; Líder Funcional - Usuario Experto - Cliente; Funcionarios Técnicos - Cliente; Gerente de Proyecto PlanERP; Líder del Proyecto/Desarrollo PlanERP; Analista de Calidad PlanERP |  |
| 371 | 2.3.5.4 | HITO: FIN DE LA FASE 3 y Proyecto | 0d | 366FS+15d |  | 2019-07-10 | 2019-07-10 |  | 100% |
