# Casa6

Schedule from MS Project XML, A marks actual dates.
Training Park

## Calendars

- Standard: Mon-Sun off.

## Resources

| Resource |
| --- |
| Carpinteros |
| Electricistas |
| Decorador de Interiores |
| Obreros |
| Albañiles |
| Fontaneros |

## Schedule

| ID | Task | Duration | Predecessors | Remaining | Actual start | Actual finish | Resources | NuevaColumna |
| --- | --- | --- | --- | --- | --- | --- | --- | --- |
| 1 | Fundamentos | 3.88d |  | 3.88d | 1997-12-01 |  |  | 1 |
| 2 | Forma | 3d |  |  | 1997-12-01 | 1997-12-04 | Albañiles | 5 |
| 3 | Encofrado | 7h | 2FS+3d |  | 1997-12-04 | 1997-12-04 | Albañiles | 25 |
| 4 | Fase Estructura | 41.5d | 3FS+7h | 41.5d | 1997-12-08 |  |  | 5 |
| 5 | Marcos | 2w |  |  | 1997-12-08 | 1997-12-19 |  | 1 |
| 6 | Paredes | 2.5w | 5FS+2w, 8FS+19d |  | 1998-01-16 | 1998-02-03 |  | 7 |
| 7 | Techos | 10d | 5FS+2w |  | 1997-12-22 | 1998-01-02 |  | 3 |
| 8 | Mecánica | 19d | 5FS+2w | 19d | 1997-12-22 |  |  | 5 |
| 9 | Calefacción | 36h |  |  | 1997-12-22 | 1997-12-26 | Electricistas | 5 |
| 10 | Aire Acondicionado | 36h | 9SS+36h |  | 1997-12-26 | 1998-01-01 | Electricistas | 7 |
| 11 | Fontanería | 1.25w |  |  | 1997-12-22 | 1997-12-30 | Fontaneros [200%] | 1 |
| 12 | Electricidad | 2w |  |  | 1998-01-02 | 1998-01-15 | Electricistas | 4 |
| 13 | Acabado Exterior | 7d | 4FS+41.5d | 7d | 1998-02-03 |  |  | 5 |
| 14 | Colocar Puertas | 16h |  |  | 1998-02-03 | 1998-02-05 | Carpinteros | 25 |
| 15 | Instalar Ventanas | 7d |  |  | 1998-02-03 | 1998-02-12 | Carpinteros | 4 |
| 16 | Fin | 0d | 13FS+7d |  | 1998-02-12 | 1998-02-12 |  | 7 |
