# Casa6

Schedule from MS Project XML, 2019-08-26 to 2019-08-26.
Training Park

## Calendars

- Estándar: Mon-Fri 07:30-12:00, 13:00-16:30; Sat-Sun off.

## Resources

| Resource |
| --- |
| Carpinteros |
| Electricistas |
| Decorador de Interiores |
| Obreros |
| Albañiles |
| Fontaneros |

## Schedule

| ID | WBS | Task | Duration | Start | Finish | Predecessors |
| --- | --- | --- | --- | --- | --- | --- |
| 1 | 0 | Casa6 | 0d? | 2019-08-26 | 2019-08-26 |  |
| 2 | 2 | **Fundamentos** | 0d |  |  |  |
| 3 | 2.1 | Forma | 3d |  |  |  |
| 4 | 2.2 | Encofrado | 7h |  |  | 3FS+3d |
| 5 | 3 | **Fase Estructura** | 0d |  |  | 4FS+7h |
| 6 | 3.1 | Marcos | 2w |  |  |  |
| 7 | 3.2 | Paredes | 2.5w |  |  | 6FS+2w, 9FS+19d |
| 8 | 3.3 | Techos | 10d |  |  | 6FS+2w |
| 9 | 4 | **Mecánica** | 0d |  |  | 6FS+2w |
| 10 | 4.1 | Calefacción | 36h |  |  |  |
| 11 | 4.2 | Aire Acondicionado | 36h |  |  | 10SS+36h |
| 12 | 4.3 | Fontanería | 1.25w |  |  |  |
| 13 | 4.4 | Electricidad | 2w |  |  |  |
| 14 | 5 | **Acabado Exterior** | 0d |  |  | 5FS+41.5d |
| 15 | 5.1 | Colocar Puertas | 16h |  |  |  |
| 16 | 5.2 | Instalar Ventanas | 7d |  |  |  |
| 17 | 6 | Fin | 0d |  |  | 14FS+7d |
